# C:\Documents and Settings\Edmond\My Documents\caAERS-ProjectSchedule-ConstructionPhase

How a schedule from MS Project changed from version to version. A marks actual dates.

## Version 1 (saved 2007-02-15)

Note of the change: SVN-Revision: 527

| ID | WBS | Task | Duration | Start | Finish | Predecessors | Complete | Total float | Constraint |
| --- | --- | --- | --- | --- | --- | --- | --- | --- | --- |
| 1 | 1 | **caAERS Application Development Project** | 219d? | 2006-12-01 A | 2007-10-05 |  | 27% | 0d |  |
| 2 | 1.1 | **Elaboration Phase** | 57d | 2006-12-01 A | 2007-02-21 |  | 72% | 162d |  |
| 3 | 1.1.1 | **Iteration 1** | 31d | 2006-12-01 A | 2007-01-16 |  | 87% | 188d |  |
| 4 | 1.1.1.1 | **Project Management** | 31d | 2006-12-01 A | 2007-01-16 |  | 75% | 188d |  |
| 5 | 1.1.1.1.1 | **Inception and Kickoff Planning** | 6d | 2006-12-01 A | 2006-12-08 A |  | 100% |  |  |
| 6 |  | Draft Project Management Plan | 3d | 2006-12-01 A | 2006-12-05 A |  | 100% |  |  |
| 7 |  | High-Level Schedule and Assignments | 3d | 2006-12-01 A | 2006-12-05 A |  | 100% |  |  |
| 8 |  | Kickoff Meeting | 1d | 2006-12-06 A | 2006-12-06 A |  | 100% |  | start no earlier than 2006-12-06 |
| 9 |  | Kickoff Meeting Notes (Task 1.5) | 1d | 2006-12-08 A | 2006-12-08 A | 8FS+1d | 100% |  |  |
| 10 | 1.1.1.1.2 | **Project Management Plan Baseline (Task 1.1)** | 25d | 2006-12-11 A | 2007-01-16 |  | 44% | 188d |  |
| 11 |  | Add Details for Elaboration Phase to Project Plan | 3d | 2006-12-11 A | 2006-12-13 A | 9 | 100% |  |  |
| 12 |  | Resource Load and Level Project Schedule for Elaboration Phase | 1d | 2006-12-14 A | 2006-12-14 A | 11 | 100% |  |  |
| 13 |  | Adopters/Collaborators Review | 5d | 2006-12-15 A | 2006-12-21 A | 12 | 100% |  |  |
| 14 |  | Updates | 2d | 2006-12-22 A | 2006-12-26 A | 13 | 100% |  |  |
| 15 |  | Submit to BAH | 0d | 2006-12-26 A | 2006-12-26 A | 14 | 100% |  |  |
| 16 |  | Formal Review by BAH | 14d | 2006-12-27 | 2007-01-16 | 15 |  | 181d |  |
| 17 | 1.1.1.1.3 | **Communications Plan (Task 1.2)** | 25d | 2006-12-01 A | 2007-01-08 |  | 44% | 194d |  |
| 18 |  | Developers Draft | 5d | 2006-12-01 A | 2006-12-07 A |  | 100% |  |  |
| 19 |  | Adopters/Collaborators Review | 5d | 2006-12-08 A | 2006-12-14 A | 18 | 100% |  |  |
| 20 |  | Developers Update | 1d | 2006-12-15 A | 2006-12-15 A | 19 | 100% |  |  |
| 21 |  | Submit to BAH | 0d | 2006-12-15 A | 2006-12-15 A | 20 | 100% |  |  |
| 22 |  | Formal Review by BAH | 14d | 2006-12-18 | 2007-01-08 | 21 |  | 187d |  |
| 23 | 1.1.1.1.4 | **Adopters Collaboration Plan** | 11d | 2006-12-01 A | 2006-12-15 A |  | 100% |  |  |
| 24 |  | Developers Draft | 5d | 2006-12-01 A | 2006-12-07 A |  | 100% |  |  |
| 25 |  | Adopters/Collaborators Review | 5d | 2006-12-08 A | 2006-12-14 A | 24 | 100% |  |  |
| 26 |  | Developers Update | 1d | 2006-12-15 A | 2006-12-15 A | 25 | 100% |  |  |
| 27 |  | Submit to BAH | 0d | 2006-12-15 A | 2006-12-15 A | 26 | 100% |  |  |
| 28 | 1.1.1.1.5 | **Risk and Issue Management Plan** | 11d | 2006-12-01 A | 2006-12-15 A |  | 100% |  |  |
| 29 |  | Developers Draft | 5d | 2006-12-01 A | 2006-12-07 A |  | 100% |  |  |
| 30 |  | Adopters/Collaborators Review | 5d | 2006-12-08 A | 2006-12-14 A | 29 | 100% |  |  |
| 31 |  | Developers Update | 1d | 2006-12-15 A | 2006-12-15 A | 30 | 100% |  |  |
| 32 |  | Submit to BAH | 0d | 2006-12-15 A | 2006-12-15 A | 31 | 100% |  |  |
| 33 | 1.1.1.1.6 | **caAERS Vision and Scope Document (Task 1.8)** | 11d | 2006-12-06 A | 2006-12-20 A |  | 100% |  |  |
| 34 |  | Developers Draft | 5d | 2006-12-06 A | 2006-12-12 A |  | 100% |  | start no earlier than 2006-12-06 |
| 35 |  | Adopters/Collaborators Review | 5d | 2006-12-13 A | 2006-12-19 A | 34 | 100% |  |  |
| 36 |  | Developers Update | 1d | 2006-12-20 A | 2006-12-20 A | 35 | 100% |  |  |
| 37 |  | Submit to BAH | 0d | 2006-12-20 A | 2006-12-20 A | 36 | 100% |  |  |
| 38 | 1.1.1.1.7 | **Test and QA Mgmt Plan Document (Task 2.6)** | 9d | 2006-12-18 A | 2006-12-29 A |  | 100% |  |  |
| 39 |  | Developer Draft | 3d | 2006-12-18 A | 2006-12-20 A |  | 100% |  | start no earlier than 2006-12-18 |
| 40 |  | Adopters/Collobators Review | 5d | 2006-12-21 A | 2006-12-28 A | 39 | 100% |  |  |
| 41 |  | Developer Update | 1d | 2006-12-29 A | 2006-12-29 A | 40 | 100% |  |  |
| 42 |  | Submit to BAH | 0d | 2006-12-29 A | 2006-12-29 A | 41 | 100% |  |  |
| 43 | 1.1.1.1.8 | **caAERS F2F (Cross-Cutting WS) Meeting Planning** | 13d | 2006-12-01 A | 2006-12-19 A |  | 100% |  |  |
| 44 |  | Set Date | 1d | 2006-12-01 A | 2006-12-01 A |  | 100% |  |  |
| 45 |  | Draft Agenda | 1d | 2006-12-15 A | 2006-12-15 A | 7 | 100% |  | start no earlier than 2006-12-15 |
| 46 |  | Review by Adopters/Collaborators | 2d | 2006-12-18 A | 2006-12-19 A | 45 | 100% |  |  |
| 47 |  | Finalize F2F Meeting Agenda and Details | 0d | 2006-12-19 A | 2006-12-19 A | 46 | 100% |  |  |
| 48 | 1.1.1.1.9 | **Weekly Team/Developers Meeting** | 11d | 2006-12-11 A | 2006-12-26 A |  | 100% |  |  |
| 49 |  | Weekly Team Meeting 1 | 1d | 2006-12-11 A | 2006-12-11 A |  | 100% |  | start no earlier than 2006-12-11 |
| 50 |  | Weekly Team Meeting 2 | 1d | 2006-12-18 A | 2006-12-18 A |  | 100% |  | start no earlier than 2006-12-18 |
| 51 |  | Weekly Team Meeting 3 | 1d | 2006-12-26 A | 2006-12-26 A |  | 100% |  | start no earlier than 2006-12-25 |
| 52 | 1.1.1.1.10 | **Status and Risk Reporting** | 10d | 2006-12-15 A | 2006-12-29 A |  | 100% |  |  |
| 53 |  | Bi-weekly Risk Update in caMP (Task 1.4) | 0d | 2006-12-15 A | 2006-12-15 A |  | 100% |  | start no earlier than 2006-12-15 |
| 54 |  | Bi-weekly Risk Matrix Update Meeting | 1d | 2006-12-22 A | 2006-12-22 A |  | 100% |  | start no earlier than 2006-12-22 |
| 55 |  | Bi-weekly Risk Update in caMP (Task 1.4) | 0d | 2006-12-29 A | 2006-12-29 A |  | 100% |  | start no earlier than 2006-12-29 |
| 56 |  | Bi-weekly Status Update Meeting with BAH/NCI | 1d | 2006-12-29 A | 2006-12-29 A |  | 100% |  | start no earlier than 2006-12-29 |
| 57 |  | Monthly Status Report (Task 1.3) | 0d | 2006-12-29 A | 2006-12-29 A |  | 100% |  | start no earlier than 2006-12-29 |
| 58 |  | Monthly Risk Matrix Update (Task 1.3) | 0d | 2006-12-29 A | 2006-12-29 A |  | 100% |  | must finish on 2006-12-29 |
| 59 | 1.1.1.1.11 | **Collaboration Management Activities** | 10d | 2006-12-14 A | 2006-12-28 A |  | 100% |  |  |
| 60 |  | Bi-Weekly AE SIG Meeting | 1d | 2006-12-14 A | 2006-12-14 A |  | 100% |  | start no earlier than 2006-12-14 |
| 61 |  | Bi-Weekly AE SIG Meeting | 1d | 2006-12-28 A | 2006-12-28 A |  | 100% |  | start no earlier than 2006-12-28 |
| 62 | 1.1.1.2 | **Set up Development Environment** | 7d | 2006-12-01 A | 2006-12-11 A |  | 100% |  |  |
| 63 |  | Set up SCM (Subversion) | 2d | 2006-12-01 A | 2006-12-04 A |  | 100% |  |  |
| 64 |  | Create Build Scripts (using Ant) | 3d | 2006-12-05 A | 2006-12-07 A | 63 | 100% |  |  |
| 65 |  | Decide on Tech Stack | 2d | 2006-12-01 A | 2006-12-04 A |  | 100% |  |  |
| 66 |  | Prepare Development Server | 5d | 2006-12-05 A | 2006-12-11 A | 65 | 100% |  |  |
| 67 | 1.1.1.3 | **Requirements** | 20d | 2006-12-01 A | 2006-12-29 A |  | 100% |  |  |
| 68 |  | Review Existing R1 Prototype and Requirements | 5d | 2006-12-01 A | 2006-12-07 A |  | 100% |  |  |
| 69 |  | Select Use Cases | 1d | 2006-12-08 A | 2006-12-08 A | 68 | 100% |  |  |
| 70 |  | Assign Use Cases | 1d | 2006-12-11 A | 2006-12-11 A | 69 | 100% |  |  |

| ID | WBS | Task | Duration | Start | Finish | Predecessors | Complete | Total float |
| --- | --- | --- | --- | --- | --- | --- | --- | --- |
| 71 | 1.1.1.3.4 | **Review and Update Use Case Documents (Task 2.1)** | 8d | 2006-12-12 A | 2006-12-21 A | 70 | 100% |  |
| 72 | 1.1.1.3.4.1 | **Create Study/Protocol** | 8d | 2006-12-12 A | 2006-12-21 A |  | 100% |  |
| 73 |  | Developer draft | 5d | 2006-12-12 A | 2006-12-18 A |  | 100% |  |
| 74 |  | Adopters/Collaborators Review | 2d | 2006-12-19 A | 2006-12-20 A | 73 | 100% |  |
| 75 |  | Developers Update | 1d | 2006-12-21 A | 2006-12-21 A | 74 | 100% |  |
| 76 |  | Submit to BAH (Task 2.1) | 0d | 2006-12-21 A | 2006-12-21 A | 75 | 100% |  |
| 77 | 1.1.1.3.4.2 | **Create Participant** | 8d | 2006-12-12 A | 2006-12-21 A |  | 100% |  |
| 78 |  | Developer draft | 5d | 2006-12-12 A | 2006-12-18 A |  | 100% |  |
| 79 |  | Adopters/Collaborators Review | 2d | 2006-12-19 A | 2006-12-20 A | 78 | 100% |  |
| 80 |  | Developers Update | 1d | 2006-12-21 A | 2006-12-21 A | 79 | 100% |  |
| 81 |  | Submit to BAH (Task 2.1) | 0d | 2006-12-21 A | 2006-12-21 A | 80 | 100% |  |
| 82 | 1.1.1.3.4.3 | **Create AE** | 8d | 2006-12-12 A | 2006-12-21 A |  | 100% |  |
| 83 |  | Developer draft | 5d | 2006-12-12 A | 2006-12-18 A |  | 100% |  |
| 84 |  | Adopters/Collaborators Review | 2d | 2006-12-19 A | 2006-12-20 A | 83 | 100% |  |
| 85 |  | Developers Update | 1d | 2006-12-21 A | 2006-12-21 A | 84 | 100% |  |
| 86 |  | Submit to BAH (Task 2.1) | 0d | 2006-12-21 A | 2006-12-21 A | 85 | 100% |  |
| 87 | 1.1.1.3.4.4 | **Login** | 7d | 2006-12-12 A | 2006-12-20 A |  | 100% |  |
| 88 |  | Developer draft | 5d | 2006-12-12 A | 2006-12-18 A |  | 100% |  |
| 89 |  | Adopters/Collaborators Review | 1d | 2006-12-19 A | 2006-12-19 A | 88 | 100% |  |
| 90 |  | Developers Update | 1d | 2006-12-20 A | 2006-12-20 A | 89 | 100% |  |
| 91 |  | Submit to BAH (Task 2.1) | 0d | 2006-12-20 A | 2006-12-20 A | 90 | 100% |  |
| 92 | 1.1.1.3.5 | **SRS document (Task 2.2)** | 11d | 2006-12-14 A | 2006-12-29 A | 71SS+2d | 100% |  |
| 93 |  | Developer draft | 5d | 2006-12-14 A | 2006-12-20 A |  | 100% |  |
| 94 |  | Adopter review | 5d | 2006-12-21 A | 2006-12-28 A | 93 | 100% |  |
| 95 |  | Developer update | 1d | 2006-12-29 A | 2006-12-29 A | 94 | 100% |  |
| 96 |  | Deliver SRS document to BAH (Task 2.2) | 0d | 2006-12-29 A | 2006-12-29 A | 95 | 100% |  |
| 97 | 1.1.1.4 | **Analysis and Design** | 10d | 2006-12-18 A | 2007-01-02 | 70SS+5d | 95% | 198d |
| 98 | 1.1.1.4.1 | **Design Documents (Task 2.4)** | 8d | 2006-12-18 A | 2006-12-28 A |  | 100% |  |
| 99 | 1.1.1.4.1.1 | **Create Study/Protocol Design Documents** | 8d | 2006-12-18 A | 2006-12-28 A |  | 100% |  |
| 100 |  | Develop appropriate UML Artifacts | 5d | 2006-12-18 A | 2006-12-22 A |  | 100% |  |
| 101 |  | Developer draft | 5d | 2006-12-18 A | 2006-12-22 A |  | 100% |  |
| 102 |  | Adopters/Collaborators Review | 2d | 2006-12-26 A | 2006-12-27 A | 101 | 100% |  |
| 103 |  | Developers Update | 1d | 2006-12-28 A | 2006-12-28 A | 102 | 100% |  |
| 104 |  | Submit to BAH (Task 2.3 and 2.4) | 0d | 2006-12-28 A | 2006-12-28 A | 103 | 100% |  |
| 105 | 1.1.1.4.1.2 | **Create Participant Design Documents** | 8d | 2006-12-18 A | 2006-12-28 A |  | 100% |  |
| 106 |  | Develop appropriate UML Artifacts | 5d | 2006-12-18 A | 2006-12-22 A |  | 100% |  |
| 107 |  | Developer draft | 5d | 2006-12-18 A | 2006-12-22 A |  | 100% |  |
| 108 |  | Adopters/Collaborators Review | 2d | 2006-12-26 A | 2006-12-27 A | 107 | 100% |  |
| 109 |  | Developers Update | 1d | 2006-12-28 A | 2006-12-28 A | 108 | 100% |  |
| 110 |  | Submit to BAH (Task 2.3 and 2.4) | 0d | 2006-12-28 A | 2006-12-28 A | 109 | 100% |  |
| 111 | 1.1.1.4.1.3 | **Create AE Design Documents** | 8d | 2006-12-18 A | 2006-12-28 A |  | 100% |  |
| 112 |  | Develop appropriate UML Artifacts | 5d | 2006-12-18 A | 2006-12-22 A |  | 100% |  |
| 113 |  | Developer draft | 5d | 2006-12-18 A | 2006-12-22 A |  | 100% |  |
| 114 |  | Adopters/Collaborators Review | 2d | 2006-12-26 A | 2006-12-27 A | 113 | 100% |  |
| 115 |  | Developers Update | 1d | 2006-12-28 A | 2006-12-28 A | 114 | 100% |  |
| 116 |  | Submit to BAH (Task 2.3 and 2.4) | 0d | 2006-12-28 A | 2006-12-28 A | 115 | 100% |  |
| 117 | 1.1.1.4.1.4 | **Login Design Documents** | 8d | 2006-12-18 A | 2006-12-28 A |  | 100% |  |
| 118 |  | Develop appropriate UML Artifacts | 5d | 2006-12-18 A | 2006-12-22 A |  | 100% |  |
| 119 |  | Developer draft | 5d | 2006-12-18 A | 2006-12-22 A |  | 100% |  |
| 120 |  | Adopters/Collaborators Review | 2d | 2006-12-26 A | 2006-12-27 A | 119 | 100% |  |
| 121 |  | Developers Update | 1d | 2006-12-28 A | 2006-12-28 A | 120 | 100% |  |
| 122 |  | Submit to BAH (Task 2.3 and 2.4) | 0d | 2006-12-28 A | 2006-12-28 A | 121 | 100% |  |
| 123 | 1.1.1.4.1.5 | **UI/Mockups Design Documents** | 8d | 2006-12-18 A | 2006-12-28 A |  | 100% |  |
| 124 |  | Developer Draft | 5d | 2006-12-18 A | 2006-12-22 A |  | 100% |  |
| 125 |  | Adopters/Collaborators Review | 2d | 2006-12-26 A | 2006-12-27 A | 124 | 100% |  |
| 126 |  | Developers Update | 1d | 2006-12-28 A | 2006-12-28 A | 125 | 100% |  |
| 127 |  | Submit to BAH (Task 2.4) | 0d | 2006-12-28 A | 2006-12-28 A | 126 | 100% |  |
| 128 | 1.1.1.4.2 | **ESB** | 7d | 2006-12-18 A | 2006-12-27 A |  | 100% |  |
| 129 |  | Evalutate technologies by prototyping | 7d | 2006-12-18 A | 2006-12-27 A |  | 100% |  |
| 130 | 1.1.1.4.3 | **Grid service** | 7d | 2006-12-18 A | 2006-12-27 A |  | 100% |  |
| 131 |  | Evaluate caGrid 1.0 service infrastructure | 7d | 2006-12-18 A | 2006-12-27 A |  | 100% |  |
| 132 | 1.1.1.4.4 | **Database** | 3d | 2006-12-18 A | 2006-12-20 A |  | 100% |  |
| 133 |  | First draft of database structure | 3d | 2006-12-18 A | 2006-12-20 A |  | 100% |  |
| 134 | 1.1.1.4.5 | **Domain model** | 9d | 2006-12-18 A | 2006-12-29 |  | 50% | 199d |
| 135 |  | Create model harmonized with BRIDG | 5d | 2006-12-18 A | 2006-12-22 |  | 50% | 194d |
| 136 |  | Create first draft of model | 4d | 2006-12-26 A | 2006-12-29 | 135 | 50% | 192d |
| 137 | 1.1.1.4.6 | **Security** | 10d | 2006-12-18 A | 2007-01-02 A |  | 100% |  |
| 138 |  | Evaluate caGrid 1.0 security infrastructure | 10d | 2006-12-18 A | 2007-01-02 A | 70 | 100% |  |
| 139 | 1.1.1.5 | **Implementation** | 5d | 2006-12-19 A | 2006-12-26 A | 97SS+1d | 100% |  |
| 140 | 1.1.1.5.1 | **Enterprise Service Bus** | 5d | 2006-12-19 A | 2006-12-26 A |  | 100% |  |

| ID | WBS | Task | Duration | Start | Finish | Predecessors | Complete | Total float | Constraint |
| --- | --- | --- | --- | --- | --- | --- | --- | --- | --- |
| 141 |  | Setup initial project | 5d | 2006-12-19 A | 2006-12-26 A |  | 100% |  |  |
| 142 | 1.1.1.5.2 | **Grid service** | 5d | 2006-12-19 A | 2006-12-26 A |  | 100% |  |  |
| 143 |  | Create grid service skeleton | 5d | 2006-12-19 A | 2006-12-26 A |  | 100% |  |  |
| 144 | 1.1.1.5.3 | **Create Study/Protocol** | 5d | 2006-12-19 A | 2006-12-26 A |  | 100% |  |  |
| 145 |  | Implement O/R mapping | 5d | 2006-12-19 A | 2006-12-26 A |  | 100% |  |  |
| 146 |  | Develop StudyDAO | 5d | 2006-12-19 A | 2006-12-26 A |  | 100% |  |  |
| 147 |  | Develop StudyService | 5d | 2006-12-19 A | 2006-12-26 A |  | 100% |  |  |
| 148 |  | Develop controller and command objects | 5d | 2006-12-19 A | 2006-12-26 A |  | 100% |  |  |
| 149 |  | Develop UI | 5d | 2006-12-19 A | 2006-12-26 A |  | 100% |  |  |
| 150 |  | Develop JUnit test cases | 5d | 2006-12-19 A | 2006-12-26 A |  | 100% |  |  |
| 151 |  | Develop | 5d | 2006-12-19 A | 2006-12-26 A |  | 100% |  |  |
| 152 |  | Login | 5d | 2006-12-19 A | 2006-12-26 A |  | 100% |  |  |
| 153 | 1.1.1.5.4 | **Create Participant** | 5d | 2006-12-19 A | 2006-12-26 A |  | 100% |  |  |
| 154 |  | Implement O/R mapping | 5d | 2006-12-19 A | 2006-12-26 A |  | 100% |  |  |
| 155 |  | Develop ParticipantDAO | 5d | 2006-12-19 A | 2006-12-26 A |  | 100% |  |  |
| 156 |  | Develop ParticipantService | 5d | 2006-12-19 A | 2006-12-26 A |  | 100% |  |  |
| 157 |  | Develop controller and command objects | 5d | 2006-12-19 A | 2006-12-26 A |  | 100% |  |  |
| 158 |  | Develop UI | 5d | 2006-12-19 A | 2006-12-26 A |  | 100% |  |  |
| 159 |  | Develop JUnit test cases | 5d | 2006-12-19 A | 2006-12-26 A |  | 100% |  |  |
| 160 | 1.1.1.5.5 | **Create AE** | 5d | 2006-12-19 A | 2006-12-26 A |  | 100% |  |  |
| 161 |  | Implement O/R mapping | 5d | 2006-12-19 A | 2006-12-26 A |  | 100% |  |  |
| 162 |  | Develop AdverseEventDAO | 5d | 2006-12-19 A | 2006-12-26 A |  | 100% |  |  |
| 163 |  | Develop AdverseEventService | 5d | 2006-12-19 A | 2006-12-26 A |  | 100% |  |  |
| 164 |  | Develop controller and command objects | 5d | 2006-12-19 A | 2006-12-26 A |  | 100% |  |  |
| 165 |  | Develop UI | 5d | 2006-12-19 A | 2006-12-26 A |  | 100% |  |  |
| 166 |  | Develop JUnit test cases | 5d | 2006-12-19 A | 2006-12-26 A |  | 100% |  |  |
| 167 | 1.1.1.6 | **Testing** | 8d | 2006-12-19 A | 2006-12-29 |  | 22% | 199d |  |
| 168 | 1.1.1.6.1 | **Create Functional Tests** | 6d | 2006-12-19 A | 2006-12-27 | 71SS+5d | 25% | 201d |  |
| 169 |  | Create Study | 5d | 2006-12-19 A | 2006-12-26 |  | 25% | 195d |  |
| 170 |  | Create Participant | 5d | 2006-12-19 A | 2006-12-26 |  | 25% | 195d |  |
| 171 |  | Login | 5d | 2006-12-19 A | 2006-12-26 |  | 25% | 195d |  |
| 172 |  | Create AE | 5d | 2006-12-19 A | 2006-12-26 |  | 25% | 194.25d |  |
| 173 |  | RTM | 1d | 2006-12-27 A | 2006-12-27 | 172, 93 | 25% | 194d |  |
| 174 | 1.1.1.6.2 | **Final Tests of Iteration** | 3d | 2006-12-27 | 2006-12-29 |  |  | 180.49d |  |
| 175 |  | Deploy Prototype (Task 2.5) | 1d | 2006-12-27 | 2006-12-27 | 139 |  | 159.58d |  |
| 176 |  | Validation and Acceptance Testing | 2d | 2006-12-28 | 2006-12-29 | 175 |  | 159.58d |  |
| 177 |  | Submit Test Results Report (Task 2.7) | 0d | 2006-12-29 | 2006-12-29 | 176 |  | 159.58d |  |
| 178 | 1.1.2 | **Iteration 2** | 46d | 2006-12-18 A | 2007-02-21 | 177 | 60% | 162d |  |
| 179 |  | Start Iteration 2 | 0d | 2007-01-02 | 2007-01-02 |  |  | 168.11d | start no earlier than 2007-01-02 |
| 180 | 1.1.2.2 | **Project Management** | 43d | 2006-12-18 A | 2007-02-16 | 179SS | 28% | 165d |  |
| 181 |  | Update Project Plan | 5d | 2007-01-02 A | 2007-01-08 A |  | 100% |  |  |
| 182 | 1.1.2.2.2 | **Detailed Construction and Transition Plan** | 20d | 2007-01-22 A | 2007-02-16 |  | 4% | 165d |  |
| 183 |  | Prepare Detailed Plan for Construction and Transition Phases | 5d | 2007-01-22 A | 2007-01-26 |  | 25% | 165d | start no earlier than 2007-01-22 |
| 184 |  | Deliver Plan to BAH (Task 2.9) | 0d | 2007-01-26 | 2007-01-26 | 183 |  | 165d |  |
| 185 |  | Adopter Review | 10d | 2007-01-29 | 2007-02-09 | 184 |  | 170d |  |
| 186 |  | Formal Review by BAH | 15d | 2007-01-29 | 2007-02-16 | 184 |  | 165d |  |
| 187 | 1.1.2.2.3 | **Change Control Board Plan and Charter (Task 2.10)** | 32.75d | 2006-12-18 A | 2007-02-02 |  | 17% | 175.25d |  |
| 188 |  | Prepare CCB Charter | 10d | 2006-12-18 A | 2007-01-12 |  | 50% | 175.25d | start no earlier than 2006-12-18 |
| 189 |  | Submit to BAH | 0d | 2007-01-12 | 2007-01-12 | 188 |  | 175.25d |  |
| 190 |  | Adopters/Collobators Review | 5d | 2007-01-12 | 2007-01-19 | 189 |  | 185.25d |  |
| 191 |  | Formal Review by BAH | 15d | 2007-01-12 | 2007-02-02 | 189 |  | 175.25d |  |
| 192 | 1.1.2.2.4 | **CaAERS CCB (Task 2.10)** | 0d | 2007-02-02 | 2007-02-02 |  |  | 175.25d |  |
| 193 |  | CCB Meetings | 0d | 2007-02-02 | 2007-02-02 | 191 |  | 175.25d | start no earlier than 2007-01-24 |
| 194 | 1.1.2.2.5 | **Weekly Team/Developers Meeting** | 16d | 2007-01-08 A | 2007-01-29 A |  | 100% |  |  |
| 195 |  | Weekly Team Meeting 1 | 1d | 2007-01-08 A | 2007-01-08 A |  | 100% |  | start no earlier than 2007-01-08 |
| 196 |  | Weekly Team Meeting 2 | 1d | 2007-01-15 A | 2007-01-15 A |  | 100% |  | start no earlier than 2007-01-15 |
| 197 |  | Weekly Team Meeting 3 | 1d | 2007-01-22 A | 2007-01-22 A |  | 100% |  | start no earlier than 2007-01-22 |
| 198 |  | Weekly Team Meeting 4 | 1d | 2007-01-29 A | 2007-01-29 A |  | 100% |  | start no earlier than 2007-01-29 |
| 199 | 1.1.2.2.6 | **Status and Risk Reporting** | 14d | 2007-01-12 A | 2007-01-31 |  | 57% | 177d |  |
| 200 |  | Bi-weekly Risk Update in caMP (Task 1.4) | 1d | 2007-01-12 A | 2007-01-12 A |  | 100% |  | start no earlier than 2007-01-12 |
| 201 |  | Bi-weekly Risk Matrix Update Meeting | 1d | 2007-01-12 A | 2007-01-12 A |  | 100% |  | start no earlier than 2007-01-12 |
| 202 |  | Bi-weekly Risk Update in caMP (Task 1.4) | 1d | 2007-01-26 A | 2007-01-26 A |  | 100% |  | start no earlier than 2007-01-26 |
| 203 |  | Bi-weekly Status Update Meeting with BAH/NCI | 1d | 2007-01-26 A | 2007-01-26 A |  | 100% |  | start no earlier than 2007-01-26 |
| 204 |  | Monthly Status Report (Task 1.3) | 1d | 2007-01-31 | 2007-01-31 |  |  | 177d | start no earlier than 2007-01-31 |
| 205 |  | Monthly Risk Matrix Update (Task 1.3) | 1d | 2007-01-31 | 2007-01-31 |  |  | 177d | start no earlier than 2007-01-31 |
| 206 |  | Adopters Collaboration Report (Task 1.7) | 1d | 2007-01-31 | 2007-01-31 |  |  | 177d | start no earlier than 2007-01-31 |
| 207 | 1.1.2.2.7 | **Collaboration Management Activities** | 11d | 2007-01-11 A | 2007-01-25 A |  | 100% |  |  |
| 208 |  | Bi-Weekly AE SIG Meeting | 1d | 2007-01-11 A | 2007-01-11 A |  | 100% |  | start no earlier than 2007-01-11 |
| 209 |  | Adopters Mtg | 1d | 2007-01-18 A | 2007-01-18 A |  | 100% |  | start no earlier than 2007-01-18 |
| 210 |  | Bi-Weekly AE SIG Meeting | 1d | 2007-01-25 A | 2007-01-25 A |  | 100% |  | start no earlier than 2007-01-25 |

| ID | WBS | Task | Duration | Start | Finish | Predecessors | Complete | Total float | Constraint |
| --- | --- | --- | --- | --- | --- | --- | --- | --- | --- |
| 211 | 1.1.2.3 | **Requirements** | 32d | 2007-01-02 A | 2007-02-14 |  | 74% | 167d |  |
| 212 |  | Face-to-Face Meeting | 2d | 2007-01-04 A | 2007-01-05 A |  | 100% |  | must start on 2007-01-04 |
| 213 |  | F2F Meeting Notes (Task 1.5) | 2d | 2007-01-08 A | 2007-01-09 A | 212 | 100% |  |  |
| 214 |  | Use Case Selection | 2d | 2007-01-02 A | 2007-01-03 A |  | 100% |  |  |
| 215 |  | Use Case Assignments for Iteration 2 | 1d | 2007-01-04 A | 2007-01-04 A | 214 | 100% |  |  |
| 216 | 1.1.2.3.5 | **Use Case Specification and Realization (Task 2.1)** | 17d | 2007-01-02 A | 2007-01-24 |  | 98% | 182d |  |
| 217 | 1.1.2.3.5.1 | **Protocol Abstraction** | 14d | 2007-01-02 A | 2007-01-19 A |  | 100% |  |  |
| 218 |  | Developer draft | 5d | 2007-01-02 A | 2007-01-08 A |  | 100% |  |  |
| 219 |  | Adopters/Collobators Review | 5d | 2007-01-09 A | 2007-01-15 A | 218 | 100% |  |  |
| 220 |  | Developer Update | 4d | 2007-01-16 A | 2007-01-19 A | 219 | 100% |  |  |
| 221 | 1.1.2.3.5.2 | **AE Data Collection** | 14d | 2007-01-02 A | 2007-01-19 A |  | 100% |  |  |
| 222 |  | Developer draft | 5d | 2007-01-02 A | 2007-01-08 A |  | 100% |  |  |
| 223 |  | Adopters/Collobators Review | 5d | 2007-01-09 A | 2007-01-15 A | 222 | 100% |  |  |
| 224 |  | Developer Update | 4d | 2007-01-16 A | 2007-01-19 A | 223 | 100% |  |  |
| 225 | 1.1.2.3.5.3 | **Triggers/Notification** | 14d | 2007-01-02 A | 2007-01-19 A |  | 100% |  |  |
| 226 |  | Developer draft | 5d | 2007-01-02 A | 2007-01-08 A |  | 100% |  |  |
| 227 |  | Adopters/Collobators Review | 5d | 2007-01-09 A | 2007-01-15 A | 226 | 100% |  |  |
| 228 |  | Developer Update | 4d | 2007-01-16 A | 2007-01-19 A | 227 | 100% |  |  |
| 229 |  | Update Use Case Document | 3d | 2007-01-22 A | 2007-01-24 | 220, 224, 228 | 75% | 182d |  |
| 230 |  | Submit Updated Use Case Document to BAH (Task 2.1) | 0d | 2007-01-24 | 2007-01-24 | 229 |  | 182d |  |
| 231 | 1.1.2.3.6 | **SRS document (Task 2.2)** | 32d | 2007-01-02 A | 2007-02-14 |  | 34% | 166d |  |
| 232 |  | Developer draft | 5d | 2007-01-02 A | 2007-01-08 A |  | 100% |  |  |
| 233 |  | Adopter review | 5d | 2007-01-09 A | 2007-01-15 | 232 | 50% | 169.5d |  |
| 234 |  | Developer update | 7d | 2007-01-16 A | 2007-01-24 | 233 | 50% | 166d |  |
| 235 |  | Deliver SRS document to BAH (Task 2.2) | 0d | 2007-01-24 | 2007-01-24 | 234 |  | 166d |  |
| 236 |  | Formal Review by BAH | 15d | 2007-01-25 | 2007-02-14 | 235 |  | 166d |  |
| 237 | 1.1.2.4 | **Analysis and Design** | 37d | 2007-01-02 A | 2007-02-21 |  | 45% | 162d |  |
| 238 | 1.1.2.4.1 | **Design Documents** | 28d | 2007-01-09 A | 2007-02-15 | 216SS+5d | 64% | 166d |  |
| 239 | 1.1.2.4.1.1 | **Protocol Abstraction** | 13d | 2007-01-09 A | 2007-01-25 |  | 88% | 166d |  |
| 240 |  | Develop appropriate UML Artifacts | 5d | 2007-01-09 A | 2007-01-15 A |  | 100% |  |  |
| 241 |  | Create Design Document | 5d | 2007-01-16 A | 2007-01-22 A | 240 | 100% |  |  |
| 242 |  | Adopters/Collaborators Review | 2d | 2007-01-23 A | 2007-01-24 | 241 | 50% | 166.5d |  |
| 243 |  | Developers Update | 1d | 2007-01-25 A | 2007-01-25 | 242 | 50% | 166d |  |
| 244 | 1.1.2.4.1.2 | **AE Data Collection** | 13d | 2007-01-09 A | 2007-01-25 |  | 88% | 166d |  |
| 245 |  | Develop appropriate UML Artifacts | 5d | 2007-01-09 A | 2007-01-15 A |  | 100% |  |  |
| 246 |  | Create Design Document | 5d | 2007-01-16 A | 2007-01-22 A | 245 | 100% |  |  |
| 247 |  | Adopters/Collaborators Review | 2d | 2007-01-23 A | 2007-01-24 | 246 | 50% | 166.5d |  |
| 248 |  | Developers Update | 1d | 2007-01-25 A | 2007-01-25 | 247 | 50% | 166d |  |
| 249 | 1.1.2.4.1.3 | **Triggers/Notification** | 13d | 2007-01-09 A | 2007-01-25 |  | 88% | 166d |  |
| 250 |  | Develop appropriate UML Artifacts | 5d | 2007-01-09 A | 2007-01-15 A |  | 100% |  |  |
| 251 |  | Create Design Document | 5d | 2007-01-16 A | 2007-01-22 A | 250 | 100% |  |  |
| 252 |  | Adopters/Collaborators Review | 2d | 2007-01-23 A | 2007-01-24 | 251 | 50% | 166.5d |  |
| 253 |  | Developers Update | 1d | 2007-01-25 A | 2007-01-25 | 252 | 50% | 166d |  |
| 254 |  | Deliver Design document to BAH (Task 2.2) | 0d | 2007-01-25 | 2007-01-25 | 243, 248, 253 |  | 181d |  |
| 255 |  | Deliver UML to BAH (Task 2.3) | 0d | 2007-01-25 | 2007-01-25 | 243, 248, 253 |  | 166d |  |
| 256 |  | Formal Review by BAH | 15d | 2007-01-26 | 2007-02-15 | 255 |  | 166d |  |
| 257 | 1.1.2.4.2 | **Domain Model** | 3d | 2007-01-02 A | 2007-01-04 |  | 75% | 196d |  |
| 258 |  | Update Model/BRIDG Harmonization | 3d | 2007-01-02 A | 2007-01-04 |  | 75% | 196d |  |
| 259 | 1.1.2.4.3 | **Technical/Architecture Guide** | 32d | 2007-01-09 A | 2007-02-21 |  | 11% | 162d |  |
| 260 |  | Prepare draft of Tech/Arch Guide | 9d | 2007-01-09 A | 2007-01-19 | 216SS+5d | 25% | 163.25d |  |
| 261 |  | Adopter review | 5d | 2007-01-22 A | 2007-01-26 | 260 | 25% | 162d |  |
| 262 |  | Developer update | 3d | 2007-01-29 | 2007-01-31 | 261 |  | 162d |  |
| 263 |  | Deliver to BAH (Task 2.8) | 0d | 2007-01-31 | 2007-01-31 | 262 |  | 162d |  |
| 264 |  | Formal Review by BAH | 15d | 2007-02-01 | 2007-02-21 | 263 |  | 162d |  |
| 265 | 1.1.2.5 | **Implementation** | 19d | 2007-01-03 A | 2007-01-29 A | 216SS+1d | 100% |  |  |
| 266 | 1.1.2.5.1 | **Web interface** | 9d | 2007-01-03 A | 2007-01-15 A |  | 100% |  |  |
| 267 |  | Second web interface iteration | 9d | 2007-01-03 A | 2007-01-15 A |  | 100% |  |  |
| 268 | 1.1.2.5.2 | **Enterprise Service Bus** | 10d | 2007-01-03 A | 2007-01-16 A |  | 100% |  |  |
| 269 |  | Second ESB Iteration | 10d | 2007-01-03 A | 2007-01-16 A |  | 100% |  |  |
| 270 | 1.1.2.5.3 | **Grid service** | 13d | 2007-01-03 A | 2007-01-19 A |  | 100% |  |  |
| 271 |  | Implement Grid Service | 13d | 2007-01-03 A | 2007-01-19 A |  | 100% |  |  |
| 272 | 1.1.2.5.4 | **Implement Use Cases** | 15d | 2007-01-09 A | 2007-01-29 A |  | 100% |  |  |
| 273 | 1.1.2.5.4.1 | **Protocol Abstraction** | 12d | 2007-01-09 A | 2007-01-24 A | 239SS | 100% |  |  |
| 274 |  | UI - Incorporate HTML and CSS | 5d | 2007-01-16 A | 2007-01-22 A | 267 | 100% |  |  |
| 275 |  | Implement O/R mapping | 10d | 2007-01-09 A | 2007-01-22 A |  | 100% |  |  |
| 276 |  | Develop DAO | 10d | 2007-01-11 A | 2007-01-24 A | 275SS+2d | 100% |  |  |
| 277 |  | Develop Service | 10d | 2007-01-11 A | 2007-01-24 A | 275SS+2d | 100% |  |  |
| 278 |  | Develop controller and command objects | 10d | 2007-01-11 A | 2007-01-24 A | 275SS+2d | 100% |  |  |
| 279 |  | Develop JUnit test cases | 7d | 2007-01-11 A | 2007-01-19 A | 275SS+2d | 100% |  |  |
| 280 | 1.1.2.5.4.2 | **AE Data Collection** | 11.25d | 2007-01-09 A | 2007-01-24 A | 244SS | 100% |  |  |

| ID | WBS | Task | Duration | Start | Finish | Predecessors | Complete | Total float | Constraint |
| --- | --- | --- | --- | --- | --- | --- | --- | --- | --- |
| 281 |  | UI - Incorporate HTML and CSS | 5d | 2007-01-16 A | 2007-01-22 A | 267 | 100% |  |  |
| 282 |  | Implement O/R mapping | 10d | 2007-01-09 A | 2007-01-22 A |  | 100% |  |  |
| 283 |  | Develop DAO | 10d | 2007-01-09 A | 2007-01-24 A | 282SS+2d | 100% |  |  |
| 284 |  | Develop Service | 10d | 2007-01-09 A | 2007-01-24 A | 282SS+2d | 100% |  |  |
| 285 |  | Develop controller and command objects | 10d | 2007-01-09 A | 2007-01-24 A | 282SS+2d | 100% |  |  |
| 286 |  | Develop JUnit test cases | 7d | 2007-01-09 A | 2007-01-19 A | 282SS+2d | 100% |  |  |
| 287 | 1.1.2.5.4.3 | **Triggers/Notification** | 15d | 2007-01-09 A | 2007-01-29 A | 249SS | 100% |  |  |
| 288 |  | JBOSS Rules Setup/Development | 15d | 2007-01-09 A | 2007-01-29 A |  | 100% |  |  |
| 289 | 1.1.2.6 | **Testing** | 32d | 2007-01-09 A | 2007-02-21 |  | 4% | 162d |  |
| 290 | 1.1.2.6.1 | **Test Plan** | 18d | 2007-01-17 A | 2007-02-09 |  | 8% | 170d |  |
| 291 |  | Update Test Plan Document (Task 2.6) | 3d | 2007-01-17 A | 2007-01-19 |  | 50% | 170d | start no earlier than 2007-01-17 |
| 292 |  | Submit to BAH | 0d | 2007-01-19 | 2007-01-19 | 291 |  | 170d |  |
| 293 |  | Formal Review by BAH | 15d | 2007-01-22 | 2007-02-09 | 292 |  | 170d |  |
| 294 | 1.1.2.6.2 | **Create Functional Tests** | 28d | 2007-01-09 | 2007-02-15 | 216SS+5d |  | 166d |  |
| 295 |  | Create Functional Tests for Use Cases | 5d | 2007-01-09 | 2007-01-15 |  |  | 188d |  |
| 296 |  | RTM | 1d | 2007-02-15 | 2007-02-15 | 295, 231 |  | 166d |  |
| 297 | 1.1.2.6.3 | **Final Tests of Iteration** | 17d | 2007-01-30 | 2007-02-21 |  |  | 162d |  |
| 298 |  | Testing | 2d | 2007-01-30 | 2007-01-31 | 265 |  | 162d |  |
| 299 |  | Submit Test Results Report (Task 2.7) | 0d | 2007-01-31 | 2007-01-31 | 298 |  | 162d |  |
| 300 |  | Formal Review of Test results Report | 15d | 2007-02-01 | 2007-02-21 | 299 |  | 162d |  |
| 301 | 1.1.2.7 | **Deployment** | 26d | 2006-12-29 | 2007-02-06 |  |  | 173d |  |
| 302 |  | Submit prototype code (Task 2.5) | 0d | 2006-12-29 | 2006-12-29 |  |  | 184d |  |
| 303 |  | Formal Review of Code by BAH | 15d | 2007-01-02 | 2007-01-22 | 302 |  | 184d |  |
| 304 |  | Draft Installation Guide | 3d | 2007-01-02 | 2007-01-04 |  |  | 196d |  |
| 305 |  | Deploy Prototype for Iteration 2 at Mayo and WF | 1d | 2007-01-30 | 2007-01-30 | 265 |  | 178d |  |
| 306 |  | Deploy Prototype / Make URL Public | 1d | 2007-02-06 | 2007-02-06 | 265FS+5d |  | 173d |  |
| 307 |  | caBIG Annual Meeting | 3d | 2007-02-05 | 2007-02-07 |  |  | 0d | must start on 2007-02-05 |
| 308 | 1.2 | **Construction Phase** | 167d? | 2007-02-01 | 2007-09-21 |  |  | 0d |  |
| 309 | 1.2.1 | **Construction Phase Iteration 1** | 45d? | 2007-02-01 | 2007-04-04 | 307 |  | 0d |  |
| 310 |  | Begin Iteration 1 | 0d | 2007-02-14 | 2007-02-14 | 307 |  | 0d | start no earlier than 2007-02-14 |
| 311 | 1.2.1.2 | **Iteration Planning** | 1d | 2007-02-14 | 2007-02-14 | 310 |  | 164d |  |
| 312 |  | Review and finalize Ucases and Work List for Iteration | 1d | 2007-02-14 | 2007-02-14 |  |  | 167d |  |
| 313 |  | Review and finalize assignments for Iteration | 1d | 2007-02-14 | 2007-02-14 |  |  | 164d |  |
| 314 | 1.2.1.3 | **Project Management** | 29d | 2007-02-01 | 2007-03-13 |  |  | 0d |  |
| 315 |  | Update Project Plan | 3d | 2007-02-15 | 2007-02-19 | 313 |  | 164d |  |
| 316 | 1.2.1.3.2 | **CaAERS CCB (Task 2.10)** | 1d | 2007-03-05 | 2007-03-05 |  |  | 0d |  |
| 317 |  | CCB Meetings | 1d | 2007-03-05 | 2007-03-05 |  |  | 0d | must start on 2007-03-05 |
| 318 | 1.2.1.3.3 | **Weekly Team/Developers Meeting** | 16d | 2007-02-12 | 2007-03-05 |  |  | 0d |  |
| 319 |  | Weekly Team Meeting 1 | 1d | 2007-02-12 | 2007-02-12 |  |  | 0d | must start on 2007-02-12 |
| 320 |  | Weekly Team Meeting 2 | 1d | 2007-02-19 | 2007-02-19 |  |  | 0d | must start on 2007-02-19 |
| 321 |  | Weekly Team Meeting 3 | 1d | 2007-02-26 | 2007-02-26 |  |  | 0d | must start on 2007-02-26 |
| 322 |  | Weekly Team Meeting 4 | 1d | 2007-03-05 | 2007-03-05 |  |  | 0d | must start on 2007-03-05 |
| 323 | 1.2.1.3.4 | **Status and Risk Reporting** | 23d | 2007-02-09 | 2007-03-13 |  |  | 0d |  |
| 324 |  | Bi-weekly Risk Update in caMP (Task 1.4) | 1d | 2007-02-09 | 2007-02-09 |  |  | 0d | must start on 2007-02-09 |
| 325 |  | Bi-weekly Risk Matrix Update Meeting | 1d | 2007-02-09 | 2007-02-09 |  |  | 0d | must start on 2007-02-09 |
| 326 |  | Bi-weekly Risk Update in caMP (Task 1.4) | 1d | 2007-02-23 | 2007-02-23 |  |  | 160d | start no earlier than 2007-02-23 |
| 327 |  | Bi-weekly Risk Matrix Update Meeting | 1d | 2007-02-23 | 2007-02-23 |  |  | 0d | must start on 2007-02-23 |
| 328 |  | Bi-weekly Status Update Meeting with BAH/NCI | 1d | 2007-02-16 | 2007-02-16 |  |  | 0d | must start on 2007-02-16 |
| 329 |  | Bi-weekly Status Update Meeting with BAH/NCI | 1d | 2007-03-02 | 2007-03-02 |  |  | 0d | must start on 2007-03-02 |
| 330 |  | Monthly Status Report (Task 1.3) | 1d | 2007-03-09 | 2007-03-09 |  |  | 0d | must finish on 2007-03-09 |
| 331 |  | Monthly Risk Matrix Update (Task 1.3) | 1d | 2007-03-12 | 2007-03-12 | 330 |  | 148d |  |
| 332 |  | Adopters Collaboration Report (Task 1.7) | 1d | 2007-03-13 | 2007-03-13 | 331 |  | 148d |  |
| 333 | 1.2.1.3.5 | **Collaboration Management Activities** | 16d | 2007-02-01 | 2007-02-22 |  |  | 0d |  |
| 334 |  | Adopters Mtg | 1d | 2007-02-01 | 2007-02-01 |  |  | -5d | must start on 2007-02-01 |
| 335 |  | Bi-Weekly AE SIG Meeting | 1d | 2007-02-08 | 2007-02-08 |  |  | 0d | must start on 2007-02-08 |
| 336 |  | Adopters Mtg | 1d | 2007-02-15 | 2007-02-15 |  |  | 0d | must start on 2007-02-15 |
| 337 |  | Bi-Weekly AE SIG Meeting | 1d | 2007-02-22 | 2007-02-22 |  |  | 0d | must start on 2007-02-22 |
| 338 | 1.2.1.4 | **Environment** | 3d | 2007-02-08 | 2007-02-12 |  |  | 169d |  |
| 339 |  | Update Environment | 3d | 2007-02-08 | 2007-02-12 |  |  | 169d |  |
| 340 | 1.2.1.5 | **SCM** | 5d | 2007-02-08 | 2007-02-14 |  |  | 167d |  |
| 341 |  | Manage Repository | 5d | 2007-02-08 | 2007-02-14 |  |  | 167d |  |
| 342 | 1.2.1.6 | **Requirements** | 30d | 2007-02-14 | 2007-03-27 |  |  | 138d |  |
| 343 | 1.2.1.6.1 | **Updated Use Case Specification and Realization** | 30d | 2007-02-14 | 2007-03-27 |  |  | 138d |  |
| 344 |  | Developer draft | 5d | 2007-02-14 | 2007-02-20 | 310 |  | 138d |  |
| 345 |  | Adopters/Collobators Review | 5d | 2007-02-21 | 2007-02-27 | 344 |  | 138d |  |
| 346 |  | Update Use Case Document | 5d | 2007-02-28 | 2007-03-06 | 345 |  | 138d |  |
| 347 |  | Submit Updated Use Case Document to BAH (Task 3.1) | 0d | 2007-03-06 | 2007-03-06 | 346 |  | 138d |  |
| 348 |  | Formal Review of Updated Use Case Document | 15d | 2007-03-07 | 2007-03-27 | 347 |  | 138d |  |
| 349 | 1.2.1.6.2 | **Updated SRS Document** | 30d | 2007-02-14 | 2007-03-27 |  |  | 138d |  |
| 350 |  | Developer draft | 5d | 2007-02-14 | 2007-02-20 | 310 |  | 138d |  |

| ID | WBS | Task | Duration | Start | Finish | Predecessors | Total float |
| --- | --- | --- | --- | --- | --- | --- | --- |
| 351 |  | Adopters/Collobators Review | 5d | 2007-02-21 | 2007-02-27 | 350 | 138d |
| 352 |  | Update SRS | 5d | 2007-02-28 | 2007-03-06 | 351 | 138d |
| 353 |  | Submit Updated SRS Document to BAH (Task 3.2) | 0d | 2007-03-06 | 2007-03-06 | 352 | 138d |
| 354 |  | Formal Review of Updated SRS | 15d | 2007-03-07 | 2007-03-27 | 353 | 138d |
| 355 | 1.2.1.6.3 | **Updated UML Static Class Diagram Model** | 30d | 2007-02-14 | 2007-03-27 |  | 138d |
| 356 |  | Developer draft | 5d | 2007-02-14 | 2007-02-20 | 310 | 138d |
| 357 |  | Adopters/Collobators Review | 5d | 2007-02-21 | 2007-02-27 | 356 | 138d |
| 358 |  | Update UML | 5d | 2007-02-28 | 2007-03-06 | 357 | 138d |
| 359 |  | Submit UML to BAH (Task 3.3) | 0d | 2007-03-06 | 2007-03-06 | 358 | 138d |
| 360 |  | Formal Review of UML | 15d | 2007-03-07 | 2007-03-27 | 359 | 138d |
| 361 | 1.2.1.7 | **Analysis and Design** | 31d | 2007-02-08 | 2007-03-22 |  | 141d |
| 362 | 1.2.1.7.1 | **Design Documents** | 31d | 2007-02-08 | 2007-03-22 |  | 141d |
| 363 | 1.2.1.7.1.1 | **Protocol Abstraction (cont'd)** | 17d | 2007-02-14 | 2007-03-08 |  | 141d |
| 364 |  | Develop appropriate UML Artifacts | 5d | 2007-02-14 | 2007-02-20 | 310 | 141d |
| 365 |  | Create Design Document | 5d | 2007-02-21 | 2007-02-27 | 364 | 141d |
| 366 |  | Adopters/Collaborators Review | 5d | 2007-02-28 | 2007-03-06 | 365 | 141d |
| 367 |  | Developers Update | 2d | 2007-03-07 | 2007-03-08 | 366 | 141d |
| 368 | 1.2.1.7.1.2 | **AE Data Collection (cont'd)** | 17d | 2007-02-08 | 2007-03-02 |  | 145d |
| 369 |  | Develop appropriate UML Artifacts | 5d | 2007-02-08 | 2007-02-14 |  | 145d |
| 370 |  | Create Design Document | 5d | 2007-02-15 | 2007-02-21 | 369 | 145d |
| 371 |  | Adopters/Collaborators Review | 5d | 2007-02-22 | 2007-02-28 | 370 | 145d |
| 372 |  | Developers Update | 2d | 2007-03-01 | 2007-03-02 | 371 | 145d |
| 373 | 1.2.1.7.1.3 | **Triggers/Notification (cont'd)** | 17d | 2007-02-08 | 2007-03-02 |  | 145d |
| 374 |  | Develop appropriate UML Artifacts | 5d | 2007-02-08 | 2007-02-14 |  | 145d |
| 375 |  | Create Design Document | 5d | 2007-02-15 | 2007-02-21 | 374 | 145d |
| 376 |  | Adopters/Collaborators Review | 5d | 2007-02-22 | 2007-02-28 | 375 | 145d |
| 377 |  | Developers Update | 2d | 2007-03-01 | 2007-03-02 | 376 | 145d |
| 378 |  | Deliver Design document to BAH (Task 3.4) | 0d | 2007-03-08 | 2007-03-08 | 367, 372, 377 | 151d |
| 379 |  | Deliver UML to BAH (Task 3.3) | 0d | 2007-03-08 | 2007-03-08 | 367, 372, 377 | 141d |
| 380 |  | Formal Review by BAH | 10d | 2007-03-09 | 2007-03-22 | 379 | 141d |
| 381 | 1.2.1.7.2 | **Domain Model** | 5d | 2007-02-14 | 2007-02-20 |  | 163d |
| 382 |  | Update Model/BRIDG Harmonization | 5d | 2007-02-14 | 2007-02-20 | 310 | 163d |
| 383 | 1.2.1.7.3 | **Technical/Architecture Guide** | 20d | 2007-02-21 | 2007-03-20 |  | 143d |
| 384 |  | Update Tech/Arch Guide | 5d | 2007-02-21 | 2007-02-27 | 310FS+5d | 143d |
| 385 |  | Deliver to BAH (Task 2.8) | 0d | 2007-02-27 | 2007-02-27 | 384 | 143d |
| 386 |  | Formal Review | 15d | 2007-02-28 | 2007-03-20 | 385 | 143d |
| 387 | 1.2.1.8 | **Implementation** | 16d | 2007-02-14 | 2007-03-07 |  | 0d |
| 388 | 1.2.1.8.1 | **Web interface** | 5d | 2007-02-14 | 2007-02-20 |  | 11d |
| 389 |  | Third web interface iteration | 5d | 2007-02-14 | 2007-02-20 | 310 | 11d |
| 390 | 1.2.1.8.2 | **Enterprise Service Bus** | 5d | 2007-02-14 | 2007-02-20 |  | 11d |
| 391 |  | Third ESB Iteration | 5d | 2007-02-14 | 2007-02-20 | 310 | 11d |
| 392 | 1.2.1.8.3 | **Grid service** | 5d | 2007-02-14 | 2007-02-20 |  | 11d |
| 393 |  | Implement Grid Service | 5d | 2007-02-14 | 2007-02-20 | 310 | 11d |
| 394 | 1.2.1.8.4 | **Implement Use Cases** | 16d | 2007-02-14 | 2007-03-07 |  | 0d |
| 395 | 1.2.1.8.4.1 | **Protocol Abstraction (cont'd)** | 16d | 2007-02-14 | 2007-03-07 |  | 0d |
| 396 |  | Implement O/R mapping | 5d | 2007-02-14 | 2007-02-20 | 310 | 0d |
| 397 |  | Develop DAO | 10d | 2007-02-16 | 2007-03-01 | 396SS+2d | 0d |
| 398 |  | Develop Service | 10d | 2007-02-20 | 2007-03-05 | 397SS+2d | 0d |
| 399 |  | Develop controller and command objects | 10d | 2007-02-22 | 2007-03-07 | 398SS+2d | 0d |
| 400 |  | Develop JUnit test cases | 7d | 2007-02-26 | 2007-03-06 | 399SS+2d | 1d |
| 401 | 1.2.1.8.4.2 | **AE Data Collection (cont'd)** | 16d | 2007-02-14 | 2007-03-07 |  | 0d |
| 402 |  | Implement O/R mapping | 5d | 2007-02-14 | 2007-02-20 | 310 | 0d |
| 403 |  | Develop DAO | 10d | 2007-02-16 | 2007-03-01 | 402SS+2d | 0d |
| 404 |  | Develop Service | 10d | 2007-02-20 | 2007-03-05 | 403SS+2d | 0d |
| 405 |  | Develop controller and command objects | 10d | 2007-02-22 | 2007-03-07 | 404SS+2d | 0d |
| 406 |  | Develop JUnit test cases | 7d | 2007-02-26 | 2007-03-06 | 405SS+2d | 1d |
| 407 | 1.2.1.8.4.3 | **Triggers/Notification (cont'd)** | 10d | 2007-02-14 | 2007-02-27 |  | 6d |
| 408 |  | JBOSS Rules Setup/Development | 10d | 2007-02-14 | 2007-02-27 | 310 | 6d |
| 409 | 1.2.1.9 | **Testing** | 36d? | 2007-02-14 | 2007-04-04 |  | 16d |
| 410 | 1.2.1.9.1 | **Test Plan** | 11d? | 2007-02-14 | 2007-02-28 |  | 157d |
| 411 |  | Update Test Plan Document (Task 3.6) | 10d | 2007-02-14 | 2007-02-27 | 310 | 157d |
| 412 |  | Submit to BAH | 0d | 2007-02-27 | 2007-02-27 | 411 | 157d |
| 413 |  | Formal Review by BAH | 1d? | 2007-02-28 | 2007-02-28 | 412 | 157d |
| 414 | 1.2.1.9.2 | **Create Functional Tests** | 15d | 2007-02-14 | 2007-03-06 |  | 153d |
| 415 |  | Create Functional Tests for Use Cases | 10d | 2007-02-14 | 2007-02-27 | 310 | 153d |
| 416 |  | Review by Adopters | 5d | 2007-02-28 | 2007-03-06 | 415 | 153d |
| 417 | 1.2.1.9.3 | **RTM** | 5d | 2007-02-28 | 2007-03-06 |  | 153d |
| 418 |  | Create RTM | 5d | 2007-02-28 | 2007-03-06 | 415 | 153d |
| 419 | 1.2.1.9.4 | **Test Data** | 20d | 2007-02-14 | 2007-03-13 |  | 148d |
| 420 |  | Create test data set (Task 3.7) | 10d | 2007-02-14 | 2007-02-27 | 310 | 148d |

| ID | WBS | Task | Duration | Start | Finish | Predecessors | Total float | Constraint |
| --- | --- | --- | --- | --- | --- | --- | --- | --- |
| 421 |  | Submit for Review | 0d | 2007-02-27 | 2007-02-27 | 420 | 148d |  |
| 422 |  | Review | 10d | 2007-02-28 | 2007-03-13 | 421 | 148d |  |
| 423 | 1.2.1.9.5 | **Testing** | 20d | 2007-03-08 | 2007-04-04 |  | 0d |  |
| 424 |  | Testing | 5d | 2007-03-08 | 2007-03-14 | 387 | 0d |  |
| 425 |  | Submit Test Results Report (Task 3.7) | 0d | 2007-03-14 | 2007-03-14 | 424 | 132d |  |
| 426 |  | Formal Review of Test results Report | 15d | 2007-03-15 | 2007-04-04 | 425 | 132d |  |
| 427 | 1.2.1.10 | **Deployment** | 15d | 2007-03-08 | 2007-03-28 |  | 5d |  |
| 428 |  | Submit prototype code (Task 3.5) | 0d | 2007-03-14 | 2007-03-14 | 424 | 0d |  |
| 429 |  | Formal Review of Code by BAH | 10d | 2007-03-15 | 2007-03-28 | 428 | 137d |  |
| 430 |  | Update Installation Guide | 2d | 2007-03-08 | 2007-03-09 | 387 | 149d |  |
| 431 |  | Deploy Prototype for Iteration 1 at Mayo and WF | 1d | 2007-03-15 | 2007-03-15 | 424, 430 | 146d |  |
| 432 |  | Make URL Public | 1d | 2007-03-15 | 2007-03-15 | 424 | 146d |  |
| 433 |  | Finish Iteration 1 | 0d | 2007-03-14 | 2007-03-14 | 428 | 0d |  |
| 434 | 1.2.2 | **Construction Phase Iteration 2** | 36d? | 2007-03-14 | 2007-05-03 | 433 | 0d |  |
| 435 |  | Begin Iteration 2 | 0d | 2007-03-14 | 2007-03-14 | 433 | 142d |  |
| 436 | 1.2.2.2 | **Iteration Planning** | 2d | 2007-03-15 | 2007-03-16 |  | 142d |  |
| 437 |  | Review and finalize Ucases and Work List for Iteration | 1d | 2007-03-15 | 2007-03-15 | 435 | 142d |  |
| 438 |  | Review and finalize assignments for Iteration | 1d | 2007-03-16 | 2007-03-16 | 437 | 142d |  |
| 439 | 1.2.2.3 | **Project Management** | 22d | 2007-03-15 | 2007-04-13 |  | 0d |  |
| 440 |  | Update Project Plan | 3d | 2007-03-19 | 2007-03-21 | 438 | 120d |  |
| 441 | 1.2.2.3.2 | **CaAERS CCB (Task 2.10)** | 1d | 2007-04-02 | 2007-04-02 |  | 134d |  |
| 442 |  | CCB Meetings | 1d | 2007-04-02 | 2007-04-02 |  | 134d | finish no earlier than 2007-04-02 |
| 443 | 1.2.2.3.3 | **Weekly Team/Developers Meeting** | 16d | 2007-03-19 | 2007-04-09 |  | 0d |  |
| 444 |  | Weekly Team Meeting 1 | 1d | 2007-03-19 | 2007-03-19 |  | 0d | must start on 2007-03-19 |
| 445 |  | Weekly Team Meeting 2 | 1d | 2007-03-26 | 2007-03-26 |  | 0d | must start on 2007-03-26 |
| 446 |  | Weekly Team Meeting 3 | 1d | 2007-04-02 | 2007-04-02 |  | 0d | must start on 2007-04-02 |
| 447 |  | Weekly Team Meeting 4 | 1d | 2007-04-09 | 2007-04-09 |  | 0d | must start on 2007-04-09 |
| 448 | 1.2.2.3.4 | **Status and Risk Reporting** | 21d | 2007-03-16 | 2007-04-13 |  | 0d |  |
| 449 |  | Bi-weekly Risk Update in caMP (Task 1.4) | 1d | 2007-03-16 | 2007-03-16 |  | 0d | must start on 2007-03-16 |
| 450 |  | Bi-weekly Risk Matrix Update Meeting | 1d | 2007-03-16 | 2007-03-16 |  | 0d | must start on 2007-03-16 |
| 451 |  | Bi-weekly Risk Update in caMP (Task 1.4) | 1d | 2007-03-30 | 2007-03-30 |  | 113d | start no earlier than 2007-03-30 |
| 452 |  | Bi-weekly Risk Matrix Update Meeting | 1d | 2007-03-30 | 2007-03-30 |  | 0d | must start on 2007-03-30 |
| 453 |  | Bi-weekly Status Update Meeting with BAH/NCI | 1d | 2007-03-23 | 2007-03-23 |  | 0d | must start on 2007-03-23 |
| 454 |  | Bi-weekly Status Update Meeting with BAH/NCI | 1d | 2007-04-06 | 2007-04-06 |  | 0d | must start on 2007-04-06 |
| 455 |  | Monthly Status Report (Task 1.3) | 1d | 2007-04-13 | 2007-04-13 |  | 0d | must finish on 2007-04-13 |
| 456 |  | Monthly Risk Matrix Update (Task 1.3) | 1d | 2007-04-13 | 2007-04-13 | 455SS | 103d |  |
| 457 | 1.2.2.3.5 | **Collaboration Management Activities** | 16d | 2007-03-15 | 2007-04-05 |  | 0d |  |
| 458 |  | Adopters Mtg | 1d | 2007-03-15 | 2007-03-15 |  | 0d | must start on 2007-03-15 |
| 459 |  | Bi-Weekly AE SIG Meeting | 1d | 2007-03-22 | 2007-03-22 |  | 0d | must start on 2007-03-22 |
| 460 |  | Adopters Mtg | 1d | 2007-03-29 | 2007-03-29 |  | 0d | must start on 2007-03-29 |
| 461 |  | Bi-Weekly AE SIG Meeting | 1d | 2007-04-05 | 2007-04-05 |  | 0d | must start on 2007-04-05 |
| 462 | 1.2.2.4 | **Environment** | 3d | 2007-03-15 | 2007-03-19 |  | 144d |  |
| 463 |  | Update Environment | 3d | 2007-03-15 | 2007-03-19 | 433 | 144d |  |
| 464 | 1.2.2.5 | **SCM** | 5d | 2007-03-15 | 2007-03-21 |  | 142d |  |
| 465 |  | Manage Repository | 5d | 2007-03-15 | 2007-03-21 | 433 | 142d |  |
| 466 | 1.2.2.6 | **Requirements** | 30d | 2007-03-15 | 2007-04-25 |  | 117d |  |
| 467 | 1.2.2.6.1 | **Updated Use Case Specification and Realization** | 30d | 2007-03-15 | 2007-04-25 |  | 117d |  |
| 468 |  | Developer draft | 5d | 2007-03-15 | 2007-03-21 | 433 | 117d |  |
| 469 |  | Adopters/Collobators Review | 5d | 2007-03-22 | 2007-03-28 | 468 | 117d |  |
| 470 |  | Update Use Case Document | 5d | 2007-03-29 | 2007-04-04 | 469 | 117d |  |
| 471 |  | Submit Updated Use Case Document to BAH (Task 3.1) | 0d | 2007-04-04 | 2007-04-04 | 470 | 117d |  |
| 472 |  | Formal Review of Updated Use Case Document | 15d | 2007-04-05 | 2007-04-25 | 471 | 117d |  |
| 473 | 1.2.2.6.2 | **Updated SRS Document** | 30d | 2007-03-15 | 2007-04-25 |  | 117d |  |
| 474 |  | Developer draft | 5d | 2007-03-15 | 2007-03-21 | 433 | 117d |  |
| 475 |  | Adopters/Collobators Review | 5d | 2007-03-22 | 2007-03-28 | 474 | 117d |  |
| 476 |  | Update SRS | 5d | 2007-03-29 | 2007-04-04 | 475 | 117d |  |
| 477 |  | Submit Updated SRS Document to BAH (Task 3.2) | 0d | 2007-04-04 | 2007-04-04 | 476 | 117d |  |
| 478 |  | Formal Review of Updated SRS | 15d | 2007-04-05 | 2007-04-25 | 477 | 117d |  |
| 479 | 1.2.2.6.3 | **Updated UML Static Class Diagram Model** | 30d | 2007-03-15 | 2007-04-25 |  | 117d |  |
| 480 |  | Developer draft | 5d | 2007-03-15 | 2007-03-21 | 433 | 117d |  |
| 481 |  | Adopters/Collobators Review | 5d | 2007-03-22 | 2007-03-28 | 480 | 117d |  |
| 482 |  | Update UML | 5d | 2007-03-29 | 2007-04-04 | 481 | 117d |  |
| 483 |  | Submit UML to BAH (Task 3.3) | 0d | 2007-04-04 | 2007-04-04 | 482 | 117d |  |
| 484 |  | Formal Review of UML | 15d | 2007-04-05 | 2007-04-25 | 483 | 117d |  |
| 485 | 1.2.2.7 | **Analysis and Design** | 27d? | 2007-03-15 | 2007-04-20 |  | 120d |  |
| 486 | 1.2.2.7.1 | **Design Documents** | 27d? | 2007-03-15 | 2007-04-20 |  | 120d |  |
| 487 | 1.2.2.7.1.1 | **New Version of Existing Study** | 17d | 2007-03-15 | 2007-04-06 |  | 120d |  |
| 488 |  | Develop appropriate UML Artifacts | 5d | 2007-03-15 | 2007-03-21 |  | 120d |  |
| 489 |  | Create Design Document | 5d | 2007-03-22 | 2007-03-28 | 488 | 120d |  |
| 490 |  | Adopters/Collaborators Review | 5d | 2007-03-29 | 2007-04-04 | 489 | 120d |  |

| ID | WBS | Task | Duration | Start | Finish | Predecessors | Total float |
| --- | --- | --- | --- | --- | --- | --- | --- |
| 491 |  | Developers Update | 2d | 2007-04-05 | 2007-04-06 | 490 | 120d |
| 492 | 1.2.2.7.1.2 | **AE Data Collection** | 17d | 2007-03-15 | 2007-04-06 |  | 120d |
| 493 |  | Develop appropriate UML Artifacts | 5d | 2007-03-15 | 2007-03-21 |  | 120d |
| 494 |  | Create Design Document | 5d | 2007-03-22 | 2007-03-28 | 493 | 120d |
| 495 |  | Adopters/Collaborators Review | 5d | 2007-03-29 | 2007-04-04 | 494 | 120d |
| 496 |  | Developers Update | 2d | 2007-04-05 | 2007-04-06 | 495 | 120d |
| 497 | 1.2.2.7.1.3 | **Candidate AE** | 1d? | 2007-03-15 | 2007-03-15 |  | 136d |
| 498 |  | Develop appropriate UML Artifacts | 1d? | 2007-03-15 | 2007-03-15 |  | 146d |
| 499 |  | Create Design Document | 1d? | 2007-03-15 | 2007-03-15 |  | 146d |
| 500 |  | Adopters/Collaborators Review | 1d? | 2007-03-15 | 2007-03-15 |  | 146d |
| 501 |  | Developers Update | 1d? | 2007-03-15 | 2007-03-15 |  | 136d |
| 502 | 1.2.2.7.1.4 | **Institution AE Notification Trigger** | 17d | 2007-03-15 | 2007-04-06 |  | 120d |
| 503 |  | Develop appropriate UML Artifacts | 5d | 2007-03-15 | 2007-03-21 |  | 120d |
| 504 |  | Create Design Document | 5d | 2007-03-22 | 2007-03-28 | 503 | 120d |
| 505 |  | Adopters/Collaborators Review | 5d | 2007-03-29 | 2007-04-04 | 504 | 120d |
| 506 |  | Developers Update | 2d | 2007-04-05 | 2007-04-06 | 505 | 120d |
| 507 |  | Deliver Design document to BAH (Task 3.4) | 0d | 2007-04-06 | 2007-04-06 | 491, 496, 506, 501 | 130d |
| 508 |  | Deliver UML to BAH (Task 3.3) | 0d | 2007-04-06 | 2007-04-06 | 491, 496, 506, 501 | 120d |
| 509 |  | Formal Review by BAH | 10d | 2007-04-09 | 2007-04-20 | 508 | 120d |
| 510 | 1.2.2.7.2 | **Domain Model** | 5d | 2007-03-15 | 2007-03-21 |  | 142d |
| 511 |  | Update Model/BRIDG Harmonization | 5d | 2007-03-15 | 2007-03-21 | 433 | 142d |
| 512 | 1.2.2.7.3 | **Technical/Architecture Guide** | 20d | 2007-03-15 | 2007-04-11 |  | 127d |
| 513 |  | Update Tech/Arch Guide | 5d | 2007-03-15 | 2007-03-21 | 433 | 127d |
| 514 |  | Deliver to BAH (Task 2.8) | 0d | 2007-03-21 | 2007-03-21 | 513 | 127d |
| 515 |  | Formal Review | 15d | 2007-03-22 | 2007-04-11 | 514 | 127d |
| 516 | 1.2.2.8 | **Implementation** | 16d | 2007-03-15 | 2007-04-05 |  | 0d |
| 517 | 1.2.2.8.1 | **Web interface** | 5d | 2007-03-15 | 2007-03-21 |  | 11d |
| 518 |  | Fourth web interface iteration | 5d | 2007-03-15 | 2007-03-21 | 433 | 11d |
| 519 | 1.2.2.8.2 | **Enterprise Service Bus** | 5d | 2007-03-15 | 2007-03-21 |  | 11d |
| 520 |  | Fourth ESB Iteration | 5d | 2007-03-15 | 2007-03-21 | 433 | 11d |
| 521 | 1.2.2.8.3 | **Grid service** | 5d | 2007-03-15 | 2007-03-21 |  | 11d |
| 522 |  | Implement Grid Service | 5d | 2007-03-15 | 2007-03-21 | 433 | 11d |
| 523 | 1.2.2.8.4 | **Implement Use Cases** | 16d | 2007-03-15 | 2007-04-05 |  | 0d |
| 524 | 1.2.2.8.4.1 | **New Version of Study** | 16d | 2007-03-15 | 2007-04-05 |  | 0d |
| 525 |  | Implement O/R mapping | 5d | 2007-03-15 | 2007-03-21 | 433 | 0d |
| 526 |  | Develop DAO | 10d | 2007-03-19 | 2007-03-30 | 525SS+2d | 0d |
| 527 |  | Develop Service | 10d | 2007-03-21 | 2007-04-03 | 526SS+2d | 0d |
| 528 |  | Develop controller and command objects | 10d | 2007-03-23 | 2007-04-05 | 527SS+2d | 0d |
| 529 |  | Develop JUnit test cases | 7d | 2007-03-27 | 2007-04-04 | 528SS+2d | 1d |
| 530 | 1.2.2.8.4.2 | **AE Data Collection (cont'd)** | 16d | 2007-03-15 | 2007-04-05 |  | 0d |
| 531 |  | Implement O/R mapping | 5d | 2007-03-15 | 2007-03-21 | 433 | 0d |
| 532 |  | Develop DAO | 10d | 2007-03-19 | 2007-03-30 | 531SS+2d | 0d |
| 533 |  | Develop Service | 10d | 2007-03-21 | 2007-04-03 | 532SS+2d | 0d |
| 534 |  | Develop controller and command objects | 10d | 2007-03-23 | 2007-04-05 | 533SS+2d | 0d |
| 535 |  | Develop JUnit test cases | 7d | 2007-03-27 | 2007-04-04 | 534SS+2d | 1d |
| 536 | 1.2.2.8.4.3 | **Candidate AE** | 16d | 2007-03-15 | 2007-04-05 |  | 0d |
| 537 |  | Implement O/R mapping | 5d | 2007-03-15 | 2007-03-21 | 433 | 0d |
| 538 |  | Develop DAO | 10d | 2007-03-19 | 2007-03-30 | 537SS+2d | 0d |
| 539 |  | Develop Service | 10d | 2007-03-21 | 2007-04-03 | 538SS+2d | 0d |
| 540 |  | Develop controller and command objects | 10d | 2007-03-23 | 2007-04-05 | 539SS+2d | 0d |
| 541 |  | Develop JUnit test cases | 7d | 2007-03-27 | 2007-04-04 | 540SS+2d | 1d |
| 542 | 1.2.2.8.4.4 | **Triggers/Notification (cont'd)** | 16d | 2007-03-15 | 2007-04-05 |  | 0d |
| 543 |  | Implement O/R mapping | 5d | 2007-03-15 | 2007-03-21 | 433 | 0d |
| 544 |  | Develop DAO | 10d | 2007-03-19 | 2007-03-30 | 543SS+2d | 0d |
| 545 |  | Develop Service | 10d | 2007-03-21 | 2007-04-03 | 544SS+2d | 0d |
| 546 |  | Develop controller and command objects | 10d | 2007-03-23 | 2007-04-05 | 545SS+2d | 0d |
| 547 |  | Develop JUnit test cases | 7d | 2007-03-27 | 2007-04-04 | 546SS+2d | 1d |
| 548 | 1.2.2.9 | **Testing** | 36d? | 2007-03-15 | 2007-05-03 |  | 16d |
| 549 | 1.2.2.9.1 | **Test Plan** | 11d? | 2007-03-15 | 2007-03-29 |  | 136d |
| 550 |  | Update Test Plan Document (Task 3.6) | 10d | 2007-03-15 | 2007-03-28 | 433 | 136d |
| 551 |  | Submit to BAH | 0d | 2007-03-28 | 2007-03-28 | 550 | 136d |
| 552 |  | Formal Review by BAH | 1d? | 2007-03-29 | 2007-03-29 | 551 | 136d |
| 553 | 1.2.2.9.2 | **Create Functional Tests** | 15d | 2007-03-15 | 2007-04-04 |  | 132d |
| 554 |  | Create Functional Tests for Use Cases | 10d | 2007-03-15 | 2007-03-28 | 433 | 132d |
| 555 |  | Review by Adopters | 5d | 2007-03-29 | 2007-04-04 | 554 | 132d |
| 556 | 1.2.2.9.3 | **RTM** | 5d | 2007-03-29 | 2007-04-04 |  | 132d |
| 557 |  | Create RTM | 5d | 2007-03-29 | 2007-04-04 | 554 | 132d |
| 558 | 1.2.2.9.4 | **Test Data** | 20d | 2007-03-15 | 2007-04-11 |  | 127d |
| 559 |  | Create test data set (Task 3.7) | 10d | 2007-03-15 | 2007-03-28 | 433 | 127d |
| 560 |  | Submit for Review | 0d | 2007-03-28 | 2007-03-28 | 559 | 127d |

| ID | WBS | Task | Duration | Start | Finish | Predecessors | Total float |
| --- | --- | --- | --- | --- | --- | --- | --- |
| 561 |  | Review | 10d | 2007-03-29 | 2007-04-11 | 560 | 127d |
| 562 | 1.2.2.9.5 | **Testing** | 20d | 2007-04-06 | 2007-05-03 |  | 0d |
| 563 |  | Testing | 5d | 2007-04-06 | 2007-04-12 | 516 | 0d |
| 564 |  | Submit Test Results Report (Task 3.7) | 0d | 2007-04-12 | 2007-04-12 | 563 | 111d |
| 565 |  | Formal Review of Test results Report | 15d | 2007-04-13 | 2007-05-03 | 564 | 111d |
| 566 | 1.2.2.10 | **Deployment** | 15d | 2007-04-06 | 2007-04-26 |  | 3d |
| 567 |  | Submit prototype code (Task 3.5) | 0d | 2007-04-12 | 2007-04-12 | 563 | 116d |
| 568 |  | Formal Review of Code by BAH | 10d | 2007-04-13 | 2007-04-26 | 567 | 116d |
| 569 |  | Update Installation Guide | 2d | 2007-04-06 | 2007-04-09 | 516 | 3d |
| 570 |  | Deploy Prototype for Iteration 1 at Mayo and WF | 1d | 2007-04-13 | 2007-04-13 | 563, 569 | 0d |
| 571 |  | Make URL Public | 1d | 2007-04-13 | 2007-04-13 | 563 | 125d |
| 572 |  | Finish Iteration 2 | 0d | 2007-04-13 | 2007-04-13 | 570 | 0d |
| 573 | 1.2.3 | **Construction Phase Iteration 3** | 23d | 2007-04-13 | 2007-05-16 | 572 | 0d |
| 574 |  | Begin Iteration 3 | 0d | 2007-04-13 | 2007-04-13 |  | 0d |
| 575 |  | Environment Updates | 10d | 2007-04-16 | 2007-04-27 |  | 115d |
| 576 |  | Updates to Requirements, Use Case, UML, and Design Document | 20d | 2007-04-16 | 2007-05-11 |  | 105d |
| 577 |  | Test Plan and RTM Updates | 15d | 2007-04-16 | 2007-05-04 |  | 110d |
| 578 |  | Develop Code | 20d | 2007-04-16 | 2007-05-11 |  | 105d |
| 579 |  | Testing | 20d | 2007-04-16 | 2007-05-11 |  | 105d |
| 580 |  | Installation Guide Drafts | 5d | 2007-05-07 | 2007-05-11 | 581FS-5d | 105d |
| 581 |  | Finish Iteration 3 | 0d | 2007-05-11 | 2007-05-11 | 574FS+20d | 0d |
| 582 |  | Iteration 3 Review and Feedback | 5d | 2007-05-10 | 2007-05-16 | 581FS-2d | 0d |
| 583 | 1.2.4 | **Construction Phase Iteration 4** | 23d | 2007-05-16 | 2007-06-18 | 582 | 0d |
| 584 |  | Begin Iteration 4 | 0d | 2007-05-16 | 2007-05-16 |  | 0d |
| 585 |  | Environment Updates | 10d | 2007-05-17 | 2007-05-30 |  | 92d |
| 586 |  | Updates to Requirements, Use Case, UML, and Design Document | 20d | 2007-05-17 | 2007-06-13 |  | 82d |
| 587 |  | Test Plan and RTM Updates | 15d | 2007-05-17 | 2007-06-06 |  | 87d |
| 588 |  | Develop Code | 20d | 2007-05-17 | 2007-06-13 |  | 82d |
| 589 |  | Testing | 20d | 2007-05-17 | 2007-06-13 |  | 82d |
| 590 |  | Installation Guide Draft | 5d | 2007-06-07 | 2007-06-13 | 593FS-5d | 82d |
| 591 |  | Administrators Guide Draft | 5d | 2007-06-07 | 2007-06-13 | 593FS-5d | 82d |
| 592 |  | End User Guide Draft | 5d | 2007-06-07 | 2007-06-13 | 593FS-5d | 82d |
| 593 |  | Finish Iteration 4 | 0d | 2007-06-13 | 2007-06-13 | 584FS+20d | 0d |
| 594 |  | Iteration 4 Review and Feedback | 5d | 2007-06-12 | 2007-06-18 | 593FS-2d | 0d |
| 595 | 1.2.5 | **Construction Phase Iteration 5** | 23d | 2007-06-18 | 2007-07-19 | 594 | 0d |
| 596 |  | Begin Iteration 5 | 0d | 2007-06-18 | 2007-06-18 |  | 0d |
| 597 |  | Environment Updates | 10d | 2007-06-19 | 2007-07-02 |  | 69d |
| 598 |  | Updates to Requirements, Use Case, UML, and Design Document | 20d | 2007-06-19 | 2007-07-16 |  | 59d |
| 599 |  | Test Plan and RTM Updates | 15d | 2007-06-19 | 2007-07-09 |  | 64d |
| 600 |  | Develop Code | 20d | 2007-06-19 | 2007-07-16 |  | 59d |
| 601 |  | Testing | 20d | 2007-06-19 | 2007-07-16 |  | 59d |
| 602 |  | Testing Results | 5d | 2007-07-10 | 2007-07-16 | 606FS-5d | 59d |
| 603 |  | Installation Guide Draft | 5d | 2007-07-10 | 2007-07-16 | 606FS-5d | 59d |
| 604 |  | Administrators Guide Draft | 5d | 2007-07-10 | 2007-07-16 | 606FS-5d | 59d |
| 605 |  | End User Guide Draft | 5d | 2007-06-19 | 2007-06-25 |  | 74d |
| 606 |  | Finish Iteration 5 | 0d | 2007-07-16 | 2007-07-16 | 596FS+20d | 0d |
| 607 |  | Iteration 5 Review and Feedback | 5d | 2007-07-13 | 2007-07-19 | 606FS-2d | 0d |
| 608 | 1.2.6 | **Construction Phase Iteration 6** | 23d | 2007-07-19 | 2007-08-21 | 607 | 0d |
| 609 |  | Begin Iteration 6 | 0d | 2007-07-19 | 2007-07-19 |  | 0d |
| 610 |  | Environment Updates | 10d | 2007-07-20 | 2007-08-02 |  | 46d |
| 611 |  | Updates to Requirements, Use Case, UML, and Design Document | 20d | 2007-07-20 | 2007-08-16 |  | 36d |
| 612 |  | Test Plan and RTM Updates | 15d | 2007-07-20 | 2007-08-09 |  | 41d |
| 613 |  | Develop Code | 20d | 2007-07-20 | 2007-08-16 |  | 36d |
| 614 |  | Installation Guide Draft | 5d | 2007-08-10 | 2007-08-16 | 619FS-5d | 36d |
| 615 |  | Administrators Guide Draft | 5d | 2007-08-10 | 2007-08-16 | 619FS-5d | 36d |
| 616 |  | End User Guide Draft | 5d | 2007-08-10 | 2007-08-16 | 619FS-5d | 36d |
| 617 |  | Testing | 20d | 2007-07-20 | 2007-08-16 |  | 36d |
| 618 |  | Testing Results | 5d | 2007-08-10 | 2007-08-16 | 617FS-5d | 36d |
| 619 |  | Finish Iteration 6 | 0d | 2007-08-16 | 2007-08-16 | 609FS+20d | 0d |
| 620 |  | Iteration 6 Review and Feedback | 5d | 2007-08-15 | 2007-08-21 | 619FS-2d | 0d |
| 621 | 1.2.7 | **Construction Phase Iteration 7** | 23d | 2007-08-21 | 2007-09-21 | 620 | 0d |
| 622 |  | Begin Iteration 7 | 0d | 2007-08-21 | 2007-08-21 |  | 0d |
| 623 |  | Environment Updates | 10d | 2007-08-22 | 2007-09-04 |  | 23d |
| 624 |  | Finalize Requirements, Use Case, UML, and Design Document | 10d | 2007-08-22 | 2007-09-04 |  | 13d |
| 625 |  | Test Plan and RTM Updates (Task 3.6) | 15d | 2007-08-22 | 2007-09-11 |  | 18d |
| 626 |  | Finalize Code Base (Task 3.5) | 20d | 2007-08-22 | 2007-09-18 |  | 13d |
| 627 |  | Testing | 20d | 2007-08-22 | 2007-09-18 |  | 13d |
| 628 |  | Final Test Results Report (3.8) | 5d | 2007-09-12 | 2007-09-18 | 636FS-5d | 13d |
| 629 |  | Final Transition Phase Plan (3.16) | 5d | 2007-09-12 | 2007-09-18 | 636FS-5d | 13d |
| 630 |  | Compatibility Review Submission Package (Task 3.12) | 10d | 2007-09-05 | 2007-09-18 | 636FS-10d | 13d |

| ID | WBS | Task | Duration | Start | Finish | Predecessors | Total float |
| --- | --- | --- | --- | --- | --- | --- | --- |
| 631 |  | Generation of CDEs (Task 3.11.2) | 10d | 2007-09-05 | 2007-09-18 | 624 | 13d |
| 632 |  | Final Administrators Guide (Task 3.13) | 5d | 2007-09-12 | 2007-09-18 | 636FS-5d | 13d |
| 633 |  | Final End Users Guide (Task 3.15.2) | 5d | 2007-09-12 | 2007-09-18 | 636FS-5d | 13d |
| 634 |  | Final Installation Guide (Task 3.10) | 5d | 2007-09-12 | 2007-09-18 | 636FS-5d | 13d |
| 635 |  | Release Notes (Task 3.14) | 5d | 2007-09-12 | 2007-09-18 | 636FS-5d | 13d |
| 636 |  | Finish Iteration 7 | 0d | 2007-09-18 | 2007-09-18 | 622FS+20d | 0d |
| 637 |  | Iteration 7 Review and Feedback | 5d | 2007-09-17 | 2007-09-21 | 636FS-2d | 0d |
| 638 |  | Finish Construction Phase | 0d | 2007-09-21 | 2007-09-21 | 637 | 0d |
| 639 | 1.3 | **Transition Phase** | 10d | 2007-09-24 | 2007-10-05 | 638 | 0d |
| 640 |  | Deployment Plan (Task 4.1) | 2d | 2007-09-24 | 2007-09-25 |  | 3d |
| 641 |  | Deployment | 5d | 2007-09-26 | 2007-10-02 | 640 | 3d |
| 642 |  | Deployment Report (Task 4.2) | 1d | 2007-09-24 | 2007-09-24 |  | 9d |
| 643 |  | Code Release Updates (if needed) (Task 4.3) | 10d | 2007-09-24 | 2007-10-05 |  | 0d |
| 644 |  | Guide Updates (if needed) | 10d | 2007-09-24 | 2007-10-05 |  | 0d |
| 645 | 1.3.6 | **Project Closing Activities** | 10d | 2007-09-24 | 2007-10-05 |  | 0d |
| 646 |  | Lessons Learned (Task 1.6) | 10d | 2007-09-24 | 2007-10-05 |  | 0d |
| 647 |  | Archiving | 10d | 2007-09-24 | 2007-10-05 |  | 0d |
| 648 |  | Contract Closeout | 10d | 2007-09-24 | 2007-10-05 |  | 0d |

## Version 2 (saved 2007-02-15)

Note of the change: SVN-Revision: 529

Last finish 2007-10-05 → 2007-09-21 (-14d).

Added:

| ID | Task | Duration | Start | Finish | Predecessors | Resources |
| --- | --- | --- | --- | --- | --- | --- |
| 388 | **Infrastructure** | 10d | 2007-02-14 | 2007-02-27 |  |  |
| 389 | **Build Framework** | 5d | 2007-02-14 | 2007-02-20 |  |  |
| 390 | Maven Setup | 5d | 2007-02-14 | 2007-02-20 | 310 | Rhett |
| 409 | AE Trigger Notification | 10d | 2007-02-14 | 2007-02-27 | 310 | Sujith |

Removed: 392 Grid service; 393 Implement Grid Service; 408 JBOSS Rules Setup/Development

Changed:

| ID | Task | Start | Finish | Duration | Total float | Predecessors | Other |
| --- | --- | --- | --- | --- | --- | --- | --- |
| 1 | **caAERS Application Development Project** |  | 2007-10-05 → 2007-09-21 (-14d) | 219d? → 209d? |  |  |  |
| 308 | **Construction Phase** |  | 2007-09-21 → 2007-09-07 (-14d) | 167d? → 157d? |  |  |  |
| 309 | **Construction Phase Iteration 1** |  | 2007-04-04 → 2007-03-22 (-13d) | 45d? → 36d? |  |  |  |
| 342 | **Requirements** |  | 2007-03-27 → 2007-03-22 (-5d) | 30d → 27d | 138d → 136d |  |  |
| 343 | **Updated Use Case Specification and Realization** |  | 2007-03-27 → 2007-03-22 (-5d) | 30d → 27d | 138d → 136d |  |  |
| 346 | Update Use Case Document |  | 2007-03-06 → 2007-03-01 (-5d) | 5d → 2d | 138d → 141d |  |  |
| 347 | Submit Updated Use Case Document to BAH (Task 3.1) | 2007-03-06 → 2007-03-01 (-5d) | 2007-03-06 → 2007-03-01 (-5d) |  | 138d → 141d |  |  |
| 348 | Formal Review of Updated Use Case Document | 2007-03-07 → 2007-03-02 (-5d) | 2007-03-27 → 2007-03-22 (-5d) |  | 138d → 141d |  |  |
| 349 | **Updated SRS Document** |  | 2007-03-27 → 2007-03-22 (-5d) | 30d → 27d | 138d → 136d |  |  |
| 352 | Update SRS |  | 2007-03-06 → 2007-03-01 (-5d) | 5d → 2d | 138d → 141d |  |  |
| 353 | Submit Updated SRS Document to BAH (Task 3.2) | 2007-03-06 → 2007-03-01 (-5d) | 2007-03-06 → 2007-03-01 (-5d) |  | 138d → 141d |  |  |
| 354 | Formal Review of Updated SRS | 2007-03-07 → 2007-03-02 (-5d) | 2007-03-27 → 2007-03-22 (-5d) |  | 138d → 141d |  |  |
| 355 | **Updated UML Static Class Diagram Model** |  | 2007-03-27 → 2007-03-22 (-5d) | 30d → 27d | 138d → 136d |  |  |
| 358 | Update UML |  | 2007-03-06 → 2007-03-01 (-5d) | 5d → 2d | 138d → 141d |  |  |
| 359 | Submit UML to BAH (Task 3.3) | 2007-03-06 → 2007-03-01 (-5d) | 2007-03-06 → 2007-03-01 (-5d) |  | 138d → 141d |  |  |
| 360 | Formal Review of UML | 2007-03-07 → 2007-03-02 (-5d) | 2007-03-27 → 2007-03-22 (-5d) |  | 138d → 141d |  |  |
| 361 | **Analysis and Design** |  | 2007-03-22 → 2007-03-21 (-1d) | 31d → 30d | 141d → 137d |  |  |
| 362 | **Design Documents** |  | 2007-03-22 → 2007-03-15 (-7d) | 31d → 26d |  |  |  |
| 363 | **Protocol Abstraction (Diseases/Agents)** |  | 2007-03-08 → 2007-03-01 (-7d) | 17d → 12d |  |  | was named Protocol Abstraction (cont'd) |
| 364 | Develop appropriate UML Artifacts |  | 2007-02-20 → 2007-02-15 (-5d) | 5d → 2d | 141d → 146d |  |  |
| 365 | Create Design Document | 2007-02-21 → 2007-02-16 (-5d) | 2007-02-27 → 2007-02-20 (-7d) | 5d → 3d | 141d → 146d |  |  |
| 366 | Adopters/Collaborators Review | 2007-02-28 → 2007-02-21 (-7d) | 2007-03-06 → 2007-02-27 (-7d) |  | 141d → 146d |  |  |
| 367 | Developers Update | 2007-03-07 → 2007-02-28 (-7d) | 2007-03-08 → 2007-03-01 (-7d) |  | 141d → 146d |  |  |
| 368 | **Protocol Abstration (Organizational Information)** |  | 2007-03-02 → 2007-02-23 (-7d) | 17d → 12d |  |  | was named AE Data Collection (cont'd) |
| 369 | Develop appropriate UML Artifacts |  | 2007-02-14 → 2007-02-09 (-5d) | 5d → 2d | 145d → 150d |  | resources Rhett → Kulasekaran |
| 370 | Create Design Document | 2007-02-15 → 2007-02-12 (-3d) | 2007-02-21 → 2007-02-14 (-7d) | 5d → 3d | 145d → 150d |  | resources Rhett → Kulasekaran |
| 371 | Adopters/Collaborators Review | 2007-02-22 → 2007-02-15 (-7d) | 2007-02-28 → 2007-02-21 (-7d) |  | 145d → 150d |  |  |
| 372 | Developers Update | 2007-03-01 → 2007-02-22 (-7d) | 2007-03-02 → 2007-02-23 (-7d) |  | 145d → 150d |  | resources Rhett → Kulasekaran |
| 373 | **Triggers/Notification (cont'd)** |  | 2007-03-02 → 2007-02-23 (-7d) | 17d → 12d |  |  |  |
| 374 | Develop appropriate UML Artifacts |  | 2007-02-14 → 2007-02-09 (-5d) | 5d → 2d | 145d → 150d |  |  |
| 375 | Create Design Document | 2007-02-15 → 2007-02-12 (-3d) | 2007-02-21 → 2007-02-14 (-7d) | 5d → 3d | 145d → 150d |  |  |
| 376 | Adopters/Collaborators Review | 2007-02-22 → 2007-02-15 (-7d) | 2007-02-28 → 2007-02-21 (-7d) |  | 145d → 150d |  |  |
| 377 | Developers Update | 2007-03-01 → 2007-02-22 (-7d) | 2007-03-02 → 2007-02-23 (-7d) |  | 145d → 150d |  |  |
| 378 | Deliver Design document to BAH (Task 3.4) | 2007-03-08 → 2007-03-01 (-7d) | 2007-03-08 → 2007-03-01 (-7d) |  | 151d → 156d |  |  |
| 379 | Deliver UML to BAH (Task 3.3) | 2007-03-08 → 2007-03-01 (-7d) | 2007-03-08 → 2007-03-01 (-7d) |  | 141d → 146d |  |  |
| 380 | Formal Review by BAH | 2007-03-09 → 2007-03-02 (-7d) | 2007-03-22 → 2007-03-15 (-7d) |  | 141d → 146d |  |  |
| 383 | **Technical/Architecture Guide** |  | 2007-03-20 → 2007-03-21 (+1d) | 20d → 21d | 143d → 137d |  |  |
| 384 | Update Tech/Arch Guide |  | 2007-02-27 → 2007-02-28 (+1d) | 5d → 6d | 143d → 142d |  |  |
| 385 | Deliver to BAH (Task 2.8) | 2007-02-27 → 2007-02-28 (+1d) | 2007-02-27 → 2007-02-28 (+1d) |  | 143d → 142d |  |  |
| 386 | Formal Review | 2007-02-28 → 2007-03-01 (+1d) | 2007-03-20 → 2007-03-21 (+1d) |  | 143d → 142d |  |  |
| 387 | **Implementation** |  | 2007-03-07 → 2007-02-28 (-7d) | 16d → 11d | 0d → 144d |  |  |
| 391 | **Web interface** |  | 2007-02-20 → 2007-02-27 (+7d) | 5d → 10d | 11d → 145d |  |  |
| 392 | UI Refactoring |  | 2007-02-20 → 2007-02-27 (+7d) | 5d → 10d | 11d → 1d |  | was named Third web interface iteration; resources Richard → Richard; Rhett |
| 393 | **Security** |  | 2007-02-20 → 2007-02-27 (+7d) | 5d → 10d | 11d → 145d |  | was named Enterprise Service Bus |
| 394 | Acegi - CSM |  | 2007-02-20 → 2007-02-27 (+7d) | 5d → 10d | 11d → 1d |  | was named Third ESB Iteration |
| 395 | **Implement Use Cases** |  | 2007-03-07 → 2007-02-28 (-7d) | 16d → 11d | 0d → 144d |  |  |
| 396 | **Protocol Abstraction (Diseases/Agents)** |  | 2007-03-07 → 2007-02-28 (-7d) | 16d → 11d | 0d → 144d |  | was named Protocol Abstraction (cont'd) |
| 398 | Develop DAO |  | 2007-03-01 → 2007-02-26 (-3d) | 10d → 7d | 0d → 144d |  |  |
| 399 | Develop Service |  | 2007-03-05 → 2007-02-28 (-5d) | 10d → 7d | 0d → 144d |  |  |
| 400 | Develop controller and command objects |  | 2007-03-07 → 2007-02-28 (-7d) | 10d → 5d | 0d → 144d |  |  |
| 401 | Develop JUnit test cases |  | 2007-03-06 → 2007-02-28 (-6d) | 7d → 3d | 1d → 144d |  |  |
| 402 | **Protocol Abstraction (Organizational Information)** |  | 2007-03-07 → 2007-02-28 (-7d) | 16d → 11d | 0d → 144d |  | was named AE Data Collection (cont'd) |
| 403 | Implement O/R mapping |  |  |  | 0d → 144d |  | resources Rhett → Kulasekaran |
| 404 | Develop DAO |  | 2007-03-01 → 2007-02-26 (-3d) | 10d → 7d | 0d → 144d |  | resources Rhett → Kulasekaran |
| 405 | Develop Service |  | 2007-03-05 → 2007-02-28 (-5d) | 10d → 7d | 0d → 144d |  | resources Rhett → Kulasekaran |
| 406 | Develop controller and command objects |  | 2007-03-07 → 2007-02-28 (-7d) | 10d → 5d | 0d → 144d |  | resources Rhett → Kulasekaran |
| 407 | Develop JUnit test cases |  | 2007-03-06 → 2007-02-28 (-6d) | 7d → 3d | 1d → 144d |  | resources Rhett → Kulasekaran |
| 410 | **Testing** |  | 2007-04-04 → 2007-03-21 (-14d) | 36d? → 26d? | 16d → 8d |  |  |
| 415 | **Create Functional Tests** |  | 2007-03-06 → 2007-02-27 (-7d) | 15d → 10d | 153d → 148d |  |  |
| 416 | Create Functional Tests for Use Cases |  | 2007-02-27 → 2007-02-20 (-7d) | 10d → 5d | 153d → 148d |  |  |
| 417 | Review by Adopters | 2007-02-28 → 2007-02-21 (-7d) | 2007-03-06 → 2007-02-27 (-7d) |  | 153d → 148d |  |  |
| 418 | **RTM** | 2007-02-28 → 2007-02-21 (-7d) | 2007-03-06 → 2007-02-27 (-7d) |  | 153d → 148d |  |  |
| 419 | Create RTM | 2007-02-28 → 2007-02-21 (-7d) | 2007-03-06 → 2007-02-27 (-7d) |  | 153d → 148d |  |  |
| 424 | **Testing** | 2007-03-08 → 2007-02-26 (-10d) | 2007-04-04 → 2007-03-21 (-14d) | 20d → 18d |  |  |  |
| 425 | Testing | 2007-03-08 → 2007-02-26 (-10d) | 2007-03-14 → 2007-02-28 (-14d) | 5d → 3d |  | 387 → none | constraint none → must start on 2007-02-26 |
| 426 | Submit Test Results Report (Task 3.7) | 2007-03-14 → 2007-02-28 (-14d) | 2007-03-14 → 2007-02-28 (-14d) |  |  |  |  |
| 427 | Formal Review of Test results Report | 2007-03-15 → 2007-03-01 (-14d) | 2007-04-04 → 2007-03-21 (-14d) |  |  |  |  |
| 428 | **Deployment** | 2007-03-08 → 2007-02-28 (-8d) | 2007-03-28 → 2007-03-14 (-14d) | 15d → 10d | 5d → 0d |  |  |
| 429 | Submit prototype code (Task 3.5) | 2007-03-14 → 2007-02-28 (-14d) | 2007-03-14 → 2007-02-28 (-14d) |  |  |  |  |
| 430 | Formal Review of Code by BAH | 2007-03-15 → 2007-03-01 (-14d) | 2007-03-28 → 2007-03-14 (-14d) |  |  |  |  |

| ID | Task | Start | Finish | Duration | Total float | Other |
| --- | --- | --- | --- | --- | --- | --- |
| 431 | Update Installation Guide | 2007-03-08 → 2007-03-01 (-7d) | 2007-03-09 → 2007-03-02 (-7d) |  |  |  |
| 432 | Deploy Prototype for Iteration 1 at Mayo and WF | 2007-03-15 → 2007-03-05 (-10d) | 2007-03-15 → 2007-03-05 (-10d) |  | 146d → 144d |  |
| 433 | Make URL Public | 2007-03-15 → 2007-03-01 (-14d) | 2007-03-15 → 2007-03-01 (-14d) |  |  |  |
| 434 | Finish Iteration 1 | 2007-03-14 → 2007-02-28 (-14d) | 2007-03-14 → 2007-02-28 (-14d) |  |  |  |
| 435 | **Construction Phase Iteration 2** | 2007-03-14 → 2007-03-01 (-13d) | 2007-05-03 → 2007-04-19 (-14d) |  |  |  |
| 436 | Begin Iteration 2 | 2007-03-14 → 2007-03-01 (-13d) | 2007-03-14 → 2007-03-01 (-13d) |  |  | constraint none → start no earlier than 2007-03-01 |
| 437 | **Iteration Planning** | 2007-03-15 → 2007-03-01 (-14d) | 2007-03-16 → 2007-03-02 (-14d) |  |  |  |
| 438 | Review and finalize Ucases and Work List for Iteration | 2007-03-15 → 2007-03-01 (-14d) | 2007-03-15 → 2007-03-01 (-14d) |  |  |  |
| 439 | Review and finalize assignments for Iteration | 2007-03-16 → 2007-03-02 (-14d) | 2007-03-16 → 2007-03-02 (-14d) |  |  |  |
| 440 | **Project Management** | 2007-03-15 → 2007-03-05 (-10d) |  | 22d → 30d | 0d → 8d |  |
| 441 | Update Project Plan | 2007-03-19 → 2007-03-05 (-14d) | 2007-03-21 → 2007-03-07 (-14d) |  | 120d → 142d |  |
| 463 | **Environment** | 2007-03-15 → 2007-03-01 (-14d) | 2007-03-19 → 2007-03-05 (-14d) |  |  |  |
| 464 | Update Environment | 2007-03-15 → 2007-03-01 (-14d) | 2007-03-19 → 2007-03-05 (-14d) |  |  |  |
| 465 | **SCM** | 2007-03-15 → 2007-03-01 (-14d) | 2007-03-21 → 2007-03-07 (-14d) |  |  |  |
| 466 | Manage Repository | 2007-03-15 → 2007-03-01 (-14d) | 2007-03-21 → 2007-03-07 (-14d) |  |  |  |
| 467 | **Requirements** | 2007-03-15 → 2007-03-01 (-14d) | 2007-04-25 → 2007-04-11 (-14d) |  |  |  |
| 468 | **Updated Use Case Specification and Realization** | 2007-03-15 → 2007-03-01 (-14d) | 2007-04-25 → 2007-04-11 (-14d) |  |  |  |
| 469 | Developer draft | 2007-03-15 → 2007-03-01 (-14d) | 2007-03-21 → 2007-03-07 (-14d) |  |  |  |
| 470 | Adopters/Collobators Review | 2007-03-22 → 2007-03-08 (-14d) | 2007-03-28 → 2007-03-14 (-14d) |  |  |  |
| 471 | Update Use Case Document | 2007-03-29 → 2007-03-15 (-14d) | 2007-04-04 → 2007-03-21 (-14d) |  |  |  |
| 472 | Submit Updated Use Case Document to BAH (Task 3.1) | 2007-04-04 → 2007-03-21 (-14d) | 2007-04-04 → 2007-03-21 (-14d) |  |  |  |
| 473 | Formal Review of Updated Use Case Document | 2007-04-05 → 2007-03-22 (-14d) | 2007-04-25 → 2007-04-11 (-14d) |  |  |  |
| 474 | **Updated SRS Document** | 2007-03-15 → 2007-03-01 (-14d) | 2007-04-25 → 2007-04-11 (-14d) |  |  |  |
| 475 | Developer draft | 2007-03-15 → 2007-03-01 (-14d) | 2007-03-21 → 2007-03-07 (-14d) |  |  |  |
| 476 | Adopters/Collobators Review | 2007-03-22 → 2007-03-08 (-14d) | 2007-03-28 → 2007-03-14 (-14d) |  |  |  |
| 477 | Update SRS | 2007-03-29 → 2007-03-15 (-14d) | 2007-04-04 → 2007-03-21 (-14d) |  |  |  |
| 478 | Submit Updated SRS Document to BAH (Task 3.2) | 2007-04-04 → 2007-03-21 (-14d) | 2007-04-04 → 2007-03-21 (-14d) |  |  |  |
| 479 | Formal Review of Updated SRS | 2007-04-05 → 2007-03-22 (-14d) | 2007-04-25 → 2007-04-11 (-14d) |  |  |  |
| 480 | **Updated UML Static Class Diagram Model** | 2007-03-15 → 2007-03-01 (-14d) | 2007-04-25 → 2007-04-11 (-14d) |  |  |  |
| 481 | Developer draft | 2007-03-15 → 2007-03-01 (-14d) | 2007-03-21 → 2007-03-07 (-14d) |  |  |  |
| 482 | Adopters/Collobators Review | 2007-03-22 → 2007-03-08 (-14d) | 2007-03-28 → 2007-03-14 (-14d) |  |  |  |
| 483 | Update UML | 2007-03-29 → 2007-03-15 (-14d) | 2007-04-04 → 2007-03-21 (-14d) |  |  |  |
| 484 | Submit UML to BAH (Task 3.3) | 2007-04-04 → 2007-03-21 (-14d) | 2007-04-04 → 2007-03-21 (-14d) |  |  |  |
| 485 | Formal Review of UML | 2007-04-05 → 2007-03-22 (-14d) | 2007-04-25 → 2007-04-11 (-14d) |  |  |  |
| 486 | **Analysis and Design** | 2007-03-15 → 2007-03-01 (-14d) | 2007-04-20 → 2007-04-06 (-14d) |  |  |  |
| 487 | **Design Documents** | 2007-03-15 → 2007-03-01 (-14d) | 2007-04-20 → 2007-04-06 (-14d) |  |  |  |
| 488 | **New Version of Existing Study** | 2007-03-15 → 2007-03-01 (-14d) | 2007-04-06 → 2007-03-23 (-14d) |  |  |  |
| 489 | Develop appropriate UML Artifacts | 2007-03-15 → 2007-03-01 (-14d) | 2007-03-21 → 2007-03-07 (-14d) |  |  |  |
| 490 | Create Design Document | 2007-03-22 → 2007-03-08 (-14d) | 2007-03-28 → 2007-03-14 (-14d) |  |  |  |
| 491 | Adopters/Collaborators Review | 2007-03-29 → 2007-03-15 (-14d) | 2007-04-04 → 2007-03-21 (-14d) |  |  |  |
| 492 | Developers Update | 2007-04-05 → 2007-03-22 (-14d) | 2007-04-06 → 2007-03-23 (-14d) |  |  |  |
| 493 | **AE Data Collection** | 2007-03-15 → 2007-03-01 (-14d) | 2007-04-06 → 2007-03-23 (-14d) |  |  |  |
| 494 | Develop appropriate UML Artifacts | 2007-03-15 → 2007-03-01 (-14d) | 2007-03-21 → 2007-03-07 (-14d) |  |  |  |
| 495 | Create Design Document | 2007-03-22 → 2007-03-08 (-14d) | 2007-03-28 → 2007-03-14 (-14d) |  |  |  |
| 496 | Adopters/Collaborators Review | 2007-03-29 → 2007-03-15 (-14d) | 2007-04-04 → 2007-03-21 (-14d) |  |  |  |
| 497 | Developers Update | 2007-04-05 → 2007-03-22 (-14d) | 2007-04-06 → 2007-03-23 (-14d) |  |  |  |
| 498 | **Candidate AE** | 2007-03-15 → 2007-03-01 (-14d) | 2007-03-15 → 2007-03-01 (-14d) |  |  |  |
| 499 | Develop appropriate UML Artifacts | 2007-03-15 → 2007-03-01 (-14d) | 2007-03-15 → 2007-03-01 (-14d) |  |  |  |
| 500 | Create Design Document | 2007-03-15 → 2007-03-01 (-14d) | 2007-03-15 → 2007-03-01 (-14d) |  |  |  |
| 501 | Adopters/Collaborators Review | 2007-03-15 → 2007-03-01 (-14d) | 2007-03-15 → 2007-03-01 (-14d) |  |  |  |
| 502 | Developers Update | 2007-03-15 → 2007-03-01 (-14d) | 2007-03-15 → 2007-03-01 (-14d) |  |  |  |
| 503 | **Institution AE Notification Trigger** | 2007-03-15 → 2007-03-01 (-14d) | 2007-04-06 → 2007-03-23 (-14d) |  |  |  |
| 504 | Develop appropriate UML Artifacts | 2007-03-15 → 2007-03-01 (-14d) | 2007-03-21 → 2007-03-07 (-14d) |  |  |  |
| 505 | Create Design Document | 2007-03-22 → 2007-03-08 (-14d) | 2007-03-28 → 2007-03-14 (-14d) |  |  |  |
| 506 | Adopters/Collaborators Review | 2007-03-29 → 2007-03-15 (-14d) | 2007-04-04 → 2007-03-21 (-14d) |  |  |  |
| 507 | Developers Update | 2007-04-05 → 2007-03-22 (-14d) | 2007-04-06 → 2007-03-23 (-14d) |  |  |  |
| 508 | Deliver Design document to BAH (Task 3.4) | 2007-04-06 → 2007-03-23 (-14d) | 2007-04-06 → 2007-03-23 (-14d) |  |  |  |
| 509 | Deliver UML to BAH (Task 3.3) | 2007-04-06 → 2007-03-23 (-14d) | 2007-04-06 → 2007-03-23 (-14d) |  |  |  |
| 510 | Formal Review by BAH | 2007-04-09 → 2007-03-26 (-14d) | 2007-04-20 → 2007-04-06 (-14d) |  |  |  |
| 511 | **Domain Model** | 2007-03-15 → 2007-03-01 (-14d) | 2007-03-21 → 2007-03-07 (-14d) |  |  |  |
| 512 | Update Model/BRIDG Harmonization | 2007-03-15 → 2007-03-01 (-14d) | 2007-03-21 → 2007-03-07 (-14d) |  |  |  |
| 513 | **Technical/Architecture Guide** | 2007-03-15 → 2007-03-01 (-14d) | 2007-04-11 → 2007-03-28 (-14d) |  |  |  |
| 514 | Update Tech/Arch Guide | 2007-03-15 → 2007-03-01 (-14d) | 2007-03-21 → 2007-03-07 (-14d) |  |  |  |
| 515 | Deliver to BAH (Task 2.8) | 2007-03-21 → 2007-03-07 (-14d) | 2007-03-21 → 2007-03-07 (-14d) |  |  |  |
| 516 | Formal Review | 2007-03-22 → 2007-03-08 (-14d) | 2007-04-11 → 2007-03-28 (-14d) |  |  |  |
| 517 | **Implementation** | 2007-03-15 → 2007-03-01 (-14d) | 2007-04-05 → 2007-03-22 (-14d) |  |  |  |
| 518 | **Web interface** | 2007-03-15 → 2007-03-01 (-14d) | 2007-03-21 → 2007-03-07 (-14d) |  |  |  |
| 519 | Fourth web interface iteration | 2007-03-15 → 2007-03-01 (-14d) | 2007-03-21 → 2007-03-07 (-14d) |  |  |  |
| 520 | **Enterprise Service Bus** | 2007-03-15 → 2007-03-01 (-14d) | 2007-03-21 → 2007-03-07 (-14d) |  |  |  |
| 521 | Fourth ESB Iteration | 2007-03-15 → 2007-03-01 (-14d) | 2007-03-21 → 2007-03-07 (-14d) |  |  |  |

| ID | Task | Start | Finish |
| --- | --- | --- | --- |
| 522 | **Grid service** | 2007-03-15 → 2007-03-01 (-14d) | 2007-03-21 → 2007-03-07 (-14d) |
| 523 | Implement Grid Service | 2007-03-15 → 2007-03-01 (-14d) | 2007-03-21 → 2007-03-07 (-14d) |
| 524 | **Implement Use Cases** | 2007-03-15 → 2007-03-01 (-14d) | 2007-04-05 → 2007-03-22 (-14d) |
| 525 | **New Version of Study** | 2007-03-15 → 2007-03-01 (-14d) | 2007-04-05 → 2007-03-22 (-14d) |
| 526 | Implement O/R mapping | 2007-03-15 → 2007-03-01 (-14d) | 2007-03-21 → 2007-03-07 (-14d) |
| 527 | Develop DAO | 2007-03-19 → 2007-03-05 (-14d) | 2007-03-30 → 2007-03-16 (-14d) |
| 528 | Develop Service | 2007-03-21 → 2007-03-07 (-14d) | 2007-04-03 → 2007-03-20 (-14d) |
| 529 | Develop controller and command objects | 2007-03-23 → 2007-03-09 (-14d) | 2007-04-05 → 2007-03-22 (-14d) |
| 530 | Develop JUnit test cases | 2007-03-27 → 2007-03-13 (-14d) | 2007-04-04 → 2007-03-21 (-14d) |
| 531 | **AE Data Collection (cont'd)** | 2007-03-15 → 2007-03-01 (-14d) | 2007-04-05 → 2007-03-22 (-14d) |
| 532 | Implement O/R mapping | 2007-03-15 → 2007-03-01 (-14d) | 2007-03-21 → 2007-03-07 (-14d) |
| 533 | Develop DAO | 2007-03-19 → 2007-03-05 (-14d) | 2007-03-30 → 2007-03-16 (-14d) |
| 534 | Develop Service | 2007-03-21 → 2007-03-07 (-14d) | 2007-04-03 → 2007-03-20 (-14d) |
| 535 | Develop controller and command objects | 2007-03-23 → 2007-03-09 (-14d) | 2007-04-05 → 2007-03-22 (-14d) |
| 536 | Develop JUnit test cases | 2007-03-27 → 2007-03-13 (-14d) | 2007-04-04 → 2007-03-21 (-14d) |
| 537 | **Candidate AE** | 2007-03-15 → 2007-03-01 (-14d) | 2007-04-05 → 2007-03-22 (-14d) |
| 538 | Implement O/R mapping | 2007-03-15 → 2007-03-01 (-14d) | 2007-03-21 → 2007-03-07 (-14d) |
| 539 | Develop DAO | 2007-03-19 → 2007-03-05 (-14d) | 2007-03-30 → 2007-03-16 (-14d) |
| 540 | Develop Service | 2007-03-21 → 2007-03-07 (-14d) | 2007-04-03 → 2007-03-20 (-14d) |
| 541 | Develop controller and command objects | 2007-03-23 → 2007-03-09 (-14d) | 2007-04-05 → 2007-03-22 (-14d) |
| 542 | Develop JUnit test cases | 2007-03-27 → 2007-03-13 (-14d) | 2007-04-04 → 2007-03-21 (-14d) |
| 543 | **Triggers/Notification (cont'd)** | 2007-03-15 → 2007-03-01 (-14d) | 2007-04-05 → 2007-03-22 (-14d) |
| 544 | Implement O/R mapping | 2007-03-15 → 2007-03-01 (-14d) | 2007-03-21 → 2007-03-07 (-14d) |
| 545 | Develop DAO | 2007-03-19 → 2007-03-05 (-14d) | 2007-03-30 → 2007-03-16 (-14d) |
| 546 | Develop Service | 2007-03-21 → 2007-03-07 (-14d) | 2007-04-03 → 2007-03-20 (-14d) |
| 547 | Develop controller and command objects | 2007-03-23 → 2007-03-09 (-14d) | 2007-04-05 → 2007-03-22 (-14d) |
| 548 | Develop JUnit test cases | 2007-03-27 → 2007-03-13 (-14d) | 2007-04-04 → 2007-03-21 (-14d) |
| 549 | **Testing** | 2007-03-15 → 2007-03-01 (-14d) | 2007-05-03 → 2007-04-19 (-14d) |
| 550 | **Test Plan** | 2007-03-15 → 2007-03-01 (-14d) | 2007-03-29 → 2007-03-15 (-14d) |
| 551 | Update Test Plan Document (Task 3.6) | 2007-03-15 → 2007-03-01 (-14d) | 2007-03-28 → 2007-03-14 (-14d) |
| 552 | Submit to BAH | 2007-03-28 → 2007-03-14 (-14d) | 2007-03-28 → 2007-03-14 (-14d) |
| 553 | Formal Review by BAH | 2007-03-29 → 2007-03-15 (-14d) | 2007-03-29 → 2007-03-15 (-14d) |
| 554 | **Create Functional Tests** | 2007-03-15 → 2007-03-01 (-14d) | 2007-04-04 → 2007-03-21 (-14d) |
| 555 | Create Functional Tests for Use Cases | 2007-03-15 → 2007-03-01 (-14d) | 2007-03-28 → 2007-03-14 (-14d) |
| 556 | Review by Adopters | 2007-03-29 → 2007-03-15 (-14d) | 2007-04-04 → 2007-03-21 (-14d) |
| 557 | **RTM** | 2007-03-29 → 2007-03-15 (-14d) | 2007-04-04 → 2007-03-21 (-14d) |
| 558 | Create RTM | 2007-03-29 → 2007-03-15 (-14d) | 2007-04-04 → 2007-03-21 (-14d) |
| 559 | **Test Data** | 2007-03-15 → 2007-03-01 (-14d) | 2007-04-11 → 2007-03-28 (-14d) |
| 560 | Create test data set (Task 3.7) | 2007-03-15 → 2007-03-01 (-14d) | 2007-03-28 → 2007-03-14 (-14d) |
| 561 | Submit for Review | 2007-03-28 → 2007-03-14 (-14d) | 2007-03-28 → 2007-03-14 (-14d) |
| 562 | Review | 2007-03-29 → 2007-03-15 (-14d) | 2007-04-11 → 2007-03-28 (-14d) |
| 563 | **Testing** | 2007-04-06 → 2007-03-23 (-14d) | 2007-05-03 → 2007-04-19 (-14d) |
| 564 | Testing | 2007-04-06 → 2007-03-23 (-14d) | 2007-04-12 → 2007-03-29 (-14d) |
| 565 | Submit Test Results Report (Task 3.7) | 2007-04-12 → 2007-03-29 (-14d) | 2007-04-12 → 2007-03-29 (-14d) |
| 566 | Formal Review of Test results Report | 2007-04-13 → 2007-03-30 (-14d) | 2007-05-03 → 2007-04-19 (-14d) |
| 567 | **Deployment** | 2007-04-06 → 2007-03-23 (-14d) | 2007-04-26 → 2007-04-12 (-14d) |
| 568 | Submit prototype code (Task 3.5) | 2007-04-12 → 2007-03-29 (-14d) | 2007-04-12 → 2007-03-29 (-14d) |
| 569 | Formal Review of Code by BAH | 2007-04-13 → 2007-03-30 (-14d) | 2007-04-26 → 2007-04-12 (-14d) |
| 570 | Update Installation Guide | 2007-04-06 → 2007-03-23 (-14d) | 2007-04-09 → 2007-03-26 (-14d) |
| 571 | Deploy Prototype for Iteration 1 at Mayo and WF | 2007-04-13 → 2007-03-30 (-14d) | 2007-04-13 → 2007-03-30 (-14d) |
| 572 | Make URL Public | 2007-04-13 → 2007-03-30 (-14d) | 2007-04-13 → 2007-03-30 (-14d) |
| 573 | Finish Iteration 2 | 2007-04-13 → 2007-03-30 (-14d) | 2007-04-13 → 2007-03-30 (-14d) |
| 574 | **Construction Phase Iteration 3** | 2007-04-13 → 2007-03-30 (-14d) | 2007-05-16 → 2007-05-02 (-14d) |
| 575 | Begin Iteration 3 | 2007-04-13 → 2007-03-30 (-14d) | 2007-04-13 → 2007-03-30 (-14d) |
| 576 | Environment Updates | 2007-04-16 → 2007-04-02 (-14d) | 2007-04-27 → 2007-04-13 (-14d) |
| 577 | Updates to Requirements, Use Case, UML, and Design Document | 2007-04-16 → 2007-04-02 (-14d) | 2007-05-11 → 2007-04-27 (-14d) |
| 578 | Test Plan and RTM Updates | 2007-04-16 → 2007-04-02 (-14d) | 2007-05-04 → 2007-04-20 (-14d) |
| 579 | Develop Code | 2007-04-16 → 2007-04-02 (-14d) | 2007-05-11 → 2007-04-27 (-14d) |
| 580 | Testing | 2007-04-16 → 2007-04-02 (-14d) | 2007-05-11 → 2007-04-27 (-14d) |
| 581 | Installation Guide Drafts | 2007-05-07 → 2007-04-23 (-14d) | 2007-05-11 → 2007-04-27 (-14d) |
| 582 | Finish Iteration 3 | 2007-05-11 → 2007-04-27 (-14d) | 2007-05-11 → 2007-04-27 (-14d) |
| 583 | Iteration 3 Review and Feedback | 2007-05-10 → 2007-04-26 (-14d) | 2007-05-16 → 2007-05-02 (-14d) |
| 584 | **Construction Phase Iteration 4** | 2007-05-16 → 2007-05-02 (-14d) | 2007-06-18 → 2007-06-04 (-14d) |
| 585 | Begin Iteration 4 | 2007-05-16 → 2007-05-02 (-14d) | 2007-05-16 → 2007-05-02 (-14d) |
| 586 | Environment Updates | 2007-05-17 → 2007-05-03 (-14d) | 2007-05-30 → 2007-05-16 (-14d) |
| 587 | Updates to Requirements, Use Case, UML, and Design Document | 2007-05-17 → 2007-05-03 (-14d) | 2007-06-13 → 2007-05-30 (-14d) |
| 588 | Test Plan and RTM Updates | 2007-05-17 → 2007-05-03 (-14d) | 2007-06-06 → 2007-05-23 (-14d) |
| 589 | Develop Code | 2007-05-17 → 2007-05-03 (-14d) | 2007-06-13 → 2007-05-30 (-14d) |
| 590 | Testing | 2007-05-17 → 2007-05-03 (-14d) | 2007-06-13 → 2007-05-30 (-14d) |
| 591 | Installation Guide Draft | 2007-06-07 → 2007-05-24 (-14d) | 2007-06-13 → 2007-05-30 (-14d) |

| ID | Task | Start | Finish |
| --- | --- | --- | --- |
| 592 | Administrators Guide Draft | 2007-06-07 → 2007-05-24 (-14d) | 2007-06-13 → 2007-05-30 (-14d) |
| 593 | End User Guide Draft | 2007-06-07 → 2007-05-24 (-14d) | 2007-06-13 → 2007-05-30 (-14d) |
| 594 | Finish Iteration 4 | 2007-06-13 → 2007-05-30 (-14d) | 2007-06-13 → 2007-05-30 (-14d) |
| 595 | Iteration 4 Review and Feedback | 2007-06-12 → 2007-05-29 (-14d) | 2007-06-18 → 2007-06-04 (-14d) |
| 596 | **Construction Phase Iteration 5** | 2007-06-18 → 2007-06-04 (-14d) | 2007-07-19 → 2007-07-05 (-14d) |
| 597 | Begin Iteration 5 | 2007-06-18 → 2007-06-04 (-14d) | 2007-06-18 → 2007-06-04 (-14d) |
| 598 | Environment Updates | 2007-06-19 → 2007-06-05 (-14d) | 2007-07-02 → 2007-06-18 (-14d) |
| 599 | Updates to Requirements, Use Case, UML, and Design Document | 2007-06-19 → 2007-06-05 (-14d) | 2007-07-16 → 2007-07-02 (-14d) |
| 600 | Test Plan and RTM Updates | 2007-06-19 → 2007-06-05 (-14d) | 2007-07-09 → 2007-06-25 (-14d) |
| 601 | Develop Code | 2007-06-19 → 2007-06-05 (-14d) | 2007-07-16 → 2007-07-02 (-14d) |
| 602 | Testing | 2007-06-19 → 2007-06-05 (-14d) | 2007-07-16 → 2007-07-02 (-14d) |
| 603 | Testing Results | 2007-07-10 → 2007-06-26 (-14d) | 2007-07-16 → 2007-07-02 (-14d) |
| 604 | Installation Guide Draft | 2007-07-10 → 2007-06-26 (-14d) | 2007-07-16 → 2007-07-02 (-14d) |
| 605 | Administrators Guide Draft | 2007-07-10 → 2007-06-26 (-14d) | 2007-07-16 → 2007-07-02 (-14d) |
| 606 | End User Guide Draft | 2007-06-19 → 2007-06-05 (-14d) | 2007-06-25 → 2007-06-11 (-14d) |
| 607 | Finish Iteration 5 | 2007-07-16 → 2007-07-02 (-14d) | 2007-07-16 → 2007-07-02 (-14d) |
| 608 | Iteration 5 Review and Feedback | 2007-07-13 → 2007-06-29 (-14d) | 2007-07-19 → 2007-07-05 (-14d) |
| 609 | **Construction Phase Iteration 6** | 2007-07-19 → 2007-07-05 (-14d) | 2007-08-21 → 2007-08-07 (-14d) |
| 610 | Begin Iteration 6 | 2007-07-19 → 2007-07-05 (-14d) | 2007-07-19 → 2007-07-05 (-14d) |
| 611 | Environment Updates | 2007-07-20 → 2007-07-06 (-14d) | 2007-08-02 → 2007-07-19 (-14d) |
| 612 | Updates to Requirements, Use Case, UML, and Design Document | 2007-07-20 → 2007-07-06 (-14d) | 2007-08-16 → 2007-08-02 (-14d) |
| 613 | Test Plan and RTM Updates | 2007-07-20 → 2007-07-06 (-14d) | 2007-08-09 → 2007-07-26 (-14d) |
| 614 | Develop Code | 2007-07-20 → 2007-07-06 (-14d) | 2007-08-16 → 2007-08-02 (-14d) |
| 615 | Installation Guide Draft | 2007-08-10 → 2007-07-27 (-14d) | 2007-08-16 → 2007-08-02 (-14d) |
| 616 | Administrators Guide Draft | 2007-08-10 → 2007-07-27 (-14d) | 2007-08-16 → 2007-08-02 (-14d) |
| 617 | End User Guide Draft | 2007-08-10 → 2007-07-27 (-14d) | 2007-08-16 → 2007-08-02 (-14d) |
| 618 | Testing | 2007-07-20 → 2007-07-06 (-14d) | 2007-08-16 → 2007-08-02 (-14d) |
| 619 | Testing Results | 2007-08-10 → 2007-07-27 (-14d) | 2007-08-16 → 2007-08-02 (-14d) |
| 620 | Finish Iteration 6 | 2007-08-16 → 2007-08-02 (-14d) | 2007-08-16 → 2007-08-02 (-14d) |
| 621 | Iteration 6 Review and Feedback | 2007-08-15 → 2007-08-01 (-14d) | 2007-08-21 → 2007-08-07 (-14d) |
| 622 | **Construction Phase Iteration 7** | 2007-08-21 → 2007-08-07 (-14d) | 2007-09-21 → 2007-09-07 (-14d) |
| 623 | Begin Iteration 7 | 2007-08-21 → 2007-08-07 (-14d) | 2007-08-21 → 2007-08-07 (-14d) |
| 624 | Environment Updates | 2007-08-22 → 2007-08-08 (-14d) | 2007-09-04 → 2007-08-21 (-14d) |
| 625 | Finalize Requirements, Use Case, UML, and Design Document | 2007-08-22 → 2007-08-08 (-14d) | 2007-09-04 → 2007-08-21 (-14d) |
| 626 | Test Plan and RTM Updates (Task 3.6) | 2007-08-22 → 2007-08-08 (-14d) | 2007-09-11 → 2007-08-28 (-14d) |
| 627 | Finalize Code Base (Task 3.5) | 2007-08-22 → 2007-08-08 (-14d) | 2007-09-18 → 2007-09-04 (-14d) |
| 628 | Testing | 2007-08-22 → 2007-08-08 (-14d) | 2007-09-18 → 2007-09-04 (-14d) |
| 629 | Final Test Results Report (3.8) | 2007-09-12 → 2007-08-29 (-14d) | 2007-09-18 → 2007-09-04 (-14d) |
| 630 | Final Transition Phase Plan (3.16) | 2007-09-12 → 2007-08-29 (-14d) | 2007-09-18 → 2007-09-04 (-14d) |
| 631 | Compatibility Review Submission Package (Task 3.12) | 2007-09-05 → 2007-08-22 (-14d) | 2007-09-18 → 2007-09-04 (-14d) |
| 632 | Generation of CDEs (Task 3.11.2) | 2007-09-05 → 2007-08-22 (-14d) | 2007-09-18 → 2007-09-04 (-14d) |
| 633 | Final Administrators Guide (Task 3.13) | 2007-09-12 → 2007-08-29 (-14d) | 2007-09-18 → 2007-09-04 (-14d) |
| 634 | Final End Users Guide (Task 3.15.2) | 2007-09-12 → 2007-08-29 (-14d) | 2007-09-18 → 2007-09-04 (-14d) |
| 635 | Final Installation Guide (Task 3.10) | 2007-09-12 → 2007-08-29 (-14d) | 2007-09-18 → 2007-09-04 (-14d) |
| 636 | Release Notes (Task 3.14) | 2007-09-12 → 2007-08-29 (-14d) | 2007-09-18 → 2007-09-04 (-14d) |
| 637 | Finish Iteration 7 | 2007-09-18 → 2007-09-04 (-14d) | 2007-09-18 → 2007-09-04 (-14d) |
| 638 | Iteration 7 Review and Feedback | 2007-09-17 → 2007-09-03 (-14d) | 2007-09-21 → 2007-09-07 (-14d) |
| 639 | Finish Construction Phase | 2007-09-21 → 2007-09-07 (-14d) | 2007-09-21 → 2007-09-07 (-14d) |
| 640 | **Transition Phase** | 2007-09-24 → 2007-09-10 (-14d) | 2007-10-05 → 2007-09-21 (-14d) |
| 641 | Deployment Plan (Task 4.1) | 2007-09-24 → 2007-09-10 (-14d) | 2007-09-25 → 2007-09-11 (-14d) |
| 642 | Deployment | 2007-09-26 → 2007-09-12 (-14d) | 2007-10-02 → 2007-09-18 (-14d) |
| 643 | Deployment Report (Task 4.2) | 2007-09-24 → 2007-09-10 (-14d) | 2007-09-24 → 2007-09-10 (-14d) |
| 644 | Code Release Updates (if needed) (Task 4.3) | 2007-09-24 → 2007-09-10 (-14d) | 2007-10-05 → 2007-09-21 (-14d) |
| 645 | Guide Updates (if needed) | 2007-09-24 → 2007-09-10 (-14d) | 2007-10-05 → 2007-09-21 (-14d) |
| 646 | **Project Closing Activities** | 2007-09-24 → 2007-09-10 (-14d) | 2007-10-05 → 2007-09-21 (-14d) |
| 647 | Lessons Learned (Task 1.6) | 2007-09-24 → 2007-09-10 (-14d) | 2007-10-05 → 2007-09-21 (-14d) |
| 648 | Archiving | 2007-09-24 → 2007-09-10 (-14d) | 2007-10-05 → 2007-09-21 (-14d) |
| 649 | Contract Closeout | 2007-09-24 → 2007-09-10 (-14d) | 2007-10-05 → 2007-09-21 (-14d) |

## Version 3 (saved 2007-02-16)

Note of the change: SVN-Revision: 548

Last finish 2007-09-21 → 2007-10-19 (+28d).

Changed:

| ID | Task | Finish | Duration | Total float |
| --- | --- | --- | --- | --- |
| 1 | **caAERS Application Development Project** | 2007-09-21 → 2007-10-19 (+28d) | 209d? → 229d? |  |
| 640 | **Transition Phase** | 2007-09-21 → 2007-10-19 (+28d) | 10d → 30d |  |
| 642 | Deployment | 2007-09-18 → 2007-09-25 (+7d) | 5d → 10d | 3d → 18d |
| 644 | Code Release Updates (if needed) (Task 4.3) | 2007-09-21 → 2007-10-19 (+28d) | 10d → 30d |  |

## Version 4 (saved 2007-03-02)

Note of the change: SVN-Revision: 692

Last finish 2007-10-19 → 2007-10-31 (+12d). Complete tasks 169 → 273.

Added:

| ID | Task | Duration | Start | Finish | Predecessors | Constraint | Resources |
| --- | --- | --- | --- | --- | --- | --- | --- |
| 481 | **Data Exchange with Local CTMS (Import)** | 10d | 2007-03-05 | 2007-03-16 |  |  |  |
| 482 | Develop appropriate UML Artifacts | 1d | 2007-03-05 | 2007-03-05 | 427 |  | Krikor |
| 483 | Create Design Document | 2d | 2007-03-06 | 2007-03-07 | 482 |  | Krikor |
| 484 | Adopters/Collaborators Review | 5d | 2007-03-08 | 2007-03-14 | 483 |  | Mayo; WF |
| 485 | Developers Update | 2d | 2007-03-15 | 2007-03-16 | 484 |  | Krikor |
| 486 | **AE Data Collection (AE Attribution Related Functionality)** | 17d | 2007-03-05 | 2007-03-27 |  |  |  |
| 491 | **Protocol Abstraction (Committees, Orgs, Instit., Study Personnel)** | 14d | 2007-03-05 | 2007-03-22 |  |  |  |
| 496 | **Protocol Level AE Notification Trigger** | 17d | 2007-03-01 | 2007-03-23 |  |  |  |
| 512 | UI Refinement | 10d | 2007-03-05 | 2007-03-16 | 427 |  | Richard |
| 514 | **Protocol Abstraction (Diseases)** | 11d | 2007-03-01 | 2007-03-15 |  |  |  |
| 520 | **Data Exchange with Local CTMS (Import)** | 11d | 2007-03-16 | 2007-03-30 |  |  |  |
| 521 | Implement O/R mapping | 5d | 2007-03-16 | 2007-03-22 | 519 |  | Krikor |
| 522 | Develop DAO | 5d | 2007-03-20 | 2007-03-26 | 521SS+2d |  | Krikor |
| 523 | Develop Service | 5d | 2007-03-22 | 2007-03-28 | 522SS+2d |  | Krikor |
| 524 | Develop controller and command objects | 4d | 2007-03-26 | 2007-03-29 | 523SS+2d |  | Krikor |
| 525 | Develop JUnit test cases | 3d | 2007-03-28 | 2007-03-30 | 524SS+2d |  | Krikor |
| 532 | **Protocol Abstraction (Committees, Orgs, Instit., Study Personnel)** | 16d | 2007-03-05 | 2007-03-26 |  |  |  |
| 538 | **Protocol Level Triggers/Notification (cont'd)** | 16d | 2007-03-05 | 2007-03-26 |  |  |  |
| 544 | **Role Based Authorization** | 20d | 2007-03-05 | 2007-03-30 |  |  |  |
| 545 | Finish Acegi-CSM Tasks | 10d | 2007-03-05 | 2007-03-16 | 427 |  | Joshua; Vinay |
| 546 | Implement Study Participant Login/Authorization | 5d | 2007-03-19 | 2007-03-23 | 545 |  | Joshua; Vinay |
| 547 | Implement Study Coordinator Login/Authorization | 5d | 2007-03-26 | 2007-03-30 | 546 |  | Joshua; Vinay |
| 572 | Begin Iteration 3 | 0d | 2007-04-01 | 2007-04-01 |  | must start on 2007-04-01 |  |
| 573 | **Iteration Planning** | 2d | 2007-04-10 | 2007-04-11 |  |  |  |
| 574 | Review and finalize Ucases and Work List for Iteration | 1d | 2007-04-10 | 2007-04-10 | 572 |  | Edmond; Ram; Vinay |
| 575 | Review and finalize assignments for Iteration | 1d | 2007-04-11 | 2007-04-11 | 574 |  | Edmond; Ram; Vinay |
| 576 | **Project Management** | 23d | 2007-03-15 | 2007-04-16 |  |  |  |
| 577 | Update Project Plan | 3d | 2007-04-12 | 2007-04-16 | 575 |  | Edmond |
| 580 | **Weekly Team/Developers Meeting** | 16d | 2007-03-19 | 2007-04-09 |  |  |  |
| 581 | Weekly Team Meeting 1 | 1d | 2007-03-19 | 2007-03-19 |  | must start on 2007-03-19 | Edmond |
| 582 | Weekly Team Meeting 2 | 1d | 2007-03-26 | 2007-03-26 |  | must start on 2007-03-26 | Edmond |
| 583 | Weekly Team Meeting 3 | 1d | 2007-04-02 | 2007-04-02 |  | must start on 2007-04-02 | Edmond |
| 584 | Weekly Team Meeting 4 | 1d | 2007-04-09 | 2007-04-09 |  | must start on 2007-04-09 | Edmond |
| 585 | **Status and Risk Reporting** | 21d | 2007-03-16 | 2007-04-13 |  |  |  |
| 586 | Bi-weekly Risk Update in caMP (Task 1.4) | 1d | 2007-03-16 | 2007-03-16 |  | must start on 2007-03-16 | Edmond |
| 587 | Bi-weekly Risk Matrix Update Meeting | 1d | 2007-03-16 | 2007-03-16 |  | must start on 2007-03-16 | Edmond |
| 588 | Bi-weekly Risk Update in caMP (Task 1.4) | 1d | 2007-04-10 | 2007-04-10 |  | start no earlier than 2007-03-30 | Edmond |
| 589 | Bi-weekly Risk Matrix Update Meeting | 1d | 2007-03-30 | 2007-03-30 |  | must start on 2007-03-30 | Edmond |
| 590 | Bi-weekly Status Update Meeting with BAH/NCI | 1d | 2007-03-23 | 2007-03-23 |  | must start on 2007-03-23 | Edmond |
| 591 | Bi-weekly Status Update Meeting with BAH/NCI | 1d | 2007-04-06 | 2007-04-06 |  | must start on 2007-04-06 | Edmond |
| 592 | Monthly Status Report (Task 1.3) | 1d | 2007-04-13 | 2007-04-13 |  | must finish on 2007-04-13 | Edmond |
| 593 | Monthly Risk Matrix Update (Task 1.3) | 1d | 2007-04-13 | 2007-04-13 | 592SS |  | Edmond |
| 594 | **Collaboration Management Activities** | 16d | 2007-03-15 | 2007-04-05 |  |  |  |
| 595 | Adopters Mtg | 1d | 2007-03-15 | 2007-03-15 |  | must start on 2007-03-15 | Edmond |
| 596 | Bi-Weekly AE SIG Meeting | 1d | 2007-03-22 | 2007-03-22 |  | must start on 2007-03-22 | Edmond |
| 597 | Adopters Mtg | 1d | 2007-03-29 | 2007-03-29 |  | must start on 2007-03-29 | Edmond |
| 598 | Bi-Weekly AE SIG Meeting | 1d | 2007-04-05 | 2007-04-05 |  | must start on 2007-04-05 | Edmond |
| 599 | **Environment** | 3d | 2007-04-10 | 2007-04-12 |  |  |  |
| 600 | Update Environment | 3d | 2007-04-10 | 2007-04-12 |  |  | Vinay |
| 601 | **SCM** | 5d | 2007-04-10 | 2007-04-16 |  |  |  |
| 602 | Manage Repository | 5d | 2007-04-10 | 2007-04-16 |  |  | Rhett |
| 603 | **Requirements** | 30d | 2007-04-10 | 2007-05-21 |  |  |  |
| 604 | **Updated Use Case Specification and Realization** | 30d | 2007-04-10 | 2007-05-21 |  |  |  |
| 605 | Developer draft | 5d | 2007-04-10 | 2007-04-16 |  |  | Sean |
| 606 | Adopters/Collobators Review | 5d | 2007-04-17 | 2007-04-23 | 605 |  | Mayo; WF |
| 607 | Update Use Case Document | 5d | 2007-04-24 | 2007-04-30 | 606 |  | Sean |
| 608 | Submit Updated Use Case Document to BAH (Task 3.1) | 0d | 2007-04-30 | 2007-04-30 | 607 |  | Edmond |
| 609 | Formal Review of Updated Use Case Document | 15d | 2007-05-01 | 2007-05-21 | 608 |  | BAH |
| 610 | **Updated SRS Document** | 30d | 2007-04-10 | 2007-05-21 |  |  |  |
| 611 | Developer draft | 5d | 2007-04-10 | 2007-04-16 |  |  | Sean |
| 612 | Adopters/Collobators Review | 5d | 2007-04-17 | 2007-04-23 | 611 |  | Mayo; WF |
| 613 | Update SRS | 5d | 2007-04-24 | 2007-04-30 | 612 |  | Sean |
| 614 | Submit Updated SRS Document to BAH (Task 3.2) | 0d | 2007-04-30 | 2007-04-30 | 613 |  | Mayo; WF |
| 615 | Formal Review of Updated SRS | 15d | 2007-05-01 | 2007-05-21 | 614 |  | BAH |
| 616 | **Updated UML Static Class Diagram Model** | 30d | 2007-04-10 | 2007-05-21 |  |  |  |
| 617 | Developer draft | 5d | 2007-04-10 | 2007-04-16 |  |  | Ram; Sean |
| 618 | Adopters/Collobators Review | 5d | 2007-04-17 | 2007-04-23 | 617 |  | Mayo; WF |
| 619 | Update UML | 5d | 2007-04-24 | 2007-04-30 | 618 |  | Sean |
| 620 | Submit UML to BAH (Task 3.3) | 0d | 2007-04-30 | 2007-04-30 | 619 |  | Edmond |
| 621 | Formal Review of UML | 15d | 2007-05-01 | 2007-05-21 | 620 |  | BAH |
| 622 | **Analysis and Design** | 27d? | 2007-04-10 | 2007-05-16 |  |  |  |
| 623 | **Design Documents** | 27d? | 2007-04-10 | 2007-05-16 |  |  |  |
| 624 | **Protocol Abstraction (Organizations, Committees, Institutions)** | 17d | 2007-04-10 | 2007-05-02 |  |  |  |
| 625 | Develop appropriate UML Artifacts | 5d | 2007-04-10 | 2007-04-16 |  |  | Krikor |
| 626 | Create Design Document | 5d | 2007-04-17 | 2007-04-23 | 625 |  | Krikor |
| 627 | Adopters/Collaborators Review | 5d | 2007-04-24 | 2007-04-30 | 626 |  | Mayo; WF |
| 628 | Developers Update | 2d | 2007-05-01 | 2007-05-02 | 627 |  | Krikor |
| 630 | Develop appropriate UML Artifacts | 5d | 2007-04-10 | 2007-04-16 |  |  | Rhett |
| 631 | Create Design Document | 5d | 2007-04-17 | 2007-04-23 | 630 |  | Rhett |
| 632 | Adopters/Collaborators Review | 5d | 2007-04-24 | 2007-04-30 | 631 |  | Mayo; WF |
| 633 | Developers Update | 2d | 2007-05-01 | 2007-05-02 | 632 |  | Rhett |
| 635 | Develop appropriate UML Artifacts | 1d? | 2007-04-10 | 2007-04-10 |  |  | Kulasekeran |
| 636 | Create Design Document | 1d? | 2007-04-10 | 2007-04-10 |  |  | Kulasekeran |
| 637 | Adopters/Collaborators Review | 1d? | 2007-04-10 | 2007-04-10 |  |  |  |
| 638 | Developers Update | 1d? | 2007-04-10 | 2007-04-10 |  |  | Kulasekeran |
| 640 | Develop appropriate UML Artifacts | 5d | 2007-04-10 | 2007-04-16 |  |  | Sujith |
| 641 | Create Design Document | 5d | 2007-04-17 | 2007-04-23 | 640 |  | Sujith |
| 642 | Adopters/Collaborators Review | 5d | 2007-04-24 | 2007-04-30 | 641 |  | Mayo; WF |
| 643 | Developers Update | 2d | 2007-05-01 | 2007-05-02 | 642 |  | Sujith |
| 644 | Deliver Design document to BAH (Task 3.4) | 0d | 2007-05-02 | 2007-05-02 | 628, 633, 638, 643 |  |  |
| 645 | Deliver UML to BAH (Task 3.3) | 0d | 2007-05-02 | 2007-05-02 | 628, 633, 638, 643 |  |  |
| 646 | Formal Review by BAH | 10d | 2007-05-03 | 2007-05-16 | 645 |  |  |
| 647 | **Domain Model** | 5d | 2007-04-10 | 2007-04-16 |  |  |  |
| 648 | Update Model/BRIDG Harmonization | 5d | 2007-04-10 | 2007-04-16 |  |  | Ram |
| 649 | **Technical/Architecture Guide** | 20d | 2007-04-10 | 2007-05-07 |  |  |  |
| 650 | Update Tech/Arch Guide | 5d | 2007-04-10 | 2007-04-16 |  |  | Vinay; Joshua |
| 651 | Deliver to BAH (Task 2.8) | 0d | 2007-04-16 | 2007-04-16 | 650 |  | Edmond |
| 652 | Formal Review | 15d | 2007-04-17 | 2007-05-07 | 651 |  | BAH; Mayo; WF |
| 653 | **Implementation** | 16d | 2007-04-10 | 2007-05-01 |  |  |  |
| 654 | **Web interface** | 5d | 2007-04-10 | 2007-04-16 |  |  |  |
| 660 | **Implement Use Cases** | 16d | 2007-04-10 | 2007-05-01 |  |  |  |
| 662 | Implement O/R mapping | 5d | 2007-04-10 | 2007-04-16 |  |  | Krikor |
| 663 | Develop DAO | 10d | 2007-04-12 | 2007-04-25 | 662SS+2d |  | Krikor |
| 664 | Develop Service | 10d | 2007-04-16 | 2007-04-27 | 663SS+2d |  | Krikor |
| 665 | Develop controller and command objects | 10d | 2007-04-18 | 2007-05-01 | 664SS+2d |  | Krikor |
| 666 | Develop JUnit test cases | 7d | 2007-04-20 | 2007-04-30 | 665SS+2d |  | Krikor |
| 667 | **AE Data Collection (cont'd)** | 16d | 2007-04-10 | 2007-05-01 |  |  |  |
| 668 | Implement O/R mapping | 5d | 2007-04-10 | 2007-04-16 |  |  | Rhett |
| 669 | Develop DAO | 10d | 2007-04-12 | 2007-04-25 | 668SS+2d |  | Rhett |
| 670 | Develop Service | 10d | 2007-04-16 | 2007-04-27 | 669SS+2d |  | Rhett |
| 671 | Develop controller and command objects | 10d | 2007-04-18 | 2007-05-01 | 670SS+2d |  | Rhett |
| 672 | Develop JUnit test cases | 7d | 2007-04-20 | 2007-04-30 | 671SS+2d |  | Rhett |
| 674 | Implement O/R mapping | 5d | 2007-04-10 | 2007-04-16 |  |  | Kulasekaran |
| 675 | Develop DAO | 10d | 2007-04-12 | 2007-04-25 | 674SS+2d |  | Kulasekaran |
| 676 | Develop Service | 10d | 2007-04-16 | 2007-04-27 | 675SS+2d |  | Kulasekaran |
| 677 | Develop controller and command objects | 10d | 2007-04-18 | 2007-05-01 | 676SS+2d |  | Kulasekaran |
| 678 | Develop JUnit test cases | 7d | 2007-04-20 | 2007-04-30 | 677SS+2d |  | Kulasekaran |
| 680 | Implement O/R mapping | 5d | 2007-04-10 | 2007-04-16 |  |  | Sujith |
| 681 | Develop DAO | 10d | 2007-04-12 | 2007-04-25 | 680SS+2d |  | Sujith |
| 682 | Develop Service | 10d | 2007-04-16 | 2007-04-27 | 681SS+2d |  | Sujith |
| 683 | Develop controller and command objects | 10d | 2007-04-18 | 2007-05-01 | 682SS+2d |  | Sujith |
| 684 | Develop JUnit test cases | 7d | 2007-04-20 | 2007-04-30 | 683SS+2d |  | Sujith |
| 685 | **Testing** | 36d? | 2007-04-10 | 2007-05-29 |  |  |  |
| 686 | **Test Plan** | 11d? | 2007-04-10 | 2007-04-24 |  |  |  |
| 687 | Update Test Plan Document (Task 3.6) | 10d | 2007-04-10 | 2007-04-23 |  |  | Ram |
| 688 | Submit to BAH | 0d | 2007-04-23 | 2007-04-23 | 687 |  | Edmond |
| 689 | Formal Review by BAH | 1d? | 2007-04-24 | 2007-04-24 | 688 |  | BAH |
| 695 | **Test Data** | 20d | 2007-04-10 | 2007-05-07 |  |  |  |
| 696 | Create test data set (Task 3.7) | 10d | 2007-04-10 | 2007-04-23 |  |  | Renee; David |
| 697 | Submit for Review | 0d | 2007-04-23 | 2007-04-23 | 696 |  | Edmond |
| 698 | Review | 10d | 2007-04-24 | 2007-05-07 | 697 |  | BAH; Mayo; WF |
| 699 | **Testing** | 20d | 2007-05-02 | 2007-05-29 |  |  |  |
| 700 | Testing | 5d | 2007-05-02 | 2007-05-08 | 653 |  | Renee; David; Natasha |
| 701 | Submit Test Results Report (Task 3.7) | 0d | 2007-05-08 | 2007-05-08 | 700 |  | Edmond |
| 702 | Formal Review of Test results Report | 15d | 2007-05-09 | 2007-05-29 | 701 |  | BAH |
| 703 | **Deployment** | 15d | 2007-05-02 | 2007-05-22 |  |  |  |
| 704 | Submit prototype code (Task 3.5) | 0d | 2007-05-08 | 2007-05-08 | 700 |  | Ram |
| 705 | Formal Review of Code by BAH | 10d | 2007-05-09 | 2007-05-22 | 704 |  | BAH |
| 706 | Update Installation Guide | 2d | 2007-05-02 | 2007-05-03 | 653 |  | Krikor; Vinay |
| 707 | Deploy Prototype for Iteration 1 at Mayo and WF | 1d | 2007-05-09 | 2007-05-09 | 700, 706 |  | Vinay; Mayo; WF |
| 708 | Make URL Public | 1d | 2007-05-09 | 2007-05-09 | 700 |  | Vinay |
| 709 | Finish Iteration 2 | 0d | 2007-05-09 | 2007-05-09 | 707 |  |  |

Removed: 296 RTM; 316 CaAERS CCB (Task 2.10); 317 CCB Meetings; 415 Create Functional Tests; 416 Create Functional Tests for Use Cases; 557 RTM; 558 Create RTM

Changed:

| ID | Task | Start | Finish | Duration | Complete | Total float |
| --- | --- | --- | --- | --- | --- | --- |
| 1 | **caAERS Application Development Project** |  | 2007-10-19 → 2007-10-31 (+12d) | 229d? → 237d? | 27% → 35% |  |
| 2 | **Elaboration Phase** |  |  |  | 72% → 89% | 157d → 180d |
| 178 | **Iteration 2** |  |  |  | 60% → 90% | 157d → 180d |
| 180 | **Project Management** |  |  |  | 28% → 99% | 160d → 183d |
| 182 | **Detailed Construction and Transition Plan** |  | 2007-02-16 A |  | 4% → 100% | 160d → none |
| 183 | Prepare Detailed Plan for Construction and Transition Phases |  | 2007-01-26 A |  | 25% → 100% | 165d → none |
| 184 | Deliver Plan to BAH (Task 2.9) | 2007-01-26 A | 2007-01-26 A |  | 0% → 100% | 165d → none |
| 185 | Adopter Review | 2007-01-29 A | 2007-02-09 A |  | 0% → 100% | 170d → none |
| 186 | Formal Review by BAH | 2007-01-29 A | 2007-02-16 A |  | 0% → 100% | 165d → none |
| 187 | **Change Control Board Plan and Charter (Task 2.10)** |  | 2007-02-02 A |  | 17% → 100% | 170.25d → none |
| 188 | Prepare CCB Charter |  | 2007-01-12 A |  | 50% → 100% | 175.25d → none |
| 189 | Submit to BAH | 2007-01-12 A | 2007-01-12 A |  | 0% → 100% | 175.25d → none |
| 190 | Adopters/Collobators Review | 2007-01-12 A | 2007-01-19 A |  | 0% → 100% | 185.25d → none |
| 191 | Formal Review by BAH | 2007-01-12 A | 2007-02-02 A |  | 0% → 100% | 175.25d → none |
| 197 | **Status and Risk Reporting** |  |  |  | 57% → 93% | 172d → 195d |
| 202 | Monthly Status Report (Task 1.3) | 2007-01-31 A | 2007-01-31 A |  | 0% → 100% | 177d → none |
| 203 | Monthly Risk Matrix Update (Task 1.3) | 2007-01-31 A | 2007-01-31 A |  | 0% → 100% | 177d → none |
| 204 | Adopters Collaboration Report (Task 1.7) | 2007-01-31 A |  |  | 0% → 50% | 177d → 195d |
| 209 | **Requirements** |  | 2007-02-14 A |  | 74% → 100% | 162d → none |
| 214 | **Use Case Specification and Realization (Task 2.1)** |  | 2007-01-24 A |  | 98% → 100% | 177d → none |
| 227 | Update Use Case Document |  | 2007-01-24 A |  | 75% → 100% | 182d → none |
| 228 | Submit Updated Use Case Document to BAH (Task 2.1) | 2007-01-24 A | 2007-01-24 A |  | 0% → 100% | 182d → none |
| 229 | **SRS document (Task 2.2)** |  | 2007-02-14 A |  | 34% → 100% | 161d → none |
| 231 | Adopter review |  | 2007-01-15 A |  | 50% → 100% | 169.5d → none |
| 232 | Developer update |  | 2007-01-24 A |  | 50% → 100% | 166d → none |
| 233 | Deliver SRS document to BAH (Task 2.2) | 2007-01-24 A | 2007-01-24 A |  | 0% → 100% | 166d → none |
| 234 | Formal Review by BAH | 2007-01-25 A | 2007-02-14 A |  | 0% → 100% | 166d → none |
| 235 | **Analysis and Design** |  |  |  | 45% → 50% | 157d → 180d |
| 236 | **Design Documents** |  |  |  | 64% → 72% | 161d → 184d |
| 237 | **Protocol Abstraction** |  | 2007-01-25 A |  | 88% → 100% | 161d → none |
| 240 | Adopters/Collaborators Review |  | 2007-01-24 A |  | 50% → 100% | 166.5d → none |
| 241 | Developers Update |  | 2007-01-25 A |  | 50% → 100% | 166d → none |
| 242 | **AE Data Collection** |  | 2007-01-25 A |  | 88% → 100% | 161d → none |
| 245 | Adopters/Collaborators Review |  | 2007-01-24 A |  | 50% → 100% | 166.5d → none |
| 246 | Developers Update |  | 2007-01-25 A |  | 50% → 100% | 166d → none |
| 247 | **Triggers/Notification** |  | 2007-01-25 A |  | 88% → 100% | 161d → none |
| 250 | Adopters/Collaborators Review |  | 2007-01-24 A |  | 50% → 100% | 166.5d → none |
| 251 | Developers Update |  | 2007-01-25 A |  | 50% → 100% | 166d → none |
| 287 | **Testing** | 2007-01-09 A → 2007-01-17 A (+8d) | 2007-02-21 A | 32d → 26d | 4% → 100% | 157d → none |
| 288 | **Test Plan** |  | 2007-02-09 A |  | 8% → 100% | 165d → none |
| 289 | Update Test Plan Document (Task 2.6) |  | 2007-01-19 A |  | 50% → 100% | 170d → none |
| 290 | Submit to BAH | 2007-01-19 A | 2007-01-19 A |  | 0% → 100% | 170d → none |
| 291 | Formal Review by BAH | 2007-01-22 A | 2007-02-09 A |  | 0% → 100% | 170d → none |
| 292 | **Final Tests of Iteration** | 2007-01-30 A | 2007-02-21 A |  | 0% → 100% | 157d → none |
| 293 | Testing | 2007-01-30 A | 2007-01-31 A |  | 0% → 100% | 162d → none |
| 294 | Submit Test Results Report (Task 2.7) | 2007-01-31 A | 2007-01-31 A |  | 0% → 100% | 162d → none |
| 295 | Formal Review of Test results Report | 2007-02-01 A | 2007-02-21 A |  | 0% → 100% | 162d → none |
| 296 | **Deployment** | 2006-12-29 A | 2007-02-06 A |  | 0% → 100% | 168d → none |
| 297 | Submit prototype code (Task 2.5) | 2006-12-29 A | 2006-12-29 A |  | 0% → 100% | 184d → none |
| 298 | Formal Review of Code by BAH | 2007-01-02 A | 2007-01-22 A |  | 0% → 100% | 184d → none |
| 299 | Draft Installation Guide | 2007-01-02 A | 2007-01-04 A |  | 0% → 100% | 196d → none |
| 300 | Deploy Prototype for Iteration 2 at Mayo and WF | 2007-01-30 A | 2007-01-30 A |  | 0% → 100% | 178d → none |
| 301 | Deploy Prototype / Make URL Public | 2007-02-06 A | 2007-02-06 A |  | 0% → 100% | 173d → none |
| 302 | caBIG Annual Meeting | 2007-02-05 A | 2007-02-07 A |  | 0% → 100% | 0d → none |
| 303 | **Construction Phase** | 2007-02-01 A | 2007-09-07 → 2007-09-17 (+10d) | 157d? → 163d? | 0% → 11% | 0d → 32d |
| 304 | **Construction Phase Iteration 1** | 2007-02-01 A |  | 36d? → 36d | 0% → 61% | 0d → 159d |
| 305 | Begin Iteration 1 | 2007-02-14 A | 2007-02-14 A |  | 0% → 100% | 131d → none |
| 306 | **Iteration Planning** | 2007-02-14 A | 2007-02-14 A |  | 0% → 100% | 159d → none |
| 307 | Review and finalize Ucases and Work List for Iteration | 2007-02-14 A | 2007-02-14 A |  | 0% → 100% | 167d → none |
| 308 | Review and finalize assignments for Iteration | 2007-02-14 A | 2007-02-14 A |  | 0% → 100% | 164d → none |
| 309 | **Project Management** | 2007-02-01 A |  |  | 0% → 95% | 0d → 166d |
| 310 | Update Project Plan | 2007-02-15 A | 2007-02-19 A |  | 0% → 100% | 164d → none |
| 311 | **Weekly Team/Developers Meeting** | 2007-02-12 A | 2007-03-05 A |  | 0% → 100% | 0d → none |
| 312 | Weekly Team Meeting 1 | 2007-02-12 A | 2007-02-12 A |  | 0% → 100% | 0d → none |
| 313 | Weekly Team Meeting 2 | 2007-02-19 A | 2007-02-19 A |  | 0% → 100% | 0d → none |
| 314 | Weekly Team Meeting 3 | 2007-02-26 A | 2007-02-26 A |  | 0% → 100% | 0d → none |
| 315 | Weekly Team Meeting 4 | 2007-03-05 A | 2007-03-05 A |  | 0% → 100% | 0d → none |
| 316 | **Status and Risk Reporting** | 2007-02-09 A |  |  | 0% → 89% | 0d → 166d |
| 317 | Bi-weekly Risk Update in caMP (Task 1.4) | 2007-02-09 A | 2007-02-09 A |  | 0% → 100% | 0d → none |
| 318 | Bi-weekly Risk Matrix Update Meeting | 2007-02-09 A | 2007-02-09 A |  | 0% → 100% | 0d → none |

| ID | Task | Start | Finish | Complete | Total float | Other |
| --- | --- | --- | --- | --- | --- | --- |
| 319 | Bi-weekly Risk Update in caMP (Task 1.4) | 2007-02-23 A | 2007-02-23 A | 0% → 100% | 160d → none |  |
| 320 | Bi-weekly Risk Matrix Update Meeting | 2007-02-23 A | 2007-02-23 A | 0% → 100% | 0d → none |  |
| 321 | Bi-weekly Status Update Meeting with BAH/NCI | 2007-02-16 A | 2007-02-16 A | 0% → 100% | 0d → none |  |
| 322 | Bi-weekly Status Update Meeting with BAH/NCI | 2007-03-02 A | 2007-03-02 A | 0% → 100% | 0d → none |  |
| 323 | Monthly Status Report (Task 1.3) | 2007-03-09 A |  | 0% → 50% |  |  |
| 324 | Monthly Risk Matrix Update (Task 1.3) | 2007-03-12 A | 2007-03-12 A | 0% → 100% | 148d → none |  |
| 325 | Adopters Collaboration Report (Task 1.7) | 2007-03-13 A |  | 0% → 50% | 148d → 166d |  |
| 326 | **Collaboration Management Activities** | 2007-02-01 A | 2007-02-22 A | 0% → 100% | 0d → none |  |
| 327 | Adopters Mtg | 2007-02-01 A | 2007-02-01 A | 0% → 100% | -5d → none |  |
| 328 | Bi-Weekly AE SIG Meeting | 2007-02-08 A | 2007-02-08 A | 0% → 100% | 0d → none |  |
| 329 | Adopters Mtg | 2007-02-15 A | 2007-02-15 A | 0% → 100% | 0d → none |  |
| 330 | Bi-Weekly AE SIG Meeting | 2007-02-22 A | 2007-02-22 A | 0% → 100% | 0d → none |  |
| 331 | **Environment** | 2007-02-08 A | 2007-02-12 A | 0% → 100% | 164d → none |  |
| 332 | Update Environment | 2007-02-08 A | 2007-02-12 A | 0% → 100% | 169d → none |  |
| 333 | **SCM** | 2007-02-08 A | 2007-02-14 A | 0% → 100% | 162d → none |  |
| 334 | Manage Repository | 2007-02-08 A | 2007-02-14 A | 0% → 100% | 167d → none |  |
| 335 | **Requirements** | 2007-02-14 A |  | 0% → 44% | 136d → 159d |  |
| 336 | **Updated Use Case Specification and Realization** | 2007-02-14 A |  | 0% → 44% | 136d → 159d |  |
| 337 | Developer draft | 2007-02-14 A | 2007-02-20 A | 0% → 100% | 141d → none |  |
| 338 | Adopters/Collobators Review | 2007-02-21 A | 2007-02-27 A | 0% → 100% | 141d → none |  |
| 339 | Update Use Case Document | 2007-02-28 A | 2007-03-01 A | 0% → 100% | 141d → none |  |
| 340 | Submit Updated Use Case Document to BAH (Task 3.1) | 2007-03-01 A | 2007-03-01 A | 0% → 100% | 141d → none |  |
| 342 | **Updated SRS Document** | 2007-02-14 A |  | 0% → 44% | 136d → 159d |  |
| 343 | Developer draft | 2007-02-14 A | 2007-02-20 A | 0% → 100% | 141d → none |  |
| 344 | Adopters/Collobators Review | 2007-02-21 A | 2007-02-27 A | 0% → 100% | 141d → none |  |
| 345 | Update SRS | 2007-02-28 A | 2007-03-01 A | 0% → 100% | 141d → none |  |
| 346 | Submit Updated SRS Document to BAH (Task 3.2) | 2007-03-01 A | 2007-03-01 A | 0% → 100% | 141d → none |  |
| 348 | **Updated UML Static Class Diagram Model** | 2007-02-14 A |  | 0% → 44% | 136d → 159d |  |
| 349 | Developer draft | 2007-02-14 A | 2007-02-20 A | 0% → 100% | 141d → none |  |
| 350 | Adopters/Collobators Review | 2007-02-21 A | 2007-02-27 A | 0% → 100% | 141d → none |  |
| 351 | Update UML | 2007-02-28 A | 2007-03-01 A | 0% → 100% | 141d → none |  |
| 352 | Submit UML to BAH (Task 3.3) | 2007-03-01 A | 2007-03-01 A | 0% → 100% | 141d → none |  |
| 354 | **Analysis and Design** | 2007-02-08 A |  | 0% → 56% | 137d → 160d |  |
| 355 | **Design Documents** | 2007-02-08 A |  | 0% → 63% | 141d → 164d |  |
| 356 | **Protocol Abstraction (Diseases/Agents)** | 2007-02-14 A |  | 0% → 42% | 141d → 174d |  |
| 357 | Develop appropriate UML Artifacts | 2007-02-14 A | 2007-02-15 A | 0% → 100% | 146d → none |  |
| 358 | Create Design Document | 2007-02-16 A | 2007-02-20 A | 0% → 100% | 146d → none |  |
| 361 | **Protocol Abstration (Search/Edit Study)** | 2007-02-08 A | 2007-02-23 A | 0% → 100% | 145d → none | was named Protocol Abstration (Organizational Information) |
| 362 | Develop appropriate UML Artifacts | 2007-02-08 A | 2007-02-09 A | 0% → 100% | 150d → none |  |
| 363 | Create Design Document | 2007-02-12 A | 2007-02-14 A | 0% → 100% | 150d → none |  |
| 364 | Adopters/Collaborators Review | 2007-02-15 A | 2007-02-21 A | 0% → 100% | 150d → none |  |
| 365 | Developers Update | 2007-02-22 A | 2007-02-23 A | 0% → 100% | 150d → none |  |
| 366 | **Triggers/Notification (cont'd)** | 2007-02-08 A | 2007-02-23 A | 0% → 100% | 145d → none |  |
| 367 | Develop appropriate UML Artifacts | 2007-02-08 A | 2007-02-09 A | 0% → 100% | 150d → none |  |
| 368 | Create Design Document | 2007-02-12 A | 2007-02-14 A | 0% → 100% | 150d → none |  |
| 369 | Adopters/Collaborators Review | 2007-02-15 A | 2007-02-21 A | 0% → 100% | 150d → none |  |
| 370 | Developers Update | 2007-02-22 A | 2007-02-23 A | 0% → 100% | 150d → none |  |
| 371 | Deliver Design document to BAH (Task 3.4) | 2007-03-01 A | 2007-03-01 A | 0% → 100% | 156d → none |  |
| 372 | Deliver UML to BAH (Task 3.3) | 2007-03-01 A | 2007-03-01 A | 0% → 100% | 146d → none |  |
| 374 | **Domain Model** | 2007-02-14 A | 2007-02-20 A | 0% → 100% | 158d → none |  |
| 375 | Update Model/BRIDG Harmonization | 2007-02-14 A | 2007-02-20 A | 0% → 100% | 163d → none |  |
| 376 | **Technical/Architecture Guide** | 2007-02-21 A |  | 0% → 29% | 137d → 160d |  |
| 377 | Update Tech/Arch Guide | 2007-02-21 A | 2007-02-28 A | 0% → 100% | 142d → none |  |
| 378 | Deliver to BAH (Task 2.8) | 2007-02-28 A | 2007-02-28 A | 0% → 100% | 142d → none |  |
| 380 | **Implementation** | 2007-02-14 A | 2007-02-28 A | 0% → 100% | 144d → none |  |
| 381 | **Infrastructure** | 2007-02-14 A | 2007-02-27 A | 0% → 100% | 145d → none |  |
| 382 | **Build Framework** | 2007-02-14 A | 2007-02-20 A | 0% → 100% | 150d → none |  |
| 383 | Maven Setup | 2007-02-14 A | 2007-02-20 A | 0% → 100% | 6d → none |  |
| 384 | **Web interface** | 2007-02-14 A | 2007-02-27 A | 0% → 100% | 145d → none |  |
| 385 | UI Refactoring | 2007-02-14 A | 2007-02-27 A | 0% → 100% | 1d → none |  |
| 386 | **Security** | 2007-02-14 A | 2007-02-27 A | 0% → 100% | 145d → none |  |
| 387 | Acegi - CSM | 2007-02-14 A | 2007-02-27 A | 0% → 100% | 1d → none |  |
| 388 | **Implement Use Cases** | 2007-02-14 A | 2007-02-28 A | 0% → 100% | 144d → none |  |
| 389 | **Protocol Abstraction (Agents)** | 2007-02-14 A | 2007-02-28 A | 0% → 100% | 144d → none | was named Protocol Abstraction (Diseases/Agents) |
| 390 | Implement O/R mapping | 2007-02-14 A | 2007-02-20 A | 0% → 100% | 144d → none |  |
| 391 | Develop DAO | 2007-02-16 A | 2007-02-26 A | 0% → 100% | 144d → none |  |
| 392 | Develop Service | 2007-02-20 A | 2007-02-28 A | 0% → 100% | 144d → none |  |
| 393 | Develop controller and command objects | 2007-02-22 A | 2007-02-28 A | 0% → 100% | 144d → none |  |
| 394 | Develop JUnit test cases | 2007-02-26 A | 2007-02-28 A | 0% → 100% | 144d → none |  |
| 395 | **Protocol Abstraction (Search/Edit Study)** | 2007-02-14 A | 2007-02-28 A | 0% → 100% | 144d → none | was named Protocol Abstraction (Organizational Information) |

| ID | Task | Start | Finish | Duration | Complete | Total float | Predecessors | Other |
| --- | --- | --- | --- | --- | --- | --- | --- | --- |
| 396 | Implement O/R mapping | 2007-02-14 A | 2007-02-20 A |  | 0% → 100% | 144d → none |  |  |
| 397 | Develop DAO | 2007-02-16 A | 2007-02-26 A |  | 0% → 100% | 144d → none |  |  |
| 398 | Develop Service | 2007-02-20 A | 2007-02-28 A |  | 0% → 100% | 144d → none |  |  |
| 399 | Develop controller and command objects | 2007-02-22 A | 2007-02-28 A |  | 0% → 100% | 144d → none |  |  |
| 400 | Develop JUnit test cases | 2007-02-26 A | 2007-02-28 A |  | 0% → 100% | 144d → none |  |  |
| 401 | **Triggers/Notification (cont'd)** | 2007-02-14 A | 2007-02-27 A |  | 0% → 100% | 145d → none |  |  |
| 402 | Rules Engine Development | 2007-02-14 A | 2007-02-27 A |  | 0% → 100% | 1d → none |  | was named AE Trigger Notification |
| 403 | **Testing** | 2007-02-14 A |  | 26d? → 26d | 0% → 22% | 8d → 160d |  |  |
| 404 | **Test Plan** | 2007-02-14 A | 2007-02-28 → 2007-03-13 (+13d) | 11d? → 20d | 0% → 50% | 147d → 166d |  |  |
| 405 | Update Test Plan Document (Task 3.6) | 2007-02-14 A | 2007-02-27 A |  | 0% → 100% | 147d → none |  |  |
| 407 | Formal Review by BAH |  | 2007-02-28 → 2007-03-13 (+13d) | 1d? → 10d |  | 147d → 166d |  |  |
| 412 | **Testing** | 2007-02-26 A |  |  | 0% → 17% | 0d → 160d |  |  |
| 413 | Testing | 2007-02-26 A | 2007-02-28 A |  | 0% → 100% | 0d → none |  |  |
| 414 | Submit Test Results Report (Task 3.7) | 2007-02-28 A | 2007-02-28 A |  | 0% → 100% | 132d → none |  |  |
| 416 | **Deployment** | 2007-02-28 A |  |  | 0% → 21% | 0d → 165d |  |  |
| 417 | Submit prototype code (Task 3.5) | 2007-02-28 A | 2007-02-28 A |  | 0% → 100% | 0d → none |  |  |
| 419 | Update Installation Guide | 2007-03-01 A | 2007-03-02 A |  | 0% → 100% | 149d → none |  |  |
| 420 | Deploy Prototype for Iteration 1 at Mayo and WF | 2007-03-05 A |  |  | 0% → 75% | 144d → 172d |  |  |
| 421 | Make URL Public | 2007-03-01 A |  |  | 0% → 25% | 146d → 174d |  |  |
| 422 | Finish Iteration 1 | 2007-02-28 A |  |  | 0% → 75% | 0d → -18d |  |  |
| 423 | **Construction Phase Iteration 2** | 2007-03-01 A | 2007-04-19 → 2007-04-27 (+8d) | 36d? → 42d |  | 0d → 133d |  |  |
| 424 | Begin Iteration 2 | 2007-03-01 A | 2007-03-01 A |  | 0% → 100% | 142d → none |  |  |
| 425 | **Iteration Planning** | 2007-03-01 A | 2007-03-02 A |  | 0% → 100% | 142d → none |  |  |
| 426 | Review and finalize Ucases and Work List for Iteration | 2007-03-01 A | 2007-03-01 A |  | 0% → 100% | 142d → none |  |  |
| 427 | Review and finalize assignments for Iteration | 2007-03-02 A | 2007-03-02 A |  | 0% → 100% | 142d → none |  |  |
| 428 | **Project Management** | 2007-03-05 → 2007-03-01 (-4d) | 2007-04-13 → 2007-03-31 (-13d) | 30d → 22d |  | 8d → 0d |  |  |
| 430 | **CaAERS CCB (Task 2.10)** | 2007-04-02 → 2007-03-12 (-21d) | 2007-04-02 → 2007-03-12 (-21d) |  |  | 124d → 167d |  |  |
| 431 | CCB Meeting | 2007-04-02 → 2007-03-12 (-21d) | 2007-04-02 → 2007-03-12 (-21d) |  |  | 124d → 167d |  | was named CCB Meetings; constraint finish no earlier than 2007-04-02 → start no earlier than 2007-03-12 |
| 432 | **Weekly Team/Developers Meeting** | 2007-03-19 → 2007-03-05 (-14d) | 2007-04-09 → 2007-03-26 (-14d) |  |  |  |  |  |
| 433 | Weekly Team Meeting 1 | 2007-03-19 → 2007-03-05 (-14d) | 2007-03-19 → 2007-03-05 (-14d) |  |  |  |  | constraint must start on 2007-03-19 → must start on 2007-03-05 |
| 434 | Weekly Team Meeting 2 | 2007-03-26 → 2007-03-12 (-14d) | 2007-03-26 → 2007-03-12 (-14d) |  |  |  |  | constraint must start on 2007-03-26 → must start on 2007-03-12 |
| 435 | Weekly Team Meeting 3 | 2007-04-02 → 2007-03-19 (-14d) | 2007-04-02 → 2007-03-19 (-14d) |  |  |  |  | constraint must start on 2007-04-02 → must start on 2007-03-19 |
| 436 | Weekly Team Meeting 4 | 2007-04-09 → 2007-03-26 (-14d) | 2007-04-09 → 2007-03-26 (-14d) |  |  |  |  | constraint must start on 2007-04-09 → must start on 2007-03-26 |
| 437 | **Status and Risk Reporting** | 2007-03-16 → 2007-03-02 (-14d) | 2007-04-13 → 2007-03-31 (-13d) |  |  |  |  |  |
| 438 | Bi-weekly Risk Update in caMP (Task 1.4) | 2007-03-16 → 2007-03-02 (-14d) | 2007-03-16 → 2007-03-02 (-14d) |  |  |  |  | constraint must start on 2007-03-16 → must start on 2007-03-02 |
| 439 | Bi-weekly Risk Matrix Update Meeting | 2007-03-16 → 2007-03-02 (-14d) | 2007-03-16 → 2007-03-02 (-14d) |  |  |  |  | constraint must start on 2007-03-16 → must start on 2007-03-02 |
| 440 | Bi-weekly Risk Update in caMP (Task 1.4) | 2007-03-30 → 2007-03-16 (-14d) | 2007-03-30 → 2007-03-16 (-14d) |  |  | 130d → 163d |  | constraint start no earlier than 2007-03-30 → start no earlier than 2007-03-16 |
| 441 | Bi-weekly Risk Matrix Update Meeting | 2007-03-30 → 2007-03-16 (-14d) | 2007-03-30 → 2007-03-16 (-14d) |  |  |  |  | constraint must start on 2007-03-30 → must start on 2007-03-16 |
| 442 | Bi-weekly Status Update Meeting with BAH/NCI | 2007-03-23 → 2007-03-09 (-14d) | 2007-03-23 → 2007-03-09 (-14d) |  |  |  |  | constraint must start on 2007-03-23 → must start on 2007-03-09 |
| 443 | Bi-weekly Status Update Meeting with BAH/NCI | 2007-04-06 → 2007-03-23 (-14d) | 2007-04-06 → 2007-03-23 (-14d) |  |  |  |  | constraint must start on 2007-04-06 → must start on 2007-03-23 |
| 444 | Monthly Status Report (Task 1.3) | 2007-04-13 → 2007-03-30 (-14d) | 2007-04-13 → 2007-03-31 (-13d) |  |  |  |  | constraint must finish on 2007-04-13 → must finish on 2007-03-31 |
| 445 | Monthly Risk Matrix Update (Task 1.3) | 2007-04-13 → 2007-03-30 (-14d) | 2007-04-13 → 2007-03-30 (-14d) |  |  | 120d → 153d |  |  |
| 446 | **Collaboration Management Activities** | 2007-03-15 → 2007-03-01 (-14d) | 2007-04-05 → 2007-03-22 (-14d) |  |  |  |  |  |
| 447 | Adopters Mtg | 2007-03-15 → 2007-03-01 (-14d) | 2007-03-15 → 2007-03-01 (-14d) |  |  |  |  | constraint must start on 2007-03-15 → must start on 2007-03-01 |
| 448 | Bi-Weekly AE SIG Meeting | 2007-03-22 → 2007-03-08 (-14d) | 2007-03-22 → 2007-03-08 (-14d) |  |  |  |  | constraint must start on 2007-03-22 → must start on 2007-03-08 |
| 449 | Adopters Mtg | 2007-03-29 → 2007-03-15 (-14d) | 2007-03-29 → 2007-03-15 (-14d) |  |  |  |  | constraint must start on 2007-03-29 → must start on 2007-03-15 |
| 450 | Bi-Weekly AE SIG Meeting | 2007-04-05 → 2007-03-22 (-14d) | 2007-04-05 → 2007-03-22 (-14d) |  |  |  |  | constraint must start on 2007-04-05 → must start on 2007-03-22 |
| 456 | **Updated Use Case Specification and Realization** |  | 2007-04-11 → 2007-04-09 (-2d) | 30d → 28d |  | 117d → 147d |  |  |
| 459 | Update Use Case Document |  | 2007-03-21 → 2007-03-19 (-2d) | 5d → 3d |  | 117d → 147d |  |  |
| 460 | Submit Updated Use Case Document to BAH (Task 3.1) | 2007-03-21 → 2007-03-19 (-2d) | 2007-03-21 → 2007-03-19 (-2d) |  |  | 117d → 147d |  |  |
| 461 | Formal Review of Updated Use Case Document | 2007-03-22 → 2007-03-20 (-2d) | 2007-04-11 → 2007-04-09 (-2d) |  |  | 117d → 147d |  |  |
| 462 | **Updated SRS Document** | 2007-03-01 → 2007-03-05 (+4d) |  | 30d → 28d |  | 117d → 145d |  |  |
| 463 | Developer draft | 2007-03-01 → 2007-03-05 (+4d) | 2007-03-07 → 2007-03-09 (+2d) |  |  | 117d → 145d | 422 → 427 |  |
| 464 | Adopters/Collobators Review | 2007-03-08 → 2007-03-12 (+4d) | 2007-03-14 → 2007-03-16 (+2d) |  |  | 117d → 145d |  |  |
| 465 | Update SRS | 2007-03-15 → 2007-03-19 (+4d) |  | 5d → 3d |  | 117d → 145d |  |  |
| 468 | **Updated UML Static Class Diagram Model** | 2007-03-01 → 2007-03-05 (+4d) | 2007-04-11 → 2007-04-10 (-1d) | 30d → 27d |  | 117d → 146d |  |  |
| 469 | Developer draft | 2007-03-01 → 2007-03-05 (+4d) | 2007-03-07 → 2007-03-09 (+2d) |  |  | 117d → 146d | 422 → 427 |  |
| 470 | Adopters/Collobators Review | 2007-03-08 → 2007-03-12 (+4d) | 2007-03-14 → 2007-03-16 (+2d) |  |  | 117d → 146d |  |  |
| 471 | Update UML | 2007-03-15 → 2007-03-19 (+4d) | 2007-03-21 → 2007-03-20 (-1d) | 5d → 2d |  | 117d → 146d |  |  |
| 472 | Submit UML to BAH (Task 3.3) | 2007-03-21 → 2007-03-20 (-1d) | 2007-03-21 → 2007-03-20 (-1d) |  |  | 117d → 146d |  |  |
| 473 | Formal Review of UML | 2007-03-22 → 2007-03-21 (-1d) | 2007-04-11 → 2007-04-10 (-1d) |  |  | 117d → 146d |  |  |
| 474 | **Analysis and Design** |  | 2007-04-06 → 2007-04-10 (+4d) | 27d? → 29d |  | 120d → 146d |  |  |
| 475 | **Design Documents** |  | 2007-04-06 → 2007-04-10 (+4d) | 27d? → 29d |  | 120d → 146d |  |  |
| 476 | **Protocol Abstraction (Diseases)** | 2007-03-01 → 2007-03-05 (+4d) | 2007-03-23 → 2007-03-19 (-4d) | 17d → 11d |  | 120d → 152d |  | was named New Version of Existing Study |
| 477 | Develop appropriate UML Artifacts | 2007-03-01 → 2007-03-05 (+4d) | 2007-03-07 → 2007-03-06 (-1d) | 5d → 2d |  | 120d → 152d | none → 427 |  |
| 478 | Create Design Document | 2007-03-08 → 2007-03-07 (-1d) | 2007-03-14 → 2007-03-08 (-6d) | 5d → 2d |  | 120d → 152d |  |  |
| 479 | Adopters/Collaborators Review | 2007-03-15 → 2007-03-09 (-6d) | 2007-03-21 → 2007-03-15 (-6d) |  |  | 120d → 152d |  |  |
| 480 | Developers Update | 2007-03-22 → 2007-03-16 (-6d) | 2007-03-23 → 2007-03-19 (-4d) |  |  | 120d → 152d |  |  |
| 487 | Develop appropriate UML Artifacts | 2007-03-01 → 2007-03-05 (+4d) | 2007-03-07 → 2007-03-09 (+2d) |  |  | 120d → 146d | none → 427 |  |
| 488 | Create Design Document | 2007-03-08 → 2007-03-12 (+4d) | 2007-03-14 → 2007-03-16 (+2d) |  |  | 120d → 146d |  |  |

| ID | Task | Start | Finish | Duration | Total float | Predecessors | Other |
| --- | --- | --- | --- | --- | --- | --- | --- |
| 489 | Adopters/Collaborators Review | 2007-03-15 → 2007-03-19 (+4d) | 2007-03-21 → 2007-03-23 (+2d) |  | 120d → 146d |  |  |
| 490 | Developers Update | 2007-03-22 → 2007-03-26 (+4d) | 2007-03-23 → 2007-03-27 (+4d) |  | 120d → 146d |  |  |
| 492 | Develop appropriate UML Artifacts | 2007-03-01 → 2007-03-05 (+4d) | 2007-03-01 → 2007-03-07 (+6d) | 1d? → 3d | 146d → 149d | none → 427 |  |
| 493 | Create Design Document | 2007-03-01 → 2007-03-08 (+7d) | 2007-03-01 → 2007-03-12 (+11d) | 1d? → 3d | 146d → 149d | none → 492 |  |
| 494 | Adopters/Collaborators Review | 2007-03-01 → 2007-03-13 (+12d) | 2007-03-01 → 2007-03-19 (+18d) | 1d? → 5d | 146d → 149d | none → 493 | resources none → Mayo; WF |
| 495 | Developers Update | 2007-03-01 → 2007-03-20 (+19d) | 2007-03-01 → 2007-03-22 (+21d) | 1d? → 3d | 136d → 149d | none → 494 |  |
| 501 | Deliver Design document to BAH (Task 3.4) | 2007-03-23 → 2007-03-27 (+4d) | 2007-03-23 → 2007-03-27 (+4d) |  | 130d → 156d |  |  |
| 502 | Deliver UML to BAH (Task 3.3) | 2007-03-23 → 2007-03-27 (+4d) | 2007-03-23 → 2007-03-27 (+4d) |  | 120d → 146d |  |  |
| 503 | Formal Review by BAH | 2007-03-26 → 2007-03-28 (+2d) | 2007-04-06 → 2007-04-10 (+4d) |  | 120d → 146d |  |  |
| 504 | **Domain Model** | 2007-03-01 → 2007-03-05 (+4d) | 2007-03-07 → 2007-03-09 (+2d) |  | 142d → 168d |  |  |
| 505 | Update Model/BRIDG Harmonization | 2007-03-01 → 2007-03-05 (+4d) | 2007-03-07 → 2007-03-09 (+2d) |  | 142d → 168d | 422 → 427 |  |
| 506 | **Technical/Architecture Guide** | 2007-03-01 → 2007-03-05 (+4d) | 2007-03-28 → 2007-03-30 (+2d) |  | 127d → 153d |  |  |
| 507 | Update Tech/Arch Guide | 2007-03-01 → 2007-03-05 (+4d) | 2007-03-07 → 2007-03-09 (+2d) |  | 127d → 153d | 422 → 427 |  |
| 508 | Deliver to BAH (Task 2.8) | 2007-03-07 → 2007-03-09 (+2d) | 2007-03-07 → 2007-03-09 (+2d) |  | 127d → 153d |  |  |
| 509 | Formal Review | 2007-03-08 → 2007-03-12 (+4d) | 2007-03-28 → 2007-03-30 (+2d) |  | 127d → 153d |  |  |
| 510 | **Implementation** |  | 2007-03-22 → 2007-03-30 (+8d) | 16d → 22d | 0d → -18d |  |  |
| 511 | **Web interface** | 2007-03-01 → 2007-03-05 (+4d) | 2007-03-07 → 2007-03-16 (+9d) | 5d → 10d | 11d → -8d |  |  |
| 513 | **Implement Use Cases** |  | 2007-03-22 → 2007-03-30 (+8d) | 16d → 22d | 0d → -18d |  |  |
| 515 | Implement O/R mapping |  | 2007-03-07 → 2007-03-05 (-2d) | 5d → 3d | 0d → -18d | 422 → none |  |
| 516 | Develop DAO |  | 2007-03-16 → 2007-03-07 (-9d) | 10d → 3d | 0d → -18d |  |  |
| 517 | Develop Service |  | 2007-03-20 → 2007-03-09 (-11d) | 10d → 3d | 0d → -18d |  |  |
| 518 | Develop controller and command objects |  | 2007-03-22 → 2007-03-13 (-9d) | 10d → 3d | 0d → -18d |  |  |
| 519 | Develop JUnit test cases |  | 2007-03-21 → 2007-03-15 (-6d) | 7d → 3d | 1d → -18d |  |  |
| 526 | **AE Data Collection (cont'd)** | 2007-03-01 → 2007-03-05 (+4d) | 2007-03-22 → 2007-03-26 (+4d) |  | 0d → -14d |  |  |
| 527 | Implement O/R mapping | 2007-03-01 → 2007-03-05 (+4d) | 2007-03-07 → 2007-03-09 (+2d) |  | 0d → -14d | 422 → 427 |  |
| 528 | Develop DAO | 2007-03-05 → 2007-03-07 (+2d) | 2007-03-16 → 2007-03-20 (+4d) |  | 0d → -14d |  |  |
| 529 | Develop Service | 2007-03-07 → 2007-03-09 (+2d) | 2007-03-20 → 2007-03-22 (+2d) |  | 0d → -14d |  |  |
| 530 | Develop controller and command objects | 2007-03-09 → 2007-03-13 (+4d) | 2007-03-22 → 2007-03-26 (+4d) |  | 0d → -14d |  |  |
| 531 | Develop JUnit test cases | 2007-03-13 → 2007-03-15 (+2d) | 2007-03-21 → 2007-03-23 (+2d) |  | 1d → -13d |  |  |
| 533 | Implement O/R mapping | 2007-03-01 → 2007-03-05 (+4d) | 2007-03-07 → 2007-03-09 (+2d) |  | 0d → -14d | 422 → 427 |  |
| 534 | Develop DAO | 2007-03-05 → 2007-03-07 (+2d) | 2007-03-16 → 2007-03-20 (+4d) |  | 0d → -14d |  |  |
| 535 | Develop Service | 2007-03-07 → 2007-03-09 (+2d) | 2007-03-20 → 2007-03-22 (+2d) |  | 0d → -14d |  |  |
| 536 | Develop controller and command objects | 2007-03-09 → 2007-03-13 (+4d) | 2007-03-22 → 2007-03-26 (+4d) |  | 0d → -14d |  |  |
| 537 | Develop JUnit test cases | 2007-03-13 → 2007-03-15 (+2d) | 2007-03-21 → 2007-03-23 (+2d) |  | 1d → -13d |  |  |
| 539 | Implement O/R mapping | 2007-03-01 → 2007-03-05 (+4d) | 2007-03-07 → 2007-03-09 (+2d) |  | 0d → -14d | 422 → 427 |  |
| 540 | Develop DAO | 2007-03-05 → 2007-03-07 (+2d) | 2007-03-16 → 2007-03-20 (+4d) |  | 0d → -14d |  |  |
| 541 | Develop Service | 2007-03-07 → 2007-03-09 (+2d) | 2007-03-20 → 2007-03-22 (+2d) |  | 0d → -14d |  |  |
| 542 | Develop controller and command objects | 2007-03-09 → 2007-03-13 (+4d) | 2007-03-22 → 2007-03-26 (+4d) |  | 0d → -14d |  |  |
| 543 | Develop JUnit test cases | 2007-03-13 → 2007-03-15 (+2d) | 2007-03-21 → 2007-03-23 (+2d) |  | 1d → -13d |  |  |
| 548 | **Testing** |  | 2007-04-19 → 2007-04-27 (+8d) | 36d? → 42d | 16d → 4d |  |  |
| 549 | **Test Plan** |  | 2007-03-15 → 2007-03-28 (+13d) | 11d? → 20d | 136d → 155d |  |  |
| 552 | Formal Review by BAH |  | 2007-03-15 → 2007-03-28 (+13d) | 1d? → 10d | 136d → 155d |  |  |
| 560 | **Testing** | 2007-03-23 → 2007-04-02 (+10d) | 2007-04-19 → 2007-04-27 (+8d) |  | 0d → -18d |  |  |
| 561 | Testing | 2007-03-23 → 2007-04-02 (+10d) | 2007-03-29 → 2007-04-06 (+8d) |  | 0d → -18d |  |  |
| 562 | Submit Test Results Report (Task 3.7) | 2007-03-29 → 2007-04-06 (+8d) | 2007-03-29 → 2007-04-06 (+8d) |  | 111d → 133d |  |  |
| 563 | Formal Review of Test results Report | 2007-03-30 → 2007-04-09 (+10d) | 2007-04-19 → 2007-04-27 (+8d) |  | 111d → 133d |  |  |
| 564 | **Deployment** | 2007-03-23 → 2007-04-02 (+10d) | 2007-04-12 → 2007-04-20 (+8d) |  | 3d → -15d |  |  |
| 565 | Submit prototype code (Task 3.5) | 2007-03-29 → 2007-04-06 (+8d) | 2007-03-29 → 2007-04-06 (+8d) |  | 116d → 138d |  |  |
| 566 | Formal Review of Code by BAH | 2007-03-30 → 2007-04-09 (+10d) | 2007-04-12 → 2007-04-20 (+8d) |  | 116d → 138d |  |  |
| 567 | Update Installation Guide | 2007-03-23 → 2007-04-02 (+10d) | 2007-03-26 → 2007-04-03 (+8d) |  | 3d → -15d |  |  |
| 568 | Deploy Prototype for Iteration 1 at Mayo and WF | 2007-03-30 → 2007-04-09 (+10d) | 2007-03-30 → 2007-04-09 (+10d) |  | 0d → -18d |  |  |
| 569 | Make URL Public | 2007-03-30 → 2007-04-09 (+10d) | 2007-03-30 → 2007-04-09 (+10d) |  | 125d → 147d |  |  |
| 570 | Finish Iteration 2 | 2007-03-30 → 2007-04-09 (+10d) | 2007-03-30 → 2007-04-09 (+10d) |  | 0d → -18d |  |  |
| 571 | **Construction Phase Iteration 3** | 2007-03-30 → 2007-03-15 (-15d) | 2007-05-02 → 2007-05-29 (+27d) | 23d → 54d? |  |  |  |
| 578 | **CaAERS CCB (Task 2.10)** | 2007-02-02 → 2007-04-10 (+67d) | 2007-02-02 → 2007-04-10 (+67d) | 0d → 1d | 170.25d → 146d |  | baseline start 2007-01-10 → none; baseline finish 2007-01-24 → none |
| 579 | CCB Meetings | 2007-02-02 → 2007-04-10 (+67d) | 2007-02-02 → 2007-04-10 (+67d) | 0d → 1d | 175.25d → 146d | 191 → none | constraint start no earlier than 2007-01-24 → finish no earlier than 2007-04-02; resources CCB → Edmond; baseline start 2007-01-24 → none; baseline finish 2007-01-24 → none |
| 629 | **AE Data Collection** | 2007-03-01 → 2007-04-10 (+40d) | 2007-03-23 → 2007-05-02 (+40d) |  |  |  |  |
| 634 | **Candidate AE** | 2007-03-01 → 2007-04-10 (+40d) | 2007-03-01 → 2007-04-10 (+40d) |  |  |  |  |
| 639 | **Institution AE Notification Trigger** | 2007-03-01 → 2007-04-10 (+40d) | 2007-03-23 → 2007-05-02 (+40d) |  |  |  |  |
| 655 | Fourth web interface iteration | 2007-03-01 → 2007-04-10 (+40d) | 2007-03-07 → 2007-04-16 (+40d) |  | 11d → 122d | 422 → none |  |
| 656 | **Enterprise Service Bus** | 2007-03-01 → 2007-04-10 (+40d) | 2007-03-07 → 2007-04-16 (+40d) |  | 11d → 122d |  |  |
| 657 | Fourth ESB Iteration | 2007-03-01 → 2007-04-10 (+40d) | 2007-03-07 → 2007-04-16 (+40d) |  | 11d → 122d | 422 → none |  |
| 658 | **Grid service** | 2007-03-01 → 2007-04-10 (+40d) | 2007-03-07 → 2007-04-16 (+40d) |  | 11d → 122d |  |  |
| 659 | Implement Grid Service | 2007-03-01 → 2007-04-10 (+40d) | 2007-03-07 → 2007-04-16 (+40d) |  | 11d → 122d | 422 → none |  |
| 661 | **New Version of Study** | 2007-03-01 → 2007-04-10 (+40d) | 2007-03-22 → 2007-05-01 (+40d) |  | 0d → 111d |  |  |
| 673 | **Candidate AE** | 2007-03-01 → 2007-04-10 (+40d) | 2007-03-22 → 2007-05-01 (+40d) |  | 0d → 111d |  |  |
| 679 | **Triggers/Notification (cont'd)** | 2007-03-01 → 2007-04-10 (+40d) | 2007-03-22 → 2007-05-01 (+40d) |  | 0d → 111d |  |  |
| 690 | **Create Functional Tests** | 2007-01-09 → 2007-04-10 (+91d) | 2007-02-15 → 2007-04-30 (+74d) | 28d → 15d | 161d → 132d | 214SS+5d → none | baseline start 2007-01-12 → none; baseline finish 2007-01-24 → none |
| 691 | Create Functional Tests for Use Cases | 2007-01-09 → 2007-04-10 (+91d) | 2007-01-15 → 2007-04-23 (+98d) | 5d → 10d | 188d → 132d |  | resources Renee; David; Brenda; Natasha → Renee; Natasha; Sean; baseline start 2007-01-12 → none; baseline finish 2007-01-18 → none |
| 692 | Review by Adopters | 2007-02-21 → 2007-04-24 (+62d) | 2007-02-27 → 2007-04-30 (+62d) |  | 148d → 132d | Create Functional Tests for Use Cases → 691 |  |

| ID | Task | Start | Finish | Duration | Total float | Predecessors |
| --- | --- | --- | --- | --- | --- | --- |
| 693 | **RTM** | 2007-02-21 → 2007-04-24 (+62d) | 2007-02-27 → 2007-04-30 (+62d) |  | 148d → 132d |  |
| 694 | Create RTM | 2007-02-21 → 2007-04-24 (+62d) | 2007-02-27 → 2007-04-30 (+62d) |  | 148d → 132d | Create Functional Tests for Use Cases → 691 |
| 710 | Begin Iteration 3 | 2007-03-30 → 2007-04-09 (+10d) | 2007-03-30 → 2007-04-09 (+10d) |  |  |  |
| 711 | Environment Updates | 2007-04-02 → 2007-04-10 (+8d) | 2007-04-13 → 2007-04-23 (+10d) |  | 115d → 137d |  |
| 712 | Updates to Requirements, Use Case, UML, and Design Document | 2007-04-02 → 2007-04-10 (+8d) | 2007-04-27 → 2007-05-07 (+10d) |  | 105d → 127d |  |
| 713 | Test Plan and RTM Updates | 2007-04-02 → 2007-04-10 (+8d) | 2007-04-20 → 2007-04-30 (+10d) |  | 110d → 132d |  |
| 714 | Develop Code | 2007-04-02 → 2007-04-10 (+8d) | 2007-04-27 → 2007-05-07 (+10d) |  | 105d → 127d |  |
| 715 | Testing | 2007-04-02 → 2007-04-10 (+8d) | 2007-04-27 → 2007-05-07 (+10d) |  | 105d → 127d |  |
| 716 | Installation Guide Drafts | 2007-04-23 → 2007-05-01 (+8d) | 2007-04-27 → 2007-05-07 (+10d) |  | 105d → 127d |  |
| 717 | Finish Iteration 3 | 2007-04-27 → 2007-05-07 (+10d) | 2007-04-27 → 2007-05-07 (+10d) |  |  |  |
| 718 | Iteration 3 Review and Feedback | 2007-04-26 → 2007-05-04 (+8d) | 2007-05-02 → 2007-05-10 (+8d) |  |  |  |
| 719 | **Construction Phase Iteration 4** | 2007-05-02 → 2007-05-10 (+8d) | 2007-06-04 → 2007-06-12 (+8d) |  |  |  |
| 720 | Begin Iteration 4 | 2007-05-02 → 2007-05-10 (+8d) | 2007-05-02 → 2007-05-10 (+8d) |  |  |  |
| 721 | Environment Updates | 2007-05-03 → 2007-05-11 (+8d) | 2007-05-16 → 2007-05-24 (+8d) |  | 92d → 114d |  |
| 722 | Updates to Requirements, Use Case, UML, and Design Document | 2007-05-03 → 2007-05-11 (+8d) | 2007-05-30 → 2007-06-07 (+8d) |  | 82d → 104d |  |
| 723 | Test Plan and RTM Updates | 2007-05-03 → 2007-05-11 (+8d) | 2007-05-23 → 2007-05-31 (+8d) |  | 87d → 109d |  |
| 724 | Develop Code | 2007-05-03 → 2007-05-11 (+8d) | 2007-05-30 → 2007-06-07 (+8d) |  | 82d → 104d |  |
| 725 | Testing | 2007-05-03 → 2007-05-11 (+8d) | 2007-05-30 → 2007-06-07 (+8d) |  | 82d → 104d |  |
| 726 | Installation Guide Draft | 2007-05-24 → 2007-06-01 (+8d) | 2007-05-30 → 2007-06-07 (+8d) |  | 82d → 104d |  |
| 727 | Administrators Guide Draft | 2007-05-24 → 2007-06-01 (+8d) | 2007-05-30 → 2007-06-07 (+8d) |  | 82d → 104d |  |
| 728 | End User Guide Draft | 2007-05-24 → 2007-06-01 (+8d) | 2007-05-30 → 2007-06-07 (+8d) |  | 82d → 104d |  |
| 729 | Finish Iteration 4 | 2007-05-30 → 2007-06-07 (+8d) | 2007-05-30 → 2007-06-07 (+8d) |  |  |  |
| 730 | Iteration 4 Review and Feedback | 2007-05-29 → 2007-06-06 (+8d) | 2007-06-04 → 2007-06-12 (+8d) |  |  |  |
| 731 | **Construction Phase Iteration 5** | 2007-06-04 → 2007-06-12 (+8d) | 2007-07-05 → 2007-07-13 (+8d) |  |  |  |
| 732 | Begin Iteration 5 | 2007-06-04 → 2007-06-12 (+8d) | 2007-06-04 → 2007-06-12 (+8d) |  |  |  |
| 733 | Environment Updates | 2007-06-05 → 2007-06-13 (+8d) | 2007-06-18 → 2007-06-26 (+8d) |  | 69d → 91d |  |
| 734 | Updates to Requirements, Use Case, UML, and Design Document | 2007-06-05 → 2007-06-13 (+8d) | 2007-07-02 → 2007-07-10 (+8d) |  | 59d → 81d |  |
| 735 | Test Plan and RTM Updates | 2007-06-05 → 2007-06-13 (+8d) | 2007-06-25 → 2007-07-03 (+8d) |  | 64d → 86d |  |
| 736 | Develop Code | 2007-06-05 → 2007-06-13 (+8d) | 2007-07-02 → 2007-07-10 (+8d) |  | 59d → 81d |  |
| 737 | Testing | 2007-06-05 → 2007-06-13 (+8d) | 2007-07-02 → 2007-07-10 (+8d) |  | 59d → 81d |  |
| 738 | Testing Results | 2007-06-26 → 2007-07-04 (+8d) | 2007-07-02 → 2007-07-10 (+8d) |  | 59d → 81d |  |
| 739 | Installation Guide Draft | 2007-06-26 → 2007-07-04 (+8d) | 2007-07-02 → 2007-07-10 (+8d) |  | 59d → 81d |  |
| 740 | Administrators Guide Draft | 2007-06-26 → 2007-07-04 (+8d) | 2007-07-02 → 2007-07-10 (+8d) |  | 59d → 81d |  |
| 741 | End User Guide Draft | 2007-06-05 → 2007-06-13 (+8d) | 2007-06-11 → 2007-06-19 (+8d) |  | 74d → 96d |  |
| 742 | Finish Iteration 5 | 2007-07-02 → 2007-07-10 (+8d) | 2007-07-02 → 2007-07-10 (+8d) |  |  |  |
| 743 | Iteration 5 Review and Feedback | 2007-06-29 → 2007-07-09 (+10d) | 2007-07-05 → 2007-07-13 (+8d) |  |  |  |
| 744 | **Construction Phase Iteration 6** | 2007-07-05 → 2007-07-13 (+8d) | 2007-08-07 → 2007-08-15 (+8d) |  |  |  |
| 745 | Begin Iteration 6 | 2007-07-05 → 2007-07-13 (+8d) | 2007-07-05 → 2007-07-13 (+8d) |  |  |  |
| 746 | Environment Updates | 2007-07-06 → 2007-07-16 (+10d) | 2007-07-19 → 2007-07-27 (+8d) |  | 46d → 68d |  |
| 747 | Updates to Requirements, Use Case, UML, and Design Document | 2007-07-06 → 2007-07-16 (+10d) | 2007-08-02 → 2007-08-10 (+8d) |  | 36d → 58d |  |
| 748 | Test Plan and RTM Updates | 2007-07-06 → 2007-07-16 (+10d) | 2007-07-26 → 2007-08-03 (+8d) |  | 41d → 63d |  |
| 749 | Develop Code | 2007-07-06 → 2007-07-16 (+10d) | 2007-08-02 → 2007-08-10 (+8d) |  | 36d → 58d |  |
| 750 | Installation Guide Draft | 2007-07-27 → 2007-08-06 (+10d) | 2007-08-02 → 2007-08-10 (+8d) |  | 36d → 58d |  |
| 751 | Administrators Guide Draft | 2007-07-27 → 2007-08-06 (+10d) | 2007-08-02 → 2007-08-10 (+8d) |  | 36d → 58d |  |
| 752 | End User Guide Draft | 2007-07-27 → 2007-08-06 (+10d) | 2007-08-02 → 2007-08-10 (+8d) |  | 36d → 58d |  |
| 753 | Testing | 2007-07-06 → 2007-07-16 (+10d) | 2007-08-02 → 2007-08-10 (+8d) |  | 36d → 58d |  |
| 754 | Testing Results | 2007-07-27 → 2007-08-06 (+10d) | 2007-08-02 → 2007-08-10 (+8d) |  | 36d → 58d |  |
| 755 | Finish Iteration 6 | 2007-08-02 → 2007-08-10 (+8d) | 2007-08-02 → 2007-08-10 (+8d) |  |  |  |
| 756 | Iteration 6 Review and Feedback | 2007-08-01 → 2007-08-09 (+8d) | 2007-08-07 → 2007-08-15 (+8d) |  |  |  |
| 757 | **Construction Phase Iteration 7** | 2007-08-07 → 2007-08-15 (+8d) | 2007-09-07 → 2007-09-17 (+10d) |  |  |  |
| 758 | Begin Iteration 7 | 2007-08-07 → 2007-08-15 (+8d) | 2007-08-07 → 2007-08-15 (+8d) |  |  |  |
| 759 | Environment Updates | 2007-08-08 → 2007-08-16 (+8d) | 2007-08-21 → 2007-08-29 (+8d) |  | 23d → 45d |  |
| 760 | Finalize Requirements, Use Case, UML, and Design Document | 2007-08-08 → 2007-08-16 (+8d) | 2007-08-21 → 2007-08-29 (+8d) |  | 13d → 35d |  |
| 761 | Test Plan and RTM Updates (Task 3.6) | 2007-08-08 → 2007-08-16 (+8d) | 2007-08-28 → 2007-09-05 (+8d) |  | 18d → 40d |  |
| 762 | Finalize Code Base (Task 3.5) | 2007-08-08 → 2007-08-16 (+8d) | 2007-09-04 → 2007-09-12 (+8d) |  | 13d → 35d |  |
| 763 | Testing | 2007-08-08 → 2007-08-16 (+8d) | 2007-09-04 → 2007-09-12 (+8d) |  | 13d → 35d |  |
| 764 | Final Test Results Report (3.8) | 2007-08-29 → 2007-09-06 (+8d) | 2007-09-04 → 2007-09-12 (+8d) |  | 13d → 35d |  |
| 765 | Final Transition Phase Plan (3.16) | 2007-08-29 → 2007-09-06 (+8d) | 2007-09-04 → 2007-09-12 (+8d) |  | 13d → 35d |  |
| 766 | Compatibility Review Submission Package (Task 3.12) | 2007-08-22 → 2007-08-30 (+8d) | 2007-09-04 → 2007-09-12 (+8d) |  | 13d → 35d |  |
| 767 | Generation of CDEs (Task 3.11.2) | 2007-08-22 → 2007-08-30 (+8d) | 2007-09-04 → 2007-09-12 (+8d) |  | 13d → 35d |  |
| 768 | Final Administrators Guide (Task 3.13) | 2007-08-29 → 2007-09-06 (+8d) | 2007-09-04 → 2007-09-12 (+8d) |  | 13d → 35d |  |
| 769 | Final End Users Guide (Task 3.15.2) | 2007-08-29 → 2007-09-06 (+8d) | 2007-09-04 → 2007-09-12 (+8d) |  | 13d → 35d |  |
| 770 | Final Installation Guide (Task 3.10) | 2007-08-29 → 2007-09-06 (+8d) | 2007-09-04 → 2007-09-12 (+8d) |  | 13d → 35d |  |
| 771 | Release Notes (Task 3.14) | 2007-08-29 → 2007-09-06 (+8d) | 2007-09-04 → 2007-09-12 (+8d) |  | 13d → 35d |  |
| 772 | Finish Iteration 7 | 2007-09-04 → 2007-09-12 (+8d) | 2007-09-04 → 2007-09-12 (+8d) |  |  |  |
| 773 | Iteration 7 Review and Feedback | 2007-09-03 → 2007-09-11 (+8d) | 2007-09-07 → 2007-09-17 (+10d) |  |  |  |
| 774 | Finish Construction Phase | 2007-09-07 → 2007-09-17 (+10d) | 2007-09-07 → 2007-09-17 (+10d) |  |  |  |
| 775 | **Transition Phase** | 2007-09-10 → 2007-09-18 (+8d) | 2007-10-19 → 2007-10-31 (+12d) | 30d → 32d |  |  |
| 776 | Deployment Plan (Task 4.1) | 2007-09-10 → 2007-09-18 (+8d) | 2007-09-11 → 2007-09-19 (+8d) |  | 18d → 0d |  |
| 777 | Deployment | 2007-09-12 → 2007-09-20 (+8d) | 2007-09-25 → 2007-10-03 (+8d) |  | 18d → 0d |  |

| ID | Task | Start | Finish | Duration | Total float | Predecessors |
| --- | --- | --- | --- | --- | --- | --- |
| 778 | Deployment Report (Task 4.2) | 2007-09-10 → 2007-09-18 (+8d) | 2007-09-10 → 2007-09-18 (+8d) |  | 9d → 31d |  |
| 779 | Code Release Updates (if needed) (Task 4.3) | 2007-09-10 → 2007-10-04 (+24d) | 2007-10-19 → 2007-10-31 (+12d) | 30d → 20d |  | none → 777 |
| 780 | Guide Updates (if needed) | 2007-09-10 → 2007-09-18 (+8d) | 2007-09-21 → 2007-10-01 (+10d) |  | 20d → 22d |  |
| 781 | **Project Closing Activities** | 2007-09-10 → 2007-09-18 (+8d) | 2007-09-21 → 2007-10-01 (+10d) |  | 20d → 22d |  |
| 782 | Lessons Learned (Task 1.6) | 2007-09-10 → 2007-09-18 (+8d) | 2007-09-21 → 2007-10-01 (+10d) |  | 20d → 22d |  |
| 783 | Archiving | 2007-09-10 → 2007-09-18 (+8d) | 2007-09-21 → 2007-10-01 (+10d) |  | 20d → 22d |  |
| 784 | Contract Closeout | 2007-09-10 → 2007-09-18 (+8d) | 2007-09-21 → 2007-10-01 (+10d) |  | 20d → 22d |  |

## Version 5 (saved 2007-03-20)

Note of the change: SVN-Revision: 936

Last finish 2007-10-31 → 2007-10-16 (-15d). Complete tasks 273 → 297.

Added:

| ID | Task | Duration | Start | Finish | Predecessors | Constraint | Resources |
| --- | --- | --- | --- | --- | --- | --- | --- |
| 403 | **Testing (Iter-1)** | 26d | 2007-02-14 A | 2007-03-21 |  |  |  |
| 408 | **Run Tests** | 18d | 2007-02-26 A | 2007-03-21 |  |  |  |
| 452 | **Requirement Gathering/Elucidation Meetings** | 5d | 2007-03-01 A | 2007-03-07 |  |  |  |
| 453 | CTEP | 5d | 2007-03-01 A | 2007-03-07 |  |  |  |
| 454 | DCP | 5d | 2007-03-01 A | 2007-03-07 |  |  |  |
| 455 | MedDRA | 1d | 2007-03-01 A | 2007-03-01 |  |  |  |
| 456 | Diseases | 1d | 2007-03-01 A | 2007-03-01 |  |  |  |
| 507 | Domain Analysis Model/BRIDG Harmonization | 5d | 2007-03-12 A | 2007-03-16 | 506 |  | Sean |
| 508 | **Semantic Interoperability** | 6d | 2007-03-16 A | 2007-03-23 |  |  |  |
| 509 | Begin process of matching to existing CDEs | 5d | 2007-03-16 A | 2007-03-22 | 506 | start no earlier than 2007-03-16 | Sean |
| 510 | Meeting with VCDE | 1d | 2007-03-23 | 2007-03-23 | 509 | start no earlier than 2007-03-23 | Sean; Lynne W.; Brian D; Brenda M. |
| 514 | **Bug Fixes** | 6d | 2007-03-01 A | 2007-03-08 |  |  |  |
| 515 | Review and assignment of Bugs from prior iteration | 1d | 2007-03-01 A | 2007-03-01 A |  |  |  |
| 516 | Bug Fixes | 5d | 2007-03-02 A | 2007-03-08 | 515 |  |  |
| 559 | Submit Test Results Report (Task 3.8) | 0d | 2007-04-06 | 2007-04-06 | 558 |  | Edmond |
| 561 | **Documentation (Iter-2)** | 17d | 2007-03-22 | 2007-04-13 |  |  |  |
| 562 | **Installation Guide** | 13d | 2007-03-22 | 2007-04-09 |  |  |  |
| 564 | Submit to BAH/Adopters | 0d | 2007-03-26 | 2007-03-26 | 563 |  | BAH |
| 565 | Review of Installation Guide | 10d | 2007-03-27 | 2007-04-09 | 564 |  | BAH; Adopters; Mentors |
| 566 | **Administrators Guide** | 15d | 2007-03-26 | 2007-04-13 |  |  |  |
| 567 | Update Administrators Guide | 5d | 2007-03-26 | 2007-03-30 | 579FS-7d, 511FS-5d |  |  |
| 568 | Submit to BAH | 0d | 2007-03-30 | 2007-03-30 | 567 |  | BAH |
| 569 | Review of Admin Guide | 10d | 2007-04-02 | 2007-04-13 | 568 |  | BAH; Adopters; Mentors |
| 570 | **Release Notes** | 11d | 2007-03-26 | 2007-04-09 |  |  |  |
| 571 | Update Release Notes | 1d | 2007-03-26 | 2007-03-26 | 579FS-7d, 511FS-5d |  | Edmond |
| 572 | Submit to BAH | 0d | 2007-03-26 | 2007-03-26 | 571 |  | BAH |
| 573 | Review of Release Notes | 10d | 2007-03-27 | 2007-04-09 | 572 |  | BAH; Adopters; Mentors |
| 613 | **Requirements Gathering and Elucidation** | 2d | 2007-04-02 | 2007-04-03 |  |  |  |
| 614 | DCP Reqts (Continued) | 2d | 2007-04-02 | 2007-04-03 |  |  | Sean; DCP |
| 615 | MedDRA | 2d | 2007-04-02 | 2007-04-03 |  |  | Sean |
| 616 | Triggers/Notification | 2d | 2007-04-02 | 2007-04-03 |  |  | Sean; Ann; DCP |
| 617 | Report Requirements | 2d | 2007-04-02 | 2007-04-03 |  |  | Sean; Ann; DCP |
| 648 | **Solicited AE** | 1d | 2007-04-02 | 2007-04-02 |  |  |  |
| 653 | **Triggers and Notifications (cont'd)** | 17d | 2007-04-02 | 2007-04-24 |  |  |  |
| 658 | **Reports: Create Report Form** | 17d | 2007-04-02 | 2007-04-24 |  |  |  |
| 659 | Develop appropriate UML Artifacts | 5d | 2007-04-02 | 2007-04-06 |  |  |  |
| 660 | Create Design Document | 5d | 2007-04-09 | 2007-04-13 | 659 |  |  |
| 661 | Adopters/Collaborators Review | 5d | 2007-04-16 | 2007-04-20 | 660 |  |  |
| 662 | Developers Update | 2d | 2007-04-23 | 2007-04-24 | 661 |  |  |
| 663 | **Role Based Authorization (cont'd)** | 1d | 2007-04-02 | 2007-04-02 |  |  |  |
| 664 | Develop appropriate UML Artifacts | 1d | 2007-04-02 | 2007-04-02 |  |  |  |
| 665 | Create Design Document | 1d | 2007-04-02 | 2007-04-02 |  |  |  |
| 666 | Adopters/Collaborators Review | 1d | 2007-04-02 | 2007-04-02 |  |  |  |
| 667 | Developers Update | 1d | 2007-04-02 | 2007-04-02 |  |  |  |
| 672 | Update Implementation Model | 2d | 2007-04-02 | 2007-04-03 |  |  | Ram |
| 674 | Create/Update Dynamic Models (BRIDG) | 5d | 2007-04-02 | 2007-04-06 |  |  | Sean |
| 681 | **Bug Fixes** | 6d | 2007-04-02 | 2007-04-09 |  |  |  |
| 682 | Review and assignment of Bugs from prior iteration | 1d | 2007-04-02 | 2007-04-02 |  |  |  |
| 683 | Bug Fixes | 5d | 2007-04-03 | 2007-04-09 | 682 |  |  |
| 703 | **Solicted AE** | 16d | 2007-04-02 | 2007-04-23 |  |  |  |
| 704 | Implement O/R mapping | 5d | 2007-04-02 | 2007-04-06 |  |  | Kulasekaran |
| 705 | Develop DAO | 10d | 2007-04-04 | 2007-04-17 | 704SS+2d |  | Kulasekaran |
| 706 | Develop Service | 10d | 2007-04-06 | 2007-04-19 | 705SS+2d |  | Kulasekaran |
| 707 | Develop controller and command objects | 10d | 2007-04-10 | 2007-04-23 | 706SS+2d |  | Kulasekaran |
| 708 | Develop JUnit test cases | 7d | 2007-04-12 | 2007-04-20 | 707SS+2d |  | Kulasekaran |
| 709 | **Triggers and Notification (cont'd)** | 16d | 2007-04-02 | 2007-04-23 |  |  |  |
| 715 | **Reports: Create Report Form** | 16d | 2007-04-02 | 2007-04-23 |  |  |  |
| 716 | Implement O/R mapping | 5d | 2007-04-02 | 2007-04-06 |  |  | Sujith |
| 717 | Develop DAO | 10d | 2007-04-04 | 2007-04-17 | 716SS+2d |  | Sujith |
| 718 | Develop Service | 10d | 2007-04-06 | 2007-04-19 | 717SS+2d |  | Sujith |
| 719 | Develop controller and command objects | 10d | 2007-04-10 | 2007-04-23 | 718SS+2d |  | Sujith |
| 720 | Develop JUnit test cases | 7d | 2007-04-12 | 2007-04-20 | 719SS+2d |  | Sujith |
| 721 | **Data Exchange: Import Data (cont'd)** | 16d | 2007-04-02 | 2007-04-23 |  |  |  |
| 722 | Implement O/R mapping | 5d | 2007-04-02 | 2007-04-06 |  |  | Krikor |
| 723 | Develop DAO | 10d | 2007-04-04 | 2007-04-17 | 722SS+2d |  | Krikor |
| 724 | Develop Service | 10d | 2007-04-06 | 2007-04-19 | 723SS+2d |  | Krikor |
| 725 | Develop controller and command objects | 10d | 2007-04-10 | 2007-04-23 | 724SS+2d |  | Krikor |
| 726 | Develop JUnit test cases | 7d | 2007-04-12 | 2007-04-20 | 725SS+2d |  | Krikor |
| 728 | **Update Test Plan** | 20d | 2007-04-02 | 2007-04-27 |  |  |  |
| 736 | **Documentation (Iter-3)** | 17d | 2007-04-16 | 2007-05-08 |  |  |  |
| 737 | **Installation Guide** | 13d | 2007-04-20 | 2007-05-08 |  |  |  |
| 739 | Submit to BAH/Adopters | 0d | 2007-04-24 | 2007-04-24 | 738 |  | Edmond |
| 740 | Review of Installation Guide | 10d | 2007-04-25 | 2007-05-08 | 739 |  | BAH; NCI; Mayo; WF |
| 741 | **Administrators Guide** | 17d | 2007-04-16 | 2007-05-08 |  |  |  |
| 742 | Update Administrators Guide | 7d | 2007-04-16 | 2007-04-24 |  | start no earlier than 2007-04-16 |  |
| 743 | Submit to BAH | 0d | 2007-04-24 | 2007-04-24 | 742 |  | Edmond |
| 744 | Review of Admin Guide | 10d | 2007-04-25 | 2007-05-08 | 743 |  | BAH; NCI; Mayo; WF |
| 745 | **Release Notes** | 12d | 2007-04-23 | 2007-05-08 |  |  |  |
| 746 | Update Release Notes | 2d | 2007-04-23 | 2007-04-24 |  | start no earlier than 2007-04-23 | Edmond |
| 747 | Submit to BAH | 0d | 2007-04-24 | 2007-04-24 | 746 |  | Edmond |
| 748 | Review of Release Notes | 10d | 2007-04-25 | 2007-05-08 | 747 |  | BAH; NCI; Mayo; WF |
| 756 | **Iteration Planning (Iter-4)** | 2d | 2007-05-01 | 2007-05-02 |  |  |  |
| 757 | Review and finalize Ucases and Work List for Iteration | 1d | 2007-05-01 | 2007-05-01 | 755 |  | Edmond; Ram; Vinay |
| 758 | Review and finalize assignments for Iteration | 1d | 2007-05-02 | 2007-05-02 | 757 |  | Edmond; Ram; Vinay |
| 759 | **Project Management (Iter-4)** | 21d | 2007-05-03 | 2007-05-31 |  |  |  |
| 760 | Update Project Plan | 3d | 2007-05-03 | 2007-05-07 | 758 |  | Edmond |
| 761 | **CaAERS CCB (Task 2.10)** | 1d | 2007-05-07 | 2007-05-07 |  |  |  |
| 762 | CCB Meetings | 1d | 2007-05-07 | 2007-05-07 |  | must start on 2007-05-07 | Edmond |
| 763 | **Weekly Team Meeting** | 16d | 2007-05-07 | 2007-05-28 |  |  |  |
| 764 | Weekly Team Meeting 1 | 1d | 2007-05-07 | 2007-05-07 |  | start no earlier than 2007-05-07 |  |
| 765 | Weekly Team Meeting 2 | 1d | 2007-05-14 | 2007-05-14 |  | start no earlier than 2007-05-14 |  |
| 766 | Weekly Team Meeting 3 | 1d | 2007-05-21 | 2007-05-21 |  | start no earlier than 2007-05-21 |  |
| 767 | Weekly Team Meeting 4 | 1d | 2007-05-28 | 2007-05-28 |  | start no earlier than 2007-05-28 |  |
| 768 | **Status and Risk Reporting** | 20d | 2007-05-04 | 2007-05-31 |  |  |  |
| 769 | Bi-weekly Risk Update in caMP (Task 1.4) | 1d | 2007-05-04 | 2007-05-04 |  | start no earlier than 2007-05-04 | Edmond |
| 770 | Bi-weekly Risk Matrix Update Meeting | 1d | 2007-05-04 | 2007-05-04 |  | start no earlier than 2007-05-04 | Edmond |
| 771 | Bi-weekly Risk Update in caMP (Task 1.4) | 1d | 2007-05-18 | 2007-05-18 |  | start no earlier than 2007-05-18 | Edmond |
| 772 | Bi-weekly Risk Matrix Update Meeting | 1d | 2007-05-18 | 2007-05-18 |  | start no earlier than 2007-05-18 | Edmond |
| 773 | Bi-weekly Status Update Meeting with BAH/NCI | 1d | 2007-05-11 | 2007-05-11 |  | start no earlier than 2007-05-11 | Edmond |
| 774 | Bi-weekly Status Update Meeting with BAH/NCI | 1d | 2007-05-25 | 2007-05-25 |  | start no earlier than 2007-05-25 | Edmond |
| 775 | Monthly Status Report (Task 1.3) | 1d | 2007-05-31 | 2007-05-31 |  | must finish on 2007-05-31 | Edmond |
| 776 | Monthly Risk Matrix Update (Task 1.3) | 1d | 2007-05-31 | 2007-05-31 | 775SS |  | Edmond |
| 777 | **Collaboration Management Activities** | 21d | 2007-05-03 | 2007-05-31 |  |  |  |
| 778 | Adopters Mtg | 1d | 2007-05-03 | 2007-05-03 |  | start no earlier than 2007-05-03 | Edmond |
| 779 | Bi-Weekly AE SIG Meeting | 1d | 2007-05-10 | 2007-05-10 |  | start no earlier than 2007-05-10 | Edmond |
| 780 | Adopters Mtg | 1d | 2007-05-18 | 2007-05-18 |  | start no earlier than 2007-05-18 | Edmond |
| 781 | Bi-Weekly AE SIG Meeting | 1d | 2007-05-25 | 2007-05-25 |  | start no earlier than 2007-05-25 | Edmond |
| 782 | Adopters Colloboration Report | 0d | 2007-05-31 | 2007-05-31 |  | must finish on 2007-05-31 |  |
| 783 | **Environment (Iter-4)** | 3d | 2007-05-03 | 2007-05-07 |  |  |  |
| 784 | Update Environment | 3d | 2007-05-03 | 2007-05-07 | 758 |  | Vinay |
| 785 | **SCM (Iter-4)** | 5d | 2007-05-03 | 2007-05-09 |  |  |  |
| 786 | Manage Repository | 5d | 2007-05-03 | 2007-05-09 | 758 |  | Rhett |
| 787 | **Requirements (Iter-4)** | 30d | 2007-05-03 | 2007-06-13 | 758 |  |  |
| 788 | **Requirements Gathering and Elucidation** | 2d | 2007-05-03 | 2007-05-04 |  |  |  |
| 789 | DCP Reqts (Continued) | 2d | 2007-05-03 | 2007-05-04 |  |  | Sean |
| 790 | MedDRA | 2d | 2007-05-03 | 2007-05-04 |  |  | Sean |
| 791 | Triggers/Notification | 2d | 2007-05-03 | 2007-05-04 |  |  | Sean |
| 792 | **Updated Use Case Specification and Realization** | 30d | 2007-05-03 | 2007-06-13 |  |  |  |
| 793 | Developer draft | 5d | 2007-05-03 | 2007-05-09 |  |  | Sean |
| 794 | Adopters/Collobators Review | 5d | 2007-05-10 | 2007-05-16 | 793 |  | Mayo; WF |
| 795 | Update Use Case Document | 5d | 2007-05-17 | 2007-05-23 | 794 |  | Sean |
| 796 | Submit Updated Use Case Document to BAH (Task 3.1) | 0d | 2007-05-23 | 2007-05-23 | 795 |  | Edmond |
| 797 | Formal Review of Updated Use Case Document | 15d | 2007-05-24 | 2007-06-13 | 796 |  | BAH |
| 798 | **Updated SRS Document** | 30d | 2007-05-03 | 2007-06-13 |  |  |  |
| 799 | Developer draft | 5d | 2007-05-03 | 2007-05-09 |  |  | Sean |
| 800 | Adopters/Collobators Review | 5d | 2007-05-10 | 2007-05-16 | 799 |  | Mayo; WF |
| 801 | Update SRS | 5d | 2007-05-17 | 2007-05-23 | 800 |  | Sean |
| 802 | Submit Updated SRS Document to BAH (Task 3.2) | 0d | 2007-05-23 | 2007-05-23 | 801 |  | Mayo; WF |
| 803 | Formal Review of Updated SRS | 15d | 2007-05-24 | 2007-06-13 | 802 |  | BAH |
| 804 | **Updated UML Static Class Diagram Model** | 30d | 2007-05-03 | 2007-06-13 |  |  |  |
| 805 | Developer draft | 5d | 2007-05-03 | 2007-05-09 |  |  | Ram; Sean |
| 806 | Adopters/Collobators Review | 5d | 2007-05-10 | 2007-05-16 | 805 |  | Mayo; WF |
| 807 | Update UML | 5d | 2007-05-17 | 2007-05-23 | 806 |  | Sean |
| 808 | Submit UML to BAH (Task 3.3) | 0d | 2007-05-23 | 2007-05-23 | 807 |  | Edmond |
| 809 | Formal Review of UML | 15d | 2007-05-24 | 2007-06-13 | 808 |  | BAH |
| 810 | **Analysis and Design (Iter-4)** | 27d | 2007-05-07 | 2007-06-12 | 788 |  |  |
| 811 | **Design Documents** | 27d | 2007-05-07 | 2007-06-12 |  |  |  |
| 812 | **Batch AE** | 17d | 2007-05-07 | 2007-05-29 |  |  |  |
| 813 | Develop appropriate UML Artifacts | 5d | 2007-05-07 | 2007-05-11 |  |  | Krikor |
| 814 | Create Design Document | 5d | 2007-05-14 | 2007-05-18 | 813 |  | Krikor |
| 815 | Adopters/Collaborators Review | 5d | 2007-05-21 | 2007-05-25 | 814 |  | Mayo; WF |
| 816 | Developers Update | 2d | 2007-05-28 | 2007-05-29 | 815 |  | Krikor |
| 817 | **AE Data Collection (DCP)** | 17d | 2007-05-07 | 2007-05-29 |  |  |  |
| 818 | Develop appropriate UML Artifacts | 5d | 2007-05-07 | 2007-05-11 |  |  | Rhett |
| 819 | Create Design Document | 5d | 2007-05-14 | 2007-05-18 | 818 |  | Rhett |
| 820 | Adopters/Collaborators Review | 5d | 2007-05-21 | 2007-05-25 | 819 |  | Mayo; WF |
| 821 | Developers Update | 2d | 2007-05-28 | 2007-05-29 | 820 |  | Rhett |
| 822 | **Reports (cont'd)** | 9d | 2007-05-07 | 2007-05-17 |  |  |  |
| 823 | Develop appropriate UML Artifacts | 2d | 2007-05-07 | 2007-05-08 |  |  | Kulasekeran |
| 824 | Create Design Document | 2d | 2007-05-09 | 2007-05-10 | 823 |  | Kulasekeran |
| 825 | Adopters/Collaborators Review | 3d | 2007-05-11 | 2007-05-15 | 824 |  |  |
| 826 | Developers Update | 2d | 2007-05-16 | 2007-05-17 | 825 |  | Kulasekeran |
| 827 | **AE Notification Trigger (cont'd)** | 17d | 2007-05-07 | 2007-05-29 |  |  |  |
| 828 | Develop appropriate UML Artifacts | 5d | 2007-05-07 | 2007-05-11 |  |  | Sujith |
| 829 | Create Design Document | 5d | 2007-05-14 | 2007-05-18 | 828 |  | Sujith |
| 830 | Adopters/Collaborators Review | 5d | 2007-05-21 | 2007-05-25 | 829 |  | Mayo; WF |
| 831 | Developers Update | 2d | 2007-05-28 | 2007-05-29 | 830 |  | Sujith |
| 832 | Deliver Design document to BAH (Task 3.4) | 0d | 2007-05-29 | 2007-05-29 | 816, 821, 826, 831 |  | Edmond |
| 833 | Deliver UML to BAH (Task 3.3) | 0d | 2007-05-29 | 2007-05-29 | 816, 821, 826, 831 |  | Edmond |
| 834 | Formal Review by BAH | 10d | 2007-05-30 | 2007-06-12 | 833 |  | BAH |
| 835 | **Modeling** | 5d | 2007-05-07 | 2007-05-11 |  |  |  |
| 836 | Update Implementation Model | 2d | 2007-05-07 | 2007-05-08 |  |  | Ram |
| 837 | Update Domain Analysis Model/BRIDG Harmonization | 5d | 2007-05-07 | 2007-05-11 |  |  | Sean |
| 838 | Create/Update Dynamic Models (BRIDG) | 5d | 2007-05-07 | 2007-05-11 |  |  | Sean |
| 839 | **Semantic Interoperability** | 6d | 2007-05-07 | 2007-05-14 |  |  |  |
| 840 | CDE Gap Analysis/Report | 5d | 2007-05-07 | 2007-05-11 |  |  | Sean |
| 841 | Meeting with VCDE | 1d | 2007-05-14 | 2007-05-14 | 840 |  | Sean; Brian D; Lynne W; Brenda M |
| 842 | **Implementation (Iter-4)** | 16d | 2007-05-07 | 2007-05-28 | 788 |  |  |
| 843 | **Web interface** | 5d | 2007-05-07 | 2007-05-11 |  |  |  |
| 844 | UI Refinement | 5d | 2007-05-07 | 2007-05-11 |  |  | Richard |
| 845 | **Bug Fixes** | 6d | 2007-05-07 | 2007-05-14 |  |  |  |
| 846 | Review and assignment of Bugs from prior iteration | 1d | 2007-05-07 | 2007-05-07 |  |  |  |
| 847 | Bug Fixes | 5d | 2007-05-08 | 2007-05-14 | 846 |  |  |
| 848 | **Implement Use Cases** | 16d | 2007-05-07 | 2007-05-28 |  |  |  |
| 849 | **Batch AE Entry Screens and Baseline Grading** | 16d | 2007-05-07 | 2007-05-28 |  |  |  |
| 850 | Implement O/R mapping | 5d | 2007-05-07 | 2007-05-11 |  |  | Rhett |
| 851 | Develop DAO | 10d | 2007-05-09 | 2007-05-22 | 850SS+2d |  | Rhett |
| 852 | Develop Service | 10d | 2007-05-11 | 2007-05-24 | 851SS+2d |  | Rhett |
| 853 | Develop controller and command objects | 10d | 2007-05-15 | 2007-05-28 | 852SS+2d |  | Rhett |
| 854 | Develop JUnit test cases | 7d | 2007-05-17 | 2007-05-25 | 853SS+2d |  | Rhett |
| 855 | **DCP AE Data Capture Workflow (cont'd)** | 16d | 2007-05-07 | 2007-05-28 |  |  |  |
| 856 | Implement O/R mapping | 5d | 2007-05-07 | 2007-05-11 |  |  | Rhett |
| 857 | Develop DAO | 10d | 2007-05-09 | 2007-05-22 | 856SS+2d |  | Rhett |
| 858 | Develop Service | 10d | 2007-05-11 | 2007-05-24 | 857SS+2d |  | Rhett |
| 859 | Develop controller and command objects | 10d | 2007-05-15 | 2007-05-28 | 858SS+2d |  | Rhett |
| 860 | Develop JUnit test cases | 7d | 2007-05-17 | 2007-05-25 | 859SS+2d |  | Rhett |
| 862 | Implement O/R mapping | 5d | 2007-05-07 | 2007-05-11 |  |  | Sujith |
| 863 | Develop DAO | 10d | 2007-05-09 | 2007-05-22 | 862SS+2d |  | Sujith |
| 864 | Develop Service | 10d | 2007-05-11 | 2007-05-24 | 863SS+2d |  | Sujith |
| 865 | Develop controller and command objects | 10d | 2007-05-15 | 2007-05-28 | 864SS+2d |  | Sujith |
| 866 | Develop JUnit test cases | 7d | 2007-05-17 | 2007-05-25 | 865SS+2d |  | Sujith |
| 867 | **Reports: Generate Report Form** | 16d | 2007-05-07 | 2007-05-28 |  |  |  |
| 868 | Implement O/R mapping | 5d | 2007-05-07 | 2007-05-11 |  |  | Sujith |
| 869 | Develop DAO | 10d | 2007-05-09 | 2007-05-22 | 868SS+2d |  | Sujith |
| 870 | Develop Service | 10d | 2007-05-11 | 2007-05-24 | 869SS+2d |  | Sujith |
| 871 | Develop controller and command objects | 10d | 2007-05-15 | 2007-05-28 | 870SS+2d |  | Sujith |
| 872 | Develop JUnit test cases | 7d | 2007-05-17 | 2007-05-25 | 871SS+2d |  | Sujith |
| 873 | Data Exchange: Exporting Data | 10d | 2007-05-07 | 2007-05-18 |  |  | Krikor |
| 874 | Data Push to AdEERS | 10d | 2007-05-07 | 2007-05-18 |  |  | Krikor |
| 875 | **Documentation (Iter-4)** | 25d | 2007-05-07 | 2007-06-08 | 788 |  |  |
| 876 | **Installation Guide** | 15d | 2007-05-21 | 2007-06-08 |  |  |  |
| 877 | Update Installation Guide | 5d | 2007-05-21 | 2007-05-25 |  | start no earlier than 2007-05-21 |  |
| 878 | Submit to BAH/Adopters | 0d | 2007-05-25 | 2007-05-25 | 877 |  | Edmond |
| 879 | Review of Installation Guide | 10d | 2007-05-28 | 2007-06-08 | 878 |  | BAH; NCI; Mayo; WF |
| 880 | **Administrators Guide** | 15d | 2007-05-07 | 2007-05-25 |  |  |  |
| 881 | Update Administrators Guide | 5d | 2007-05-07 | 2007-05-11 |  |  |  |
| 882 | Submit to BAH | 0d | 2007-05-11 | 2007-05-11 | 881 |  | Edmond |
| 883 | Review of Admin Guide | 10d | 2007-05-14 | 2007-05-25 | 882 |  | BAH; NCI; Mayo; WF |
| 884 | **Release Notes** | 12d | 2007-05-07 | 2007-05-22 |  |  |  |
| 885 | Update Release Notes | 2d | 2007-05-07 | 2007-05-08 |  |  |  |
| 886 | Submit to BAH | 0d | 2007-05-08 | 2007-05-08 | 885 |  |  |
| 887 | Review of Release Notes | 10d | 2007-05-09 | 2007-05-22 | 886 |  |  |
| 889 | Create Draft of End User Guide | 5d | 2007-05-25 | 2007-05-31 |  |  |  |
| 890 | **Testing (Iter-4)** | 20d | 2007-05-07 | 2007-06-01 | 788 |  |  |
| 892 | Update Test Plan Document (Task 3.6) | 5d | 2007-05-07 | 2007-05-11 |  |  | Ram |
| 893 | Submit to BAH | 0d | 2007-05-11 | 2007-05-11 | 892 |  | Edmond |
| 894 | Formal Review by BAH | 10d | 2007-05-14 | 2007-05-25 | 893 |  | BAH |
| 897 | **Run Tests** | 20d | 2007-05-07 | 2007-06-01 |  |  |  |
| 900 | Formal Review of Test results Report | 10d | 2007-05-21 | 2007-06-01 | 899 |  | BAH |
| 901 | **Deployment (Iter-4)** | 10d | 2007-05-28 | 2007-06-11 | 842 |  |  |
| 902 | Submit prototype code (Task 3.5) | 0d | 2007-05-28 | 2007-05-28 |  |  | Ram |
| 903 | Formal Review of Code by BAH | 10d | 2007-05-29 | 2007-06-11 | 902 |  | BAH |
| 904 | Deploy Prototype for Iteration 1 at Mayo and WF | 1d | 2007-05-29 | 2007-05-29 |  |  | Vinay; Mayo; WF |
| 908 | **Iteration Planning (Iter-5)** | 2d | 2007-06-01 | 2007-06-04 |  |  |  |
| 909 | Review and finalize Ucases and Work List for Iteration | 1d | 2007-06-01 | 2007-06-01 | 907 |  | Edmond; Ram; Vinay |
| 910 | Review and finalize assignments for Iteration | 1d | 2007-06-04 | 2007-06-04 | 909 |  | Edmond; Ram; Vinay |
| 911 | **Project Management (Iter-5)** | 20d | 2007-06-04 | 2007-06-29 |  |  |  |
| 912 | Update Project Plan | 3d | 2007-06-05 | 2007-06-07 | 910 |  | Edmond |
| 913 | **CaAERS CCB (Task 2.10)** | 1d | 2007-06-04 | 2007-06-04 |  |  |  |
| 914 | CCB Meetings | 1d | 2007-06-04 | 2007-06-04 |  | must start on 2007-06-04 | Edmond |
| 915 | **Weekly Team Meeting** | 16d | 2007-06-04 | 2007-06-25 |  |  |  |
| 916 | Weekly Team Meeting 1 | 1d | 2007-06-04 | 2007-06-04 |  | start no earlier than 2007-06-04 |  |
| 917 | Weekly Team Meeting 2 | 1d | 2007-06-11 | 2007-06-11 |  | start no earlier than 2007-06-11 |  |
| 918 | Weekly Team Meeting 3 | 1d | 2007-06-18 | 2007-06-18 |  | start no earlier than 2007-06-18 |  |
| 919 | Weekly Team Meeting 4 | 1d | 2007-06-25 | 2007-06-25 |  | start no earlier than 2007-06-25 |  |
| 920 | **Status and Risk Reporting** | 16d | 2007-06-08 | 2007-06-29 |  |  |  |
| 921 | Bi-weekly Risk Update in caMP (Task 1.4) | 1d | 2007-06-08 | 2007-06-08 |  | start no earlier than 2007-06-08 | Edmond |
| 922 | Bi-weekly Risk Matrix Update Meeting | 1d | 2007-06-08 | 2007-06-08 |  | start no earlier than 2007-06-08 | Edmond |
| 923 | Bi-weekly Risk Update in caMP (Task 1.4) | 1d | 2007-06-22 | 2007-06-22 |  | start no earlier than 2007-06-22 | Edmond |
| 924 | Bi-weekly Risk Matrix Update Meeting | 1d | 2007-06-22 | 2007-06-22 |  | start no earlier than 2007-06-22 | Edmond |
| 925 | Bi-weekly Status Update Meeting with BAH/NCI | 1d | 2007-06-15 | 2007-06-15 |  | start no earlier than 2007-06-15 | Edmond |
| 926 | Bi-weekly Status Update Meeting with BAH/NCI | 1d | 2007-06-29 | 2007-06-29 |  | start no earlier than 2007-06-29 | Edmond |
| 927 | Monthly Status Report (Task 1.3) | 1d | 2007-06-29 | 2007-06-29 |  | start no earlier than 2007-06-29 | Edmond |
| 928 | Monthly Risk Matrix Update (Task 1.3) | 1d | 2007-06-29 | 2007-06-29 | 927SS | start no earlier than 2007-06-29 | Edmond |
| 929 | **Collaboration Management Activities** | 16d | 2007-06-07 | 2007-06-28 |  |  |  |
| 930 | Adopters Mtg | 1d | 2007-06-07 | 2007-06-07 |  | start no earlier than 2007-06-07 | Edmond |
| 931 | Bi-Weekly AE SIG Meeting | 1d | 2007-06-14 | 2007-06-14 |  | start no earlier than 2007-06-14 | Edmond |
| 932 | Adopters Mtg | 1d | 2007-06-21 | 2007-06-21 |  | start no earlier than 2007-06-21 | Edmond |
| 933 | Bi-Weekly AE SIG Meeting | 1d | 2007-06-28 | 2007-06-28 |  | start no earlier than 2007-06-28 | Edmond |
| 934 | **Environment (Iter-5)** | 3d | 2007-06-05 | 2007-06-07 |  |  |  |
| 935 | Update Environment | 3d | 2007-06-05 | 2007-06-07 | 910 |  | Vinay |
| 936 | **SCM (Iter-5)** | 5d | 2007-06-05 | 2007-06-11 |  |  |  |
| 937 | Manage Repository | 5d | 2007-06-05 | 2007-06-11 | 910 |  | Rhett |
| 938 | **Requirements (Iter-5)** | 21d | 2007-06-05 | 2007-07-03 | 910 |  |  |
| 939 | **Requirements Gathering and Elucidation** | 1d | 2007-06-05 | 2007-06-05 |  |  |  |
| 940 | DCP Reqts (Continued) | 1d | 2007-06-05 | 2007-06-05 |  |  |  |
| 941 | Triggers | 1d | 2007-06-05 | 2007-06-05 |  |  |  |
| 942 | Reports | 1d | 2007-06-05 | 2007-06-05 |  |  |  |
| 943 | **Updated Use Case Specification and Realization** | 21d | 2007-06-05 | 2007-07-03 |  |  |  |
| 944 | Developer draft | 4d | 2007-06-05 | 2007-06-08 |  |  | Sean |
| 945 | Adopters/Collobators Review | 5d | 2007-06-11 | 2007-06-15 | 944 |  | Mayo; WF |
| 946 | Update Use Case Document | 2d | 2007-06-18 | 2007-06-19 | 945 |  | Sean |
| 947 | Submit Updated Use Case Document to BAH (Task 3.1) | 0d | 2007-06-19 | 2007-06-19 | 946 |  | Edmond |
| 948 | Formal Review of Updated Use Case Document | 10d | 2007-06-20 | 2007-07-03 | 947 |  | BAH |
| 949 | **Updated SRS Document** | 21d | 2007-06-05 | 2007-07-03 |  |  |  |
| 950 | Developer draft | 4d | 2007-06-05 | 2007-06-08 |  |  | Sean |
| 951 | Adopters/Collobators Review | 5d | 2007-06-11 | 2007-06-15 | 950 |  | Mayo; WF |
| 952 | Update SRS | 2d | 2007-06-18 | 2007-06-19 | 951 |  | Sean |
| 953 | Submit Updated SRS Document to BAH (Task 3.2) | 0d | 2007-06-19 | 2007-06-19 | 952 |  | Mayo; WF |
| 954 | Formal Review of Updated SRS | 10d | 2007-06-20 | 2007-07-03 | 953 |  | BAH |
| 955 | **Updated UML Static Class Diagram Model** | 19d | 2007-06-05 | 2007-06-29 |  |  |  |
| 956 | Developer draft | 2d | 2007-06-05 | 2007-06-06 |  |  | Ram; Sean |
| 957 | Adopters/Collobators Review | 5d | 2007-06-07 | 2007-06-13 | 956 |  | Mayo; WF |
| 958 | Update UML | 2d | 2007-06-14 | 2007-06-15 | 957 |  | Sean |
| 959 | Submit UML to BAH (Task 3.3) | 0d | 2007-06-15 | 2007-06-15 | 958 |  | Edmond |
| 960 | Formal Review of UML | 10d | 2007-06-18 | 2007-06-29 | 959 |  | BAH |
| 961 | **Analysis and Design (Iter-5)** | 22d | 2007-06-05 | 2007-07-04 | 910 |  |  |
| 962 | **Design Documents** | 22d | 2007-06-05 | 2007-07-04 |  |  |  |
| 963 | **Exporting Data** | 9d | 2007-06-05 | 2007-06-15 |  |  |  |
| 964 | Develop appropriate UML Artifacts | 3d | 2007-06-05 | 2007-06-07 | 910 |  | Krikor |
| 965 | Create Design Document | 2d | 2007-06-08 | 2007-06-11 | 964 |  | Krikor |
| 966 | Adopters/Collaborators Review | 3d | 2007-06-12 | 2007-06-14 | 965 |  | Mayo; WF |
| 967 | Developers Update | 1d | 2007-06-15 | 2007-06-15 | 966 |  | Krikor |
| 968 | **Batch AE (cont'd)** | 9d | 2007-06-05 | 2007-06-15 |  |  |  |
| 969 | Develop appropriate UML Artifacts | 3d | 2007-06-05 | 2007-06-07 | 910 |  | Rhett |
| 970 | Create Design Document | 2d | 2007-06-08 | 2007-06-11 | 969 |  | Rhett |
| 971 | Adopters/Collaborators Review | 3d | 2007-06-12 | 2007-06-14 | 970 |  | Mayo; WF |
| 972 | Developers Update | 1d | 2007-06-15 | 2007-06-15 | 971 |  | Rhett |
| 973 | **Reports (cont'd)** | 9d | 2007-06-05 | 2007-06-15 |  |  |  |
| 974 | Develop appropriate UML Artifacts | 3d | 2007-06-05 | 2007-06-07 | 910 |  | Kulasekeran |
| 975 | Create Design Document | 2d | 2007-06-08 | 2007-06-11 | 974 |  | Kulasekeran |
| 976 | Adopters/Collaborators Review | 3d | 2007-06-12 | 2007-06-14 | 975 |  | Mayo; WF |
| 977 | Developers Update | 1d | 2007-06-15 | 2007-06-15 | 976 |  | Kulasekeran |
| 979 | Develop appropriate UML Artifacts | 4d | 2007-06-05 | 2007-06-08 | 910 |  | Sujith |
| 980 | Create Design Document | 2d | 2007-06-11 | 2007-06-12 | 979 |  | Sujith |
| 981 | Adopters/Collaborators Review | 5d | 2007-06-13 | 2007-06-19 | 980 |  | Mayo; WF |
| 982 | Developers Update | 1d | 2007-06-20 | 2007-06-20 | 981 |  | Sujith |
| 983 | Deliver Design document to BAH (Task 3.4) | 0d | 2007-06-20 | 2007-06-20 | 967, 972, 977, 982 |  | Edmond |
| 984 | Deliver UML to BAH (Task 3.3) | 0d | 2007-06-20 | 2007-06-20 | 967, 972, 977, 982 |  | Edmond |
| 985 | Formal Review by BAH | 10d | 2007-06-21 | 2007-07-04 | 984 |  | BAH; Mayo; WF |
| 986 | **Modeling/BRIDG** | 3d | 2007-06-05 | 2007-06-07 |  |  |  |
| 987 | Update Implementation Model | 2d | 2007-06-05 | 2007-06-06 |  |  | Ram |
| 988 | Update Domain Analysis Model/BRIDG Harmonization | 3d | 2007-06-05 | 2007-06-07 |  |  | Sean |
| 989 | Update Dynamic Models (BRIDG) | 3d | 2007-06-05 | 2007-06-07 |  |  | Sean |
| 990 | **Semantic Integration** | 6d | 2007-06-05 | 2007-06-12 |  |  |  |
| 991 | CDE Gap Analysis/Report | 5d | 2007-06-05 | 2007-06-11 |  |  | Sean |
| 992 | Meeting with VCDE | 1d | 2007-06-12 | 2007-06-12 | 991 |  | Sean; Brian D; Lynne W; Brenda M |
| 993 | **Implementation (Iter-5)** | 19d | 2007-06-05 | 2007-06-29 | 910 |  |  |
| 994 | **Web interface** | 5d | 2007-06-05 | 2007-06-11 |  |  |  |
| 995 | UI Refinement | 5d | 2007-06-05 | 2007-06-11 |  |  | Richard |
| 996 | **Bug Fixes** | 6d | 2007-06-05 | 2007-06-12 |  |  |  |
| 997 | Review and assignment of Bugs from prior iteration | 1d | 2007-06-05 | 2007-06-05 |  |  |  |
| 998 | Bug Fixes | 5d | 2007-06-06 | 2007-06-12 | 997 |  |  |
| 999 | **Implement Use Cases** | 19d | 2007-06-05 | 2007-06-29 |  |  |  |
| 1000 | Import (cont'd) | 10d | 2007-06-05 | 2007-06-18 |  |  |  |
| 1001 | Export Data to Local CTMS | 15d | 2007-06-05 | 2007-06-25 |  |  |  |
| 1002 | Pushing data to AdEERS (cont'd) | 15d | 2007-06-05 | 2007-06-25 |  |  |  |
| 1003 | Batch AE Entry and Baseline Assignments(cont'd) | 15d | 2007-06-05 | 2007-06-25 |  |  |  |
| 1004 | Process Report | 17d | 2007-06-05 | 2007-06-27 |  |  |  |
| 1005 | LOV Maintenance Screens/Functionality | 10d | 2007-06-05 | 2007-06-18 |  |  |  |
| 1006 | System Admin (cont'd) | 19d | 2007-06-05 | 2007-06-29 |  |  |  |
| 1007 | **Documentation (Iter-5)** | 26d | 2007-06-05 | 2007-07-10 | 910 |  |  |
| 1008 | **Installation Guide** | 15d | 2007-06-20 | 2007-07-10 |  |  |  |
| 1009 | Update Installation Guide | 5d | 2007-06-20 | 2007-06-26 |  | start no earlier than 2007-06-20 |  |
| 1010 | Submit to BAH/Adopters | 0d | 2007-06-26 | 2007-06-26 | 1009 |  | Edmond |
| 1011 | Review of Installation Guide | 10d | 2007-06-27 | 2007-07-10 | 1010 |  | BAH; NCI; Mayo; WF |
| 1012 | **Administrators Guide** | 15d | 2007-06-05 | 2007-06-25 |  |  |  |
| 1013 | Update Administrators Guide | 5d | 2007-06-05 | 2007-06-11 |  |  |  |
| 1014 | Submit to BAH | 0d | 2007-06-11 | 2007-06-11 | 1013 |  | Edmond |
| 1015 | Review of Admin Guide | 10d | 2007-06-12 | 2007-06-25 | 1014 |  | BAH; NCI; Mayo; WF |
| 1016 | **Release Notes** | 12d | 2007-06-25 | 2007-07-10 |  |  |  |
| 1017 | Update Release Notes | 2d | 2007-06-25 | 2007-06-26 |  | start no earlier than 2007-06-25 | Edmond |
| 1018 | Submit to BAH | 0d | 2007-06-26 | 2007-06-26 | 1017 |  | Edmond |
| 1019 | Review of Release Notes | 10d | 2007-06-27 | 2007-07-10 | 1018 |  | BAH; NCI; Mayo; WF |
| 1020 | **End User Guide Draft** | 15d | 2007-06-05 | 2007-06-25 |  |  |  |
| 1021 | Create Draft of End User Guide | 15d | 2007-06-05 | 2007-06-25 |  |  |  |
| 1022 | **Testing (Iter-5)** | 20d | 2007-06-05 | 2007-07-02 | 910 |  |  |
| 1023 | **Test Plan** | 15d | 2007-06-05 | 2007-06-25 |  |  |  |
| 1024 | Update Test Plan Document (Task 3.6) | 5d | 2007-06-05 | 2007-06-11 |  |  | Ram |
| 1025 | Submit to BAH | 0d | 2007-06-11 | 2007-06-11 | 1024 |  | Edmond |
| 1026 | Formal Review by BAH | 10d | 2007-06-12 | 2007-06-25 | 1025 |  | BAH; NCI; Mayo; WF |
| 1027 | **RTM** | 5d | 2007-06-05 | 2007-06-11 |  |  |  |
| 1028 | Update RTM | 5d | 2007-06-05 | 2007-06-11 |  |  | Sean |
| 1031 | Submit Test Results Report (Task 3.8) | 0d | 2007-06-18 | 2007-06-18 | 1030 |  | Edmond |
| 1032 | Formal Review of Test results Report | 10d | 2007-06-19 | 2007-07-02 | 1031 |  | BAH |
| 1033 | **BRIDG Review (Begin)** | 5d | 2007-06-08 | 2007-06-14 | 986 |  |  |
| 1034 | Harmonization with BRIDG Model (Review) | 5d | 2007-06-08 | 2007-06-14 |  |  |  |
| 1035 | **Deployment (Iter-5)** | 10d | 2007-06-29 | 2007-07-13 | 910 |  |  |
| 1036 | Submit prototype code (Task 3.5) | 0d | 2007-06-29 | 2007-06-29 | 999 |  | Ram |
| 1037 | Deploy Prototype for Iteration 1 at Mayo and WF | 0d | 2007-06-29 | 2007-06-29 | 999, 1036 |  | Vinay; Mayo; WF |
| 1038 | Formal Review of Code by BAH | 10d | 2007-07-02 | 2007-07-13 | 1037 |  | BAH |
| 1042 | **Iteration Planning (Iter-6)** | 2d | 2007-07-02 | 2007-07-03 |  |  |  |
| 1043 | Review and finalize Ucases and Work List for Iteration | 1d | 2007-07-02 | 2007-07-02 | 1041 |  | Edmond; Ram; Vinay |
| 1044 | Review and finalize assignments for Iteration | 1d | 2007-07-03 | 2007-07-03 | 1043 |  | Edmond; Ram; Vinay |
| 1045 | **Project Management (Iter-6)** | 22d | 2007-07-02 | 2007-07-31 |  |  |  |
| 1046 | Update Project Plan | 3d | 2007-07-03 | 2007-07-05 | 1043 |  | Edmond |
| 1047 | **CaAERS CCB (Task 2.10)** | 1d | 2007-07-02 | 2007-07-02 |  |  |  |
| 1048 | CCB Meetings | 1d | 2007-07-02 | 2007-07-02 |  | start no earlier than 2007-07-02 | Edmond |
| 1049 | **Weekly Team Meeting** | 16d | 2007-07-02 | 2007-07-23 |  |  |  |
| 1050 | Weekly Team Meeting 1 | 1d | 2007-07-02 | 2007-07-02 |  | start no earlier than 2007-07-02 |  |
| 1051 | Weekly Team Meeting 2 | 1d | 2007-07-09 | 2007-07-09 |  | start no earlier than 2007-07-09 |  |
| 1052 | Weekly Team Meeting 3 | 1d | 2007-07-16 | 2007-07-16 |  | start no earlier than 2007-07-16 |  |
| 1053 | Weekly Team Meeting 4 | 1d | 2007-07-23 | 2007-07-23 |  | start no earlier than 2007-07-23 |  |
| 1054 | **Status and Risk Reporting** | 18d | 2007-07-06 | 2007-07-31 |  |  |  |
| 1055 | Bi-weekly Risk Update in caMP (Task 1.4) | 1d | 2007-07-06 | 2007-07-06 |  | start no earlier than 2007-07-06 | Edmond |
| 1056 | Bi-weekly Risk Matrix Update Meeting | 1d | 2007-07-06 | 2007-07-06 |  | start no earlier than 2007-07-06 | Edmond |
| 1057 | Bi-weekly Risk Update in caMP (Task 1.4) | 1d | 2007-07-20 | 2007-07-20 |  | start no earlier than 2007-07-20 | Edmond |
| 1058 | Bi-weekly Risk Matrix Update Meeting | 1d | 2007-07-20 | 2007-07-20 |  | start no earlier than 2007-07-20 | Edmond |
| 1059 | Bi-weekly Status Update Meeting with BAH/NCI | 1d | 2007-07-13 | 2007-07-13 |  | start no earlier than 2007-07-13 | Edmond |
| 1060 | Bi-weekly Status Update Meeting with BAH/NCI | 1d | 2007-07-13 | 2007-07-13 |  | start no earlier than 2007-07-13 | Edmond |
| 1061 | Monthly Status Report (Task 1.3) | 1d | 2007-07-31 | 2007-07-31 |  | start no earlier than 2007-07-31 | Edmond |
| 1062 | Monthly Risk Matrix Update (Task 1.3) | 1d | 2007-07-31 | 2007-07-31 | 1061SS |  | Edmond |
| 1063 | **Collaboration Management Activities** | 16d | 2007-07-05 | 2007-07-26 |  |  |  |
| 1064 | Adopters Mtg | 1d | 2007-07-05 | 2007-07-05 |  | start no earlier than 2007-07-05 | Edmond |
| 1065 | Bi-Weekly AE SIG Meeting | 1d | 2007-07-12 | 2007-07-12 |  | start no earlier than 2007-07-12 | Edmond |
| 1066 | Adopters Mtg | 1d | 2007-07-19 | 2007-07-19 |  | start no earlier than 2007-07-19 | Edmond |
| 1067 | Bi-Weekly AE SIG Meeting | 1d | 2007-07-26 | 2007-07-26 |  | start no earlier than 2007-07-26 | Edmond |
| 1068 | **Environment (Iter-6)** | 3d | 2007-07-03 | 2007-07-05 |  |  |  |
| 1069 | Update Environment | 3d | 2007-07-03 | 2007-07-05 | 1043 |  | Vinay |
| 1070 | **SCM (Iter-6)** | 5d | 2007-07-02 | 2007-07-06 |  |  |  |
| 1071 | Manage Repository | 5d | 2007-07-02 | 2007-07-06 | 1041 |  | Rhett |
| 1072 | **Requirements (Iter-6)** | 18d | 2007-07-02 | 2007-07-25 |  |  |  |
| 1073 | **Requirements Gathering and Elucidation** | 5d | 2007-07-02 | 2007-07-06 |  |  |  |
| 1074 | Requirements gathering/research for iteration | 5d | 2007-07-02 | 2007-07-06 | 1041 |  | Sean |
| 1075 | **Updated Use Case Specification and Realization** | 16d | 2007-07-04 | 2007-07-25 |  |  |  |
| 1076 | Developer draft | 2d | 2007-07-04 | 2007-07-05 | 1044 |  | Sean |
| 1077 | Adopters/Collobators Review | 3d | 2007-07-06 | 2007-07-10 | 1076 |  | Mayo; WF |
| 1078 | Update Use Case Document | 1d | 2007-07-11 | 2007-07-11 | 1077 |  | Sean |
| 1079 | Submit Updated Use Case Document to BAH (Task 3.1) | 0d | 2007-07-11 | 2007-07-11 | 1078 |  | Edmond |
| 1080 | Formal Review of Updated Use Case Document | 10d | 2007-07-12 | 2007-07-25 | 1079 |  | BAH |
| 1081 | **Updated SRS Document** | 16d | 2007-07-04 | 2007-07-25 |  |  |  |
| 1082 | Developer draft | 2d | 2007-07-04 | 2007-07-05 | 1044 |  | Sean |
| 1083 | Adopters/Collobators Review | 3d | 2007-07-06 | 2007-07-10 | 1082 |  | Mayo; WF |
| 1084 | Update SRS | 1d | 2007-07-11 | 2007-07-11 | 1083 |  | Sean |
| 1085 | Submit Updated SRS Document to BAH (Task 3.2) | 0d | 2007-07-11 | 2007-07-11 | 1084 |  | Mayo; WF |
| 1086 | Formal Review of Updated SRS | 10d | 2007-07-12 | 2007-07-25 | 1085 |  | BAH |
| 1087 | **Updated UML Static Class Diagram Model** | 16d | 2007-07-04 | 2007-07-25 |  |  |  |
| 1088 | Developer draft | 2d | 2007-07-04 | 2007-07-05 | 1044 |  | Ram; Sean |
| 1089 | Adopters/Collobators Review | 3d | 2007-07-06 | 2007-07-10 | 1088 |  | Mayo; WF |
| 1090 | Update UML | 1d | 2007-07-11 | 2007-07-11 | 1089 |  | Sean |
| 1091 | Submit UML to BAH (Task 3.3) | 0d | 2007-07-11 | 2007-07-11 | 1090 |  | Edmond |
| 1092 | Formal Review of UML | 10d | 2007-07-12 | 2007-07-25 | 1091 |  | BAH |
| 1093 | **Analysis and Design (Iter-6)** | 21d | 2007-07-04 | 2007-08-01 | 1044 |  |  |
| 1094 | **Design Documents** | 21d | 2007-07-04 | 2007-08-01 |  |  |  |
| 1095 | **Export/Import (Con't)** | 11d | 2007-07-04 | 2007-07-18 |  |  |  |
| 1096 | Develop appropriate UML Artifacts | 3d | 2007-07-04 | 2007-07-06 | 1044 |  | Krikor |
| 1097 | Create Design Document | 3d | 2007-07-09 | 2007-07-11 | 1096 |  | Krikor |
| 1098 | Adopters/Collaborators Review | 3d | 2007-07-12 | 2007-07-16 | 1097 |  | Mayo; WF |
| 1099 | Developers Update | 2d | 2007-07-17 | 2007-07-18 | 1098 |  | Krikor |
| 1100 | **Rules Engine/Triggers (cont'd)** | 11d | 2007-07-04 | 2007-07-18 |  |  |  |
| 1101 | Develop appropriate UML Artifacts | 3d | 2007-07-04 | 2007-07-06 | 1044 |  | Rhett |
| 1102 | Create Design Document | 3d | 2007-07-09 | 2007-07-11 | 1101 |  | Rhett |
| 1103 | Adopters/Collaborators Review | 3d | 2007-07-12 | 2007-07-16 | 1102 |  | Mayo; WF |
| 1104 | Developers Update | 2d | 2007-07-17 | 2007-07-18 | 1103 |  | Rhett |
| 1105 | **System Admin Module (cont'd)** | 9d | 2007-07-04 | 2007-07-16 |  |  |  |
| 1106 | Develop appropriate UML Artifacts | 3d | 2007-07-04 | 2007-07-06 | 1044 |  | Kulasekeran |
| 1107 | Create Design Document | 2d | 2007-07-09 | 2007-07-10 | 1106 |  | Kulasekeran |
| 1108 | Adopters/Collaborators Review | 2d | 2007-07-11 | 2007-07-12 | 1107 |  |  |
| 1109 | Developers Update | 2d | 2007-07-13 | 2007-07-16 | 1108 |  | Kulasekeran |
| 1110 | Deliver Design document to BAH (Task 3.4) | 0d | 2007-07-18 | 2007-07-18 | 1099, 1104, 1109 |  | Edmond |
| 1111 | Deliver UML to BAH (Task 3.3) | 0d | 2007-07-18 | 2007-07-18 | 1099, 1104, 1109 |  | Edmond |
| 1112 | Formal Review by BAH | 10d | 2007-07-19 | 2007-08-01 | 1111 |  | BAH; Mayo; WF |
| 1113 | **Modeling** | 5d | 2007-07-04 | 2007-07-10 |  |  |  |
| 1114 | Update Implementation Model | 2d | 2007-07-04 | 2007-07-05 |  |  | Ram |
| 1115 | Update Domain Analysis Model/BRIDG Harmonization | 5d | 2007-07-04 | 2007-07-10 |  |  | Sean |
| 1116 | Create/Update Dynamic Models (BRIDG) | 5d | 2007-07-04 | 2007-07-10 |  |  | Sean |
| 1117 | **Semantic Integration with caDSR** | 6d | 2007-07-04 | 2007-07-11 |  |  |  |
| 1118 | CDE Use Report | 5d | 2007-07-04 | 2007-07-10 | 1044 |  | Sean |
| 1119 | Meeting with VCDE | 1d | 2007-07-11 | 2007-07-11 | 1118 |  | Sean; Brian D; Lynne W; Brenda M |
| 1120 | **Implementation (Iter-6)** | 20d | 2007-07-04 | 2007-07-31 |  |  |  |
| 1121 | **Web interface** | 5d | 2007-07-04 | 2007-07-10 | 1044 |  |  |
| 1122 | UI Refinement | 5d | 2007-07-04 | 2007-07-10 |  |  | Richard |
| 1123 | **Bug Fixes** | 6d | 2007-07-04 | 2007-07-11 | 1044 |  |  |
| 1124 | Review and assignment of Bugs from prior iteration | 1d | 2007-07-04 | 2007-07-04 |  |  |  |
| 1125 | Bug Fixes | 5d | 2007-07-05 | 2007-07-11 | 1124 |  |  |
| 1126 | **Impementation** | 20d | 2007-07-04 | 2007-07-31 | 1044 |  |  |
| 1127 | Export (cont'd) | 20d | 2007-07-04 | 2007-07-31 |  |  |  |
| 1128 | System Admin (cont'd) | 20d | 2007-07-04 | 2007-07-31 |  |  |  |
| 1129 | Reports (cont'd) | 20d | 2007-07-04 | 2007-07-31 |  |  |  |
| 1130 | Triggers/Notification (cont'd) | 20d | 2007-07-04 | 2007-07-31 |  |  |  |
| 1131 | **Documentation (Iter-6)** | 25d | 2007-07-04 | 2007-08-07 | 1044 |  |  |
| 1132 | **Installation Guide** | 15d | 2007-07-18 | 2007-08-07 |  |  |  |
| 1133 | Update Installation Guide | 5d | 2007-07-18 | 2007-07-24 |  | start no earlier than 2007-07-18 |  |
| 1134 | Submit to BAH/Adopters | 0d | 2007-07-24 | 2007-07-24 | 1133 |  | Edmond |
| 1135 | Review of Installation Guide | 10d | 2007-07-25 | 2007-08-07 | 1134 |  | BAH; Mayo; WF |
| 1136 | **Administrators Guide** | 25d | 2007-07-04 | 2007-08-07 |  |  |  |
| 1137 | Update Administrators Guide | 15d | 2007-07-04 | 2007-07-24 |  |  |  |
| 1138 | Submit to BAH | 0d | 2007-07-24 | 2007-07-24 | 1137 |  | Edmond |
| 1139 | Review of Admin Guide | 10d | 2007-07-25 | 2007-08-07 | 1138 |  | BAH; Mayo; WF |
| 1140 | **Release Notes** | 12d | 2007-07-23 | 2007-08-07 |  |  |  |
| 1141 | Update Release Notes | 2d | 2007-07-23 | 2007-07-24 |  | start no earlier than 2007-07-23 |  |
| 1142 | Submit to BAH | 0d | 2007-07-24 | 2007-07-24 | 1141 |  | Edmond |
| 1143 | Review of Release Notes | 10d | 2007-07-25 | 2007-08-07 | 1142 |  | BAH; Mayo; WF |
| 1144 | **End User Guide Draft** | 25d | 2007-07-04 | 2007-08-07 |  |  |  |
| 1145 | Create Draft of End User Guide | 15d | 2007-07-04 | 2007-07-24 |  |  |  |
| 1146 | Submit to BAH (Task 13.15.1) | 0d | 2007-07-24 | 2007-07-24 | 1145 |  | Edmond |
| 1147 | Review of End User Guide Draft | 10d | 2007-07-25 | 2007-08-07 | 1146 |  | BAH; Mayo; WF |
| 1148 | **Testing (Iter-6)** | 25d | 2007-07-04 | 2007-08-07 | 1044 |  |  |
| 1149 | **Test Plan** | 12d | 2007-07-04 | 2007-07-19 |  |  |  |
| 1150 | Update Test Plan Document (Task 3.6) | 2d | 2007-07-04 | 2007-07-05 |  |  | Ram |
| 1151 | Submit to BAH | 0d | 2007-07-05 | 2007-07-05 | 1150 |  | Edmond |
| 1152 | Formal Review by BAH | 10d | 2007-07-06 | 2007-07-19 | 1151 |  | BAH |
| 1153 | **RTM** | 5d | 2007-07-04 | 2007-07-10 |  |  |  |
| 1154 | Update RTM | 5d | 2007-07-04 | 2007-07-10 |  |  | Sean |
| 1161 | Submit Test Results Report (Task 3.8) | 0d | 2007-07-24 | 2007-07-24 | 1160 |  | Edmond |
| 1162 | Formal Review of Test results Report | 10d | 2007-07-25 | 2007-08-07 | 1161 |  | BAH |
| 1163 | **BRIDG Review (Final)** | 5d | 2007-07-11 | 2007-07-17 |  |  |  |
| 1164 | Harmonization with BRIDG Model (Final Review) | 5d | 2007-07-11 | 2007-07-17 | 1113 |  |  |
| 1165 | **Silver Review (Begin)** | 0d | 2007-07-16 | 2007-07-16 | 1117 |  |  |
| 1166 | Submit Draft Semantically annotated XMI file (Task 3.11.1) | 0d | 2007-07-16 | 2007-07-16 |  | start no earlier than 2007-07-16 |  |
| 1167 | Submit Draft Full CDE Use Report (Task 3.11.2) | 0d | 2007-07-16 | 2007-07-16 | 1166 |  |  |
| 1168 | Submit Draft Compatibility Review Submission Packaged (Task 3.12) | 0d | 2007-07-16 | 2007-07-16 | 1167 |  |  |
| 1169 | **Deployment (Iter-6)** | 10d | 2007-07-25 | 2007-08-07 |  |  |  |
| 1170 | Submit prototype code (Task 3.5) | 0d | 2007-07-25 | 2007-07-25 |  | start no earlier than 2007-07-25 | Ram |
| 1171 | Deploy Prototype for Iteration 1 at Mayo and WF | 0d | 2007-07-25 | 2007-07-25 | 1170 |  | Vinay; Mayo; WF |
| 1172 | Formal Review of Code by BAH | 10d | 2007-07-25 | 2007-08-07 | 1171 |  | BAH |
| 1176 | **Iteration Planning (Iter-7)** | 2d | 2007-08-01 | 2007-08-02 |  |  |  |
| 1177 | Review and finalize Ucases and Work List for Iteration | 1d | 2007-08-01 | 2007-08-01 | 1175 |  | Edmond; Ram; Vinay |
| 1178 | Review and finalize assignments for Iteration | 1d | 2007-08-02 | 2007-08-02 | 1177 |  | Edmond; Ram; Vinay |
| 1179 | **Project Management (Iter-7)** | 21d | 2007-08-03 | 2007-08-31 |  |  |  |
| 1180 | Update Project Plan | 3d | 2007-08-03 | 2007-08-07 | 1178 |  | Edmond |
| 1181 | **Detailed Transition Phase Plan (Task 3.16)** | 20d | 2007-08-03 | 2007-08-30 |  |  |  |
| 1182 | Draft Final Transition Phase Plan (3.16) | 5d | 2007-08-03 | 2007-08-09 | 1178 |  | Edmond |
| 1184 | Update | 5d | 2007-08-24 | 2007-08-30 | 1183 |  | Edmond |
| 1185 | Submit Final Version of Transition Phase Plan | 0d | 2007-08-30 | 2007-08-30 | 1184 |  | Edmond |
| 1186 | **CaAERS CCB (Task 2.10)** | 1d | 2007-08-06 | 2007-08-06 |  |  |  |
| 1187 | CCB Meetings | 1d | 2007-08-06 | 2007-08-06 |  | must start on 2007-08-06 | Edmond |
| 1188 | **Weekly Team Meeting** | 16d | 2007-08-06 | 2007-08-27 |  |  |  |
| 1189 | Weekly Team Meeting 1 | 1d | 2007-08-06 | 2007-08-06 |  | start no earlier than 2007-08-06 |  |
| 1190 | Weekly Team Meeting 2 | 1d | 2007-08-13 | 2007-08-13 |  | start no earlier than 2007-08-13 |  |
| 1191 | Weekly Team Meeting 3 | 1d | 2007-08-20 | 2007-08-20 |  | start no earlier than 2007-08-20 |  |
| 1192 | Weekly Team Meeting 4 | 1d | 2007-08-27 | 2007-08-27 |  | start no earlier than 2007-08-27 |  |
| 1193 | **Status and Risk Reporting** | 21d | 2007-08-03 | 2007-08-31 |  |  |  |
| 1194 | Bi-weekly Risk Update in caMP (Task 1.4) | 1d | 2007-08-03 | 2007-08-03 |  | start no earlier than 2007-08-03 | Edmond |
| 1195 | Bi-weekly Risk Matrix Update Meeting | 1d | 2007-08-03 | 2007-08-03 |  | start no earlier than 2007-08-03 | Edmond |
| 1196 | Bi-weekly Risk Update in caMP (Task 1.4) | 1d | 2007-08-17 | 2007-08-17 |  | start no earlier than 2007-08-17 | Edmond |
| 1197 | Bi-weekly Risk Matrix Update Meeting | 1d | 2007-08-17 | 2007-08-17 |  | start no earlier than 2007-08-17 | Edmond |
| 1198 | Bi-weekly Status Update Meeting with BAH/NCI | 1d | 2007-08-10 | 2007-08-10 |  | start no earlier than 2007-08-10 | Edmond |
| 1199 | Bi-weekly Status Update Meeting with BAH/NCI | 1d | 2007-08-24 | 2007-08-24 |  | start no earlier than 2007-08-24 | Edmond |
| 1200 | Monthly Status Report (Task 1.3) | 1d | 2007-08-31 | 2007-08-31 |  | start no earlier than 2007-08-31 | Edmond |
| 1201 | Monthly Risk Matrix Update (Task 1.3) | 1d | 2007-08-31 | 2007-08-31 | 1200SS |  | Edmond |
| 1202 | **Collaboration Management Activities** | 16d | 2007-08-09 | 2007-08-30 |  |  |  |
| 1203 | Adopters Mtg | 1d | 2007-08-09 | 2007-08-09 |  | start no earlier than 2007-08-09 | Edmond |
| 1204 | Bi-Weekly AE SIG Meeting | 1d | 2007-08-16 | 2007-08-16 |  | start no earlier than 2007-08-16 | Edmond |
| 1205 | Adopters Mtg | 1d | 2007-08-23 | 2007-08-23 |  | start no earlier than 2007-08-23 | Edmond |
| 1206 | Bi-Weekly AE SIG Meeting | 1d | 2007-08-30 | 2007-08-30 |  | start no earlier than 2007-08-30 | Edmond |
| 1207 | **Environment (Iter-7)** | 3d | 2007-08-03 | 2007-08-07 |  |  |  |
| 1208 | Update Environment | 3d | 2007-08-03 | 2007-08-07 | 1178 |  | Vinay |
| 1209 | **SCM (Iter-7)** | 5d | 2007-08-03 | 2007-08-09 |  |  |  |
| 1210 | Manage Repository | 5d | 2007-08-03 | 2007-08-09 | 1178 |  | Rhett |
| 1211 | **Requirements (Iter-7)** | 8d | 2007-08-03 | 2007-08-14 |  |  |  |
| 1212 | Req'ts Gathering for Iteration | 3d | 2007-08-03 | 2007-08-07 | 1178 |  | Sean |
| 1213 | Update UC and SRS Documents | 5d | 2007-08-08 | 2007-08-14 | 1212 |  | Sean |
| 1214 | Submit Final Versions of UC and SRS documents (3.1, 3.2, 3.3) | 0d | 2007-08-14 | 2007-08-14 | 1213 |  | Edmond |
| 1215 | **Analysis and Design (Iter-7)** | 15d | 2007-08-08 | 2007-08-28 |  |  |  |
| 1216 | **Design Documents** | 15d | 2007-08-08 | 2007-08-28 |  |  |  |
| 1217 | Update Design Documents | 5d | 2007-08-08 | 2007-08-14 | 1212 |  |  |
| 1218 | Deliver Final Design document to BAH (Task 3.4) | 0d | 2007-08-14 | 2007-08-14 | 1217 |  | Edmond |
| 1219 | Deliver Final UML to BAH (Task 3.3) | 0d | 2007-08-14 | 2007-08-14 | 1217 |  | Edmond |
| 1220 | Formal Review by BAH | 10d | 2007-08-15 | 2007-08-28 | 1219 |  | BAH |
| 1221 | **Implementation (Iter-7)** | 15d | 2007-08-03 | 2007-08-23 |  |  |  |
| 1222 | **Web interface** | 5d | 2007-08-03 | 2007-08-09 |  |  |  |
| 1223 | UI Refinement | 5d | 2007-08-03 | 2007-08-09 | 1178 |  | Richard |
| 1224 | **Bug Fixes** | 6d | 2007-08-03 | 2007-08-10 |  |  |  |
| 1225 | Review and assignment of Bugs from prior iteration | 1d | 2007-08-03 | 2007-08-03 | 1178 |  |  |
| 1226 | Bug Fixes | 5d | 2007-08-06 | 2007-08-10 | 1225 |  |  |
| 1227 | **Implement Use Cases** | 15d | 2007-08-03 | 2007-08-23 | 1178 |  |  |
| 1228 | Reports (cont'd) | 15d | 2007-08-03 | 2007-08-23 |  |  |  |
| 1229 | Data Push to AdEERS (cont'd) | 15d | 2007-08-03 | 2007-08-23 |  |  |  |
| 1230 | System Admin (cont'd) | 15d | 2007-08-03 | 2007-08-23 |  |  |  |
| 1231 | Triggers/Notification (cont'd) | 15d | 2007-08-03 | 2007-08-23 |  |  |  |
| 1232 | Reports | 14d | 2007-08-03 | 2007-08-22 |  |  |  |
| 1233 | **Testing (Iter-7)** | 30d | 2007-08-03 | 2007-09-13 |  |  |  |
| 1234 | **Test Plan** | 12d | 2007-08-03 | 2007-08-20 |  |  |  |
| 1235 | Update Test Plan Document (Task 3.6) | 2d | 2007-08-03 | 2007-08-06 | 1178 |  | Ram |
| 1236 | Submit to BAH | 0d | 2007-08-06 | 2007-08-06 | 1235 |  | Edmond |
| 1237 | Formal Review by BAH | 10d | 2007-08-07 | 2007-08-20 | 1236 |  | BAH |
| 1238 | **RTM** | 5d | 2007-08-03 | 2007-08-09 |  |  |  |
| 1239 | Update RTM | 5d | 2007-08-03 | 2007-08-09 | 1178 |  | Sean |
| 1241 | Update test data set (Task 3.7) | 10d | 2007-08-08 | 2007-08-21 | 1162 |  | Renee; David |
| 1244 | **Run Tests** | 30d | 2007-08-03 | 2007-09-13 |  |  |  |
| 1246 | Submit Final Test Results Report (Task 3.8) | 0d | 2007-08-30 | 2007-08-30 | 1245 |  | Edmond |
| 1247 | Formal Review of Test results Report | 10d | 2007-08-31 | 2007-09-13 | 1246 |  | BAH |
| 1248 | **Silver Review (Final)** | 0d | 2007-08-27 | 2007-08-27 |  |  |  |
| 1249 | Complete Semantically annotated XMI file (Task 3.11.1) | 0d | 2007-08-27 | 2007-08-27 |  | start no earlier than 2007-08-27 |  |
| 1250 | Full CDE Use Report (Task 3.11.2) | 0d | 2007-08-27 | 2007-08-27 |  | start no earlier than 2007-08-27 |  |
| 1251 | Compatibility Review Submission Packaged (Task 3.12) | 0d | 2007-08-27 | 2007-08-27 |  | start no earlier than 2007-08-27 |  |
| 1252 | **Documentation (Iter-7)** | 21d | 2007-08-03 | 2007-08-31 |  |  |  |
| 1253 | Update End Users Guide | 15d | 2007-08-08 | 2007-08-28 | 1147 |  |  |
| 1254 | Submit Final End Users Guide (Task 3.15.2) | 0d | 2007-08-31 | 2007-08-31 | 1253 | must finish on 2007-08-31 |  |
| 1255 | Update Final Versions of Other Project Documents | 15d | 2007-08-03 | 2007-08-23 | 1178 |  |  |
| 1256 | Submit Final Administrators Guide (Task 3.13) | 0d | 2007-08-31 | 2007-08-31 | 1255 | must finish on 2007-08-31 |  |
| 1257 | Submit Final Installation Guide (Task 3.10) | 0d | 2007-08-31 | 2007-08-31 | 1255 | must finish on 2007-08-31 |  |
| 1258 | Submit Final Release Notes (Task 3.14) | 0d | 2007-08-31 | 2007-08-31 | 1255 | must finish on 2007-08-31 |  |
| 1259 | **Deployment (Iter-7)** | 10d | 2007-08-23 | 2007-09-06 |  |  |  |
| 1260 | Submit Final Code Base (Task 3.5) | 0d | 2007-08-23 | 2007-08-23 | 1221 |  | Ram |
| 1261 | Formal Review of Code by BAH | 10d | 2007-08-24 | 2007-09-06 | 1260 |  | BAH |
| 1262 | Deploy Prototype for Iteration 1 at Mayo and WF | 1d | 2007-08-24 | 2007-08-24 | 1260 |  | Vinay; Mayo; WF |

Removed: 506 Technical/Architecture Guide; 507 Update Tech/Arch Guide; 508 Deliver to BAH (Task 2.8); 509 Formal Review; 553 Create Functional Tests; 554 Create Functional Tests for Use Cases; 555 Review by Adopters; 557 Create test data set (Task 3.7); 624 Protocol Abstraction (Organizations, Committees, Institutions); 652 Formal Review; 656 Enterprise Service Bus; 657 Fourth ESB Iteration; 658 Grid service; 659 Implement Grid Service; 690 Create Functional Tests; 691 Create Functional Tests for Use Cases; 692 Review by Adopters; 695 Test Data; 696 Create test data set (Task 3.7); 697 Submit for Review; 708 Make URL Public; 709 Finish Iteration 2; 710 Begin Iteration 3; 711 Environment Updates; 712 Updates to Requirements, Use Case, UML, and Design Document; 713 Test Plan and RTM Updates; 714 Develop Code; 716 Installation Guide Drafts; 718 Iteration 3 Review and Feedback; 721 Environment Updates; 722 Updates to Requirements, Use Case, UML, and Design Document; 723 Test Plan and RTM Updates; 724 Develop Code; 726 Installation Guide Draft; 727 Administrators Guide Draft; 730 Iteration 4 Review and Feedback; 733 Environment Updates; 734 Updates to Requirements, Use Case, UML, and Design Document; 735 Test Plan and RTM Updates; 736 Develop Code; 738 Testing Results; 739 Installation Guide Draft; 740 Administrators Guide Draft; 741 End User Guide Draft; 743 Iteration 5 Review and Feedback; 746 Environment Updates; 747 Updates to Requirements, Use Case, UML, and Design Document; 748 Test Plan and RTM Updates; 749 Develop Code; 750 Installation Guide Draft; 751 Administrators Guide Draft; 752 End User Guide Draft; 754 Testing Results; 756 Iteration 6 Review and Feedback; 759 Environment Updates; 760 Finalize Requirements, Use Case, UML, and Design Document; 761 Test Plan and RTM Updates (Task 3.6); 762 Finalize Code Base (Task 3.5); 763 Testing; 764 Final Test Results Report (3.8); 765 Final Transition Phase Plan (3.16); 766 Compatibility Review Submission Package (Task 3.12); 767 Generation of CDEs (Task 3.11.2); 768 Final Administrators Guide (Task 3.13); 769 Final End Users Guide (Task 3.15.2); 770 Final Installation Guide (Task 3.10); 771 Release Notes (Task 3.14); 773 Iteration 7 Review and Feedback

Changed:

| ID | Task | Start | Finish | Duration | Complete | Total float | Other |
| --- | --- | --- | --- | --- | --- | --- | --- |
| 1 | **caAERS Application Development Project** |  | 2007-10-31 → 2007-10-16 (-15d) | 237d? → 226d | 35% → 32% |  |  |
| 303 | **Construction Phase** |  | 2007-09-17 → 2007-09-13 (-4d) | 163d? → 161d | 11% → 17% | 32d → 23d |  |
| 304 | **Construction Phase Iteration 1** |  |  |  | 61% → 93% | 159d → 148d |  |
| 306 | **Iteration Planning (Iter-1)** |  |  |  |  |  | was named Iteration Planning |
| 309 | **Project Management (Iter-1)** |  |  |  | 95% → 98% | 166d → 155d | was named Project Management |
| 316 | **Status and Risk Reporting** |  |  |  | 89% → 94% | 166d → 155d |  |
| 323 | Monthly Status Report (Task 1.3) |  | 2007-03-09 A |  | 50% → 100% | 0d → none |  |
| 331 | **Environment (Iter-1)** |  |  |  |  |  | was named Environment |
| 333 | **SCM (Iter-1)** |  |  |  |  |  | was named SCM |
| 335 | **Requirements (Iter-1)** |  |  |  | 44% → 86% | 159d → 148d | was named Requirements |
| 336 | **Updated Use Case Specification and Realization** |  |  |  | 44% → 86% | 159d → 148d |  |
| 341 | Formal Review of Updated Use Case Document | 2007-03-02 A |  |  | 0% → 75% | 159d → 148d |  |
| 342 | **Updated SRS Document** |  |  |  | 44% → 86% | 159d → 148d |  |
| 347 | Formal Review of Updated SRS | 2007-03-02 A |  |  | 0% → 75% | 159d → 148d |  |
| 348 | **Updated UML Static Class Diagram Model** |  |  |  | 44% → 86% | 159d → 148d |  |
| 353 | Formal Review of UML | 2007-03-02 A |  |  | 0% → 75% | 159d → 148d |  |
| 354 | **Analysis and Design (Iter-1)** |  |  |  | 56% → 97% | 160d → 149d | was named Analysis and Design |
| 355 | **Design Documents** |  |  |  | 63% → 95% | 164d → 153d |  |
| 356 | **Protocol Abstraction (Diseases/Agents)** |  | 2007-03-01 A |  | 42% → 100% | 174d → none |  |
| 359 | Adopters/Collaborators Review | 2007-02-21 A | 2007-02-27 A |  | 0% → 100% | 174d → none |  |
| 360 | Developers Update | 2007-02-28 A | 2007-03-01 A |  | 0% → 100% | 174d → none |  |
| 373 | Formal Review by BAH | 2007-03-02 A |  |  | 0% → 75% | 156d → 153d |  |
| 376 | **Technical/Architecture Guide** |  | 2007-03-21 A |  | 29% → 100% | 160d → none |  |
| 379 | Formal Review | 2007-03-01 A | 2007-03-21 A |  | 0% → 100% | 160d → none |  |
| 380 | **Implementation (Iter-1)** |  |  |  |  |  | was named Implementation |
| 404 | **Test Plan** |  |  |  | 50% → 88% | 166d → 155d |  |
| 406 | Submit to BAH | 2007-02-27 A | 2007-02-27 A |  | 0% → 100% | 166d → none |  |
| 407 | Formal Review by BAH | 2007-02-28 A |  |  | 0% → 75% | 166d → 155d |  |
| 411 | Formal Review of Test results Report | 2007-03-01 A |  |  | 0% → 75% | 160d → 149d |  |
| 412 | **Deployment (Iter-1)** |  |  |  | 21% → 82% | 165d → 154d | was named Deployment |
| 414 | Formal Review of Code by BAH | 2007-03-01 A |  |  | 0% → 75% | 165d → 154d |  |
| 416 | Deploy Prototype for Iteration 1 at Mayo and WF |  | 2007-03-05 A |  | 75% → 100% | 172d → none |  |
| 417 | Make URL Public |  | 2007-03-01 A |  | 25% → 100% | 174d → none |  |
| 418 | Finish Iteration 1 |  | 2007-02-28 A |  | 75% → 100% | -18d → none |  |
| 419 | **Construction Phase Iteration 2** |  | 2007-04-27 → 2007-04-20 (-7d) | 42d → 37d | 0% → 41% | 133d → 127d |  |
| 421 | **Iteration Planning (Iter-2)** |  |  |  |  |  | was named Iteration Planning |
| 424 | **Project Management (Iter-2)** | 2007-03-01 A |  |  | 0% → 71% | 0d → 142d | was named Project Management |
| 425 | Update Project Plan | 2007-03-05 A |  |  | 0% → 75% | 170d → 159d |  |
| 426 | **CaAERS CCB (Task 2.10)** | 2007-03-12 A | 2007-03-12 A |  | 0% → 100% | 167d → none |  |
| 427 | CCB Meeting | 2007-03-12 A | 2007-03-12 A |  | 0% → 100% | 167d → none |  |
| 428 | **Weekly Team/Developers Meeting** | 2007-03-05 A |  |  | 0% → 75% |  |  |
| 429 | Weekly Team Meeting 1 | 2007-03-05 A | 2007-03-05 A |  | 0% → 100% | 0d → none |  |
| 430 | Weekly Team Meeting 2 | 2007-03-12 A | 2007-03-12 A |  | 0% → 100% | 0d → none |  |
| 431 | Weekly Team Meeting 3 | 2007-03-19 A | 2007-03-19 A |  | 0% → 100% | 0d → none |  |
| 433 | **Status and Risk Reporting** | 2007-03-02 A |  |  | 0% → 63% | 0d → 142d |  |
| 434 | Bi-weekly Risk Update in caMP (Task 1.4) | 2007-03-02 A | 2007-03-02 A |  | 0% → 100% | 0d → none |  |
| 435 | Bi-weekly Risk Matrix Update Meeting | 2007-03-02 A | 2007-03-02 A |  | 0% → 100% | 0d → none |  |
| 436 | Bi-weekly Risk Update in caMP (Task 1.4) | 2007-03-16 A | 2007-03-16 A |  | 0% → 100% | 163d → none |  |
| 437 | Bi-weekly Risk Matrix Update Meeting | 2007-03-16 A | 2007-03-16 A |  | 0% → 100% | 0d → none |  |
| 438 | Bi-weekly Status Update Meeting with BAH/NCI | 2007-03-09 A | 2007-03-09 A |  | 0% → 100% | 0d → none |  |
| 442 | **Collaboration Management Activities** | 2007-03-01 A |  |  | 0% → 75% |  |  |
| 443 | Adopters Mtg | 2007-03-01 A | 2007-03-01 A |  | 0% → 100% | 0d → none |  |
| 444 | Bi-Weekly AE SIG Meeting | 2007-03-08 A | 2007-03-08 A |  | 0% → 100% | 0d → none |  |
| 445 | Adopters Mtg | 2007-03-15 A | 2007-03-15 A |  | 0% → 100% | 0d → none |  |
| 447 | **Environment (Iter-2)** | 2007-03-01 A |  |  | 0% → 75% | 172d → 161d | was named Environment |
| 448 | Update Environment | 2007-03-01 A |  |  | 0% → 75% | 172d → 161d |  |
| 449 | **SCM (Iter-2)** | 2007-03-01 A |  |  | 0% → 75% | 170d → 159d | was named SCM |
| 450 | Manage Repository | 2007-03-01 A |  |  | 0% → 75% | 170d → 159d |  |
| 451 | **Requirements (Iter-2)** | 2007-03-01 A |  |  | 0% → 35% | 145d → 134d | was named Requirements |
| 457 | **Updated Use Case Specification and Realization** | 2007-03-01 A |  |  | 0% → 35% | 147d → 136d |  |
| 458 | Developer draft | 2007-03-01 A |  |  | 0% → 75% | 147d → 142d |  |
| 459 | Adopters/Collobators Review | 2007-03-08 A |  |  | 0% → 75% | 147d → 138.25d |  |
| 460 | Update Use Case Document | 2007-03-15 A |  |  | 0% → 75% | 147d → 136d |  |
| 463 | **Updated SRS Document** | 2007-03-05 A |  |  | 0% → 35% | 145d → 134d |  |
| 464 | Developer draft | 2007-03-05 A |  |  | 0% → 75% | 145d → 140d |  |
| 465 | Adopters/Collobators Review | 2007-03-12 A |  |  | 0% → 75% | 145d → 136.25d |  |
| 466 | Update SRS | 2007-03-19 A |  |  | 0% → 75% | 145d → 134d |  |
| 469 | **Updated UML Static Class Diagram Model** | 2007-03-05 A |  |  | 0% → 22% | 146d → 135d |  |
| 470 | Developer draft | 2007-03-05 A |  |  | 0% → 50% | 146d → 138.5d |  |
| 471 | Adopters/Collobators Review | 2007-03-12 A |  |  | 0% → 50% | 146d → 136d |  |

| ID | Task | Start | Finish | Duration | Complete | Total float | Predecessors | Other |
| --- | --- | --- | --- | --- | --- | --- | --- | --- |
| 472 | Update UML | 2007-03-19 A |  |  | 0% → 50% | 146d → 135d |  |  |
| 475 | **Analysis and Design (Iter-2)** | 2007-03-01 A |  |  | 0% → 27% | 146d → 135d |  | was named Analysis and Design |
| 476 | **Design Documents** | 2007-03-01 A |  |  | 0% → 26% | 146d → 135d |  |  |
| 477 | **Protocol Abstraction (Diseases)** | 2007-03-05 A | 2007-03-19 → 2007-03-15 (-4d) | 11d → 9d | 0% → 39% | 152d → 142d |  |  |
| 478 | Develop appropriate UML Artifacts | 2007-03-05 A |  |  | 0% → 50% | 152d → 144.5d |  |  |
| 479 | Create Design Document | 2007-03-07 A |  |  | 0% → 50% | 152d → 143.5d |  |  |
| 480 | Adopters/Collaborators Review | 2007-03-09 A | 2007-03-15 → 2007-03-13 (-2d) | 5d → 3d | 0% → 50% | 152d → 142d |  |  |
| 481 | Developers Update | 2007-03-16 → 2007-03-14 (-2d) | 2007-03-19 → 2007-03-15 (-4d) |  |  | 152d → 142d |  |  |
| 482 | **Data Exchange with Local CTMS (Import)** | 2007-03-05 → 2007-03-16 (+11d) | 2007-03-16 → 2007-03-30 (+14d) | 10d → 11d |  | 163d → 142d |  |  |
| 483 | Develop appropriate UML Artifacts | 2007-03-05 → 2007-03-16 (+11d) | 2007-03-05 → 2007-03-19 (+14d) | 1d → 2d |  | 163d → 142d | 423 → 481 |  |
| 484 | Create Design Document | 2007-03-06 → 2007-03-20 (+14d) | 2007-03-07 → 2007-03-21 (+14d) |  |  | 163d → 142d |  |  |
| 485 | Adopters/Collaborators Review | 2007-03-08 → 2007-03-22 (+14d) | 2007-03-14 → 2007-03-28 (+14d) |  |  | 163d → 142d |  |  |
| 486 | Developers Update | 2007-03-15 → 2007-03-29 (+14d) | 2007-03-16 → 2007-03-30 (+14d) |  |  | 163d → 142d |  |  |
| 487 | **AE Data Collection (AE Attribution Related Functionality)** | 2007-03-05 A |  |  | 0% → 22% | 146d → 135d |  |  |
| 488 | Develop appropriate UML Artifacts | 2007-03-05 A |  |  | 0% → 25% | 146d → 137.5d |  |  |
| 489 | Create Design Document | 2007-03-12 A |  |  | 0% → 25% | 146d → 136.25d |  |  |
| 490 | Adopters/Collaborators Review | 2007-03-19 A |  |  | 0% → 25% | 146d → 135d |  |  |
| 492 | **Protocol Abstraction (Study Investigators, Study Personnel)** | 2007-03-05 A |  |  | 0% → 39% | 149d → 138d |  | was named Protocol Abstraction (Committees, Orgs, Instit., Study Personnel) |
| 493 | Develop appropriate UML Artifacts | 2007-03-05 A |  |  | 0% → 50% | 149d → 142d |  |  |
| 494 | Create Design Document | 2007-03-08 A |  |  | 0% → 50% | 149d → 140.5d |  |  |
| 495 | Adopters/Collaborators Review | 2007-03-13 A |  |  | 0% → 50% | 149d → 138d |  |  |
| 497 | **Protocol Level AE Notification Trigger** | 2007-03-01 A |  |  | 0% → 44% | 148d → 137d |  |  |
| 498 | Develop appropriate UML Artifacts | 2007-03-01 A |  |  | 0% → 50% | 148d → 142d |  |  |
| 499 | Create Design Document | 2007-03-08 A |  |  | 0% → 50% | 148d → 139.5d |  |  |
| 500 | Adopters/Collaborators Review | 2007-03-15 A |  |  | 0% → 50% | 148d → 137d |  |  |
| 502 | Deliver Design document to BAH (Task 3.4) |  |  |  |  | 156d → 145d |  | resources none → Edmond |
| 503 | Deliver UML to BAH (Task 3.3) |  |  |  |  | 146d → 135d |  | resources none → Edmond |
| 504 | Formal Review by BAH |  |  |  |  | 146d → 135d |  | resources none → BAH; NCI; Mayo; WF |
| 505 | **Modeling** | 2007-03-05 A | 2007-03-09 → 2007-03-16 (+7d) | 5d → 10d | 0% → 38% | 168d → 152d |  | was named Domain Model |
| 506 | Update Implementation Model | 2007-03-05 A |  |  | 0% → 50% | 168d → 152.25d |  | was named Update Model/BRIDG Harmonization |
| 511 | **Implementation (Iter-2)** | 2007-03-01 A |  |  | 0% → 63% | -18d → 0d |  | was named Implementation |
| 512 | **Web interface** | 2007-03-05 A |  |  | 0% → 75% | -8d → 4d |  |  |
| 513 | UI Refinement | 2007-03-05 A |  |  | 0% → 75% | -8d → 4d |  |  |
| 517 | **Implement Use Cases** | 2007-03-01 A |  |  | 0% → 61% | -18d → 0d |  |  |
| 518 | **Protocol Abstraction (Diseases)** | 2007-03-01 A |  |  | 0% → 90% | -18d → 5d |  |  |
| 519 | Implement O/R mapping | 2007-03-01 A |  |  | 0% → 90% | -18d → 13d |  |  |
| 520 | Develop DAO | 2007-03-05 A |  |  | 0% → 90% | -18d → 11d |  |  |
| 521 | Develop Service | 2007-03-07 A |  |  | 0% → 90% | -18d → 9d |  |  |
| 522 | Develop controller and command objects | 2007-03-09 A |  |  | 0% → 90% | -18d → 7d |  |  |
| 523 | Develop JUnit test cases | 2007-03-13 A |  |  | 0% → 90% | -18d → 1.25d |  |  |
| 524 | **Data Exchange with Local CTMS (Import)** | 2007-03-16 A |  |  | 0% → 25% | -18d → 0d |  |  |
| 525 | Implement O/R mapping | 2007-03-16 A |  |  | 0% → 25% | -18d → 0d |  |  |
| 526 | Develop DAO | 2007-03-20 A |  |  | 0% → 25% | -18d → -2d |  |  |
| 527 | Develop Service | 2007-03-22 A |  |  | 0% → 25% | -18d → -4d |  |  |
| 528 | Develop controller and command objects | 2007-03-26 A |  |  | 0% → 25% | -18d → -5d |  |  |
| 529 | Develop JUnit test cases | 2007-03-28 A |  |  | 0% → 25% | -18d → -6d |  |  |
| 530 | **AE Data Collection (cont'd)** | 2007-03-05 A |  |  | 0% → 25% | -14d → 0d |  |  |
| 531 | Implement O/R mapping | 2007-03-05 A |  |  | 0% → 25% | -14d → 9d |  |  |
| 532 | Develop DAO | 2007-03-07 A |  |  | 0% → 25% | -14d → 2d |  |  |
| 533 | Develop Service | 2007-03-09 A |  |  | 0% → 25% | -14d → 0d |  |  |
| 534 | Develop controller and command objects | 2007-03-13 A |  |  | 0% → 25% | -14d → -2d |  |  |
| 535 | Develop JUnit test cases | 2007-03-15 A |  |  | 0% → 25% | -13d → -1d |  |  |
| 536 | **Protocol Abstraction (Study Investigators/Personnel)** | 2007-03-05 A |  |  | 0% → 75% | -14d → 0d |  | was named Protocol Abstraction (Committees, Orgs, Instit., Study Personnel) |
| 537 | Implement O/R mapping | 2007-03-05 A |  |  | 0% → 75% | -14d → 9d |  |  |
| 538 | Develop DAO | 2007-03-07 A |  |  | 0% → 75% | -14d → 2d |  |  |
| 539 | Develop Service | 2007-03-09 A |  |  | 0% → 75% | -14d → 0d |  |  |
| 540 | Develop controller and command objects | 2007-03-13 A |  |  | 0% → 75% | -14d → -2d |  |  |
| 541 | Develop JUnit test cases | 2007-03-15 A |  |  | 0% → 75% | -13d → -1d |  |  |
| 542 | **Protocol Level Triggers/Notification and Reports (cont'd)** | 2007-03-05 A |  |  | 0% → 75% | -14d → 0d |  | was named Protocol Level Triggers/Notification (cont'd) |
| 543 | Implement O/R mapping | 2007-03-05 A |  |  | 0% → 75% | -14d → 9d |  |  |
| 544 | Develop DAO | 2007-03-07 A |  |  | 0% → 75% | -14d → 2d |  |  |
| 545 | Develop Service | 2007-03-09 A |  |  | 0% → 75% | -14d → 0d |  |  |
| 546 | Develop controller and command objects | 2007-03-13 A |  |  | 0% → 75% | -14d → -2d |  |  |
| 547 | Develop JUnit test cases | 2007-03-15 A |  |  | 0% → 75% | -13d → -1d |  |  |
| 548 | **Role Based Authorization** | 2007-03-05 A | 2007-03-30 A |  | 0% → 100% | -18d → none |  |  |
| 549 | Finish Acegi-CSM Tasks | 2007-03-05 A | 2007-03-16 A |  | 0% → 100% | -18d → none |  |  |
| 550 | Implement Study Participant Login/Authorization | 2007-03-19 A | 2007-03-23 A |  | 0% → 100% | -18d → none |  |  |
| 551 | Implement Study Coordinator Login/Authorization | 2007-03-26 A | 2007-03-30 A |  | 0% → 100% | -18d → none |  |  |
| 552 | **Testing (Iter-2)** |  | 2007-04-27 → 2007-04-20 (-7d) | 42d → 37d |  | 4d → 16d |  | was named Testing |
| 557 | **Run Tests** |  | 2007-04-27 → 2007-04-20 (-7d) | 20d → 15d |  | -18d → -6d |  | was named Testing |

| ID | Task | Start | Finish | Duration | Total float | Predecessors | Other |
| --- | --- | --- | --- | --- | --- | --- | --- |
| 560 | Formal Review of Test results Report |  | 2007-04-27 → 2007-04-20 (-7d) | 15d → 10d | 133d → 127d | 899 → 559 |  |
| 563 | Update Installation Guide | 2007-04-02 → 2007-03-22 (-11d) | 2007-04-03 → 2007-03-26 (-8d) | 2d → 3d | -15d → 136d | 511 → 579FS-7d | resources Krikor; Vinay → Rhett; Edmond |
| 574 | **Deployment (Iter-2)** | 2007-04-02 → 2007-04-06 (+4d) |  | 15d → 10d | -15d → -6d |  | was named Deployment |
| 577 | Deploy Prototype for Iteration 1 at Mayo and WF |  |  |  | -18d → -6d | 558, 563 → 558 |  |
| 579 | Finish Iteration 2 | 2007-04-09 → 2007-03-31 (-9d) | 2007-04-09 → 2007-03-31 (-9d) |  | -18d → -6d |  | constraint none → must finish on 2007-03-31 |
| 580 | **Construction Phase Iteration 3** | 2007-03-15 → 2007-04-01 (+17d) | 2007-05-29 → 2007-05-21 (-8d) | 54d? → 36d |  |  |  |
| 582 | **Iteration Planning (Iter-3)** | 2007-04-10 → 2007-04-02 (-8d) | 2007-04-11 → 2007-04-03 (-8d) |  | 142d → 137d |  | was named Iteration Planning |
| 583 | Review and finalize Ucases and Work List for Iteration | 2007-04-10 → 2007-04-02 (-8d) | 2007-04-10 → 2007-04-02 (-8d) |  | 142d → 137d |  |  |
| 584 | Review and finalize assignments for Iteration | 2007-04-11 → 2007-04-03 (-8d) | 2007-04-11 → 2007-04-03 (-8d) |  | 142d → 137d |  |  |
| 585 | **Project Management (Iter-3)** | 2007-03-15 → 2007-04-02 (+18d) | 2007-04-16 → 2007-04-30 (+14d) | 23d → 21d | 0d → 3d |  | was named Project Management |
| 586 | Update Project Plan | 2007-04-12 → 2007-04-04 (-8d) | 2007-04-16 → 2007-04-06 (-10d) |  | 142d → 137d |  |  |
| 587 | **CaAERS CCB (Task 2.10)** | 2007-04-10 → 2007-04-02 (-8d) | 2007-04-10 → 2007-04-02 (-8d) |  | 146d → 141d |  |  |
| 588 | CCB Meetings | 2007-04-10 → 2007-04-02 (-8d) | 2007-04-10 → 2007-04-02 (-8d) |  | 146d → 141d |  |  |
| 589 | **Weekly Team/Developers Meeting** | 2007-03-19 → 2007-04-02 (+14d) | 2007-04-09 → 2007-04-23 (+14d) |  | 0d → 126d |  |  |
| 590 | Weekly Team Meeting 1 | 2007-03-19 → 2007-04-02 (+14d) | 2007-03-19 → 2007-04-02 (+14d) |  | -16d → 141d |  | constraint must start on 2007-03-19 → start no earlier than 2007-04-02 |
| 591 | Weekly Team Meeting 2 | 2007-03-26 → 2007-04-09 (+14d) | 2007-03-26 → 2007-04-09 (+14d) |  | -11d → 136d |  | constraint must start on 2007-03-26 → start no earlier than 2007-04-09 |
| 592 | Weekly Team Meeting 3 | 2007-04-02 → 2007-04-16 (+14d) | 2007-04-02 → 2007-04-16 (+14d) |  | -6d → 131d |  | constraint must start on 2007-04-02 → start no earlier than 2007-04-16 |
| 593 | Weekly Team Meeting 4 | 2007-04-09 → 2007-04-23 (+14d) | 2007-04-09 → 2007-04-23 (+14d) |  | -1d → 126d |  | constraint must start on 2007-04-09 → start no earlier than 2007-04-23 |
| 594 | **Status and Risk Reporting** | 2007-03-16 → 2007-04-06 (+21d) | 2007-04-13 → 2007-04-30 (+17d) | 21d → 17d | 0d → 16d |  |  |
| 595 | Bi-weekly Risk Update in caMP (Task 1.4) | 2007-03-16 → 2007-04-06 (+21d) | 2007-03-16 → 2007-04-06 (+21d) |  | -17d → 137d |  | constraint must start on 2007-03-16 → start no earlier than 2007-04-06 |
| 596 | Bi-weekly Risk Matrix Update Meeting | 2007-03-16 → 2007-04-06 (+21d) | 2007-03-16 → 2007-04-06 (+21d) |  | -17d → 137d |  | constraint must start on 2007-03-16 → start no earlier than 2007-04-06 |
| 597 | Bi-weekly Risk Update in caMP (Task 1.4) | 2007-04-10 → 2007-04-20 (+10d) | 2007-04-10 → 2007-04-20 (+10d) |  | 146d → 127d |  | constraint start no earlier than 2007-03-30 → start no earlier than 2007-04-20 |
| 598 | Bi-weekly Risk Matrix Update Meeting | 2007-03-30 → 2007-04-20 (+21d) | 2007-03-30 → 2007-04-20 (+21d) |  | -7d → 127d |  | constraint must start on 2007-03-30 → start no earlier than 2007-04-20 |
| 599 | Bi-weekly Status Update Meeting with BAH/NCI | 2007-03-23 → 2007-04-13 (+21d) | 2007-03-23 → 2007-04-13 (+21d) |  | -12d → 132d |  | constraint must start on 2007-03-23 → start no earlier than 2007-04-13 |
| 600 | Bi-weekly Status Update Meeting with BAH/NCI | 2007-04-06 → 2007-04-27 (+21d) | 2007-04-06 → 2007-04-27 (+21d) |  | -2d → 122d |  | constraint must start on 2007-04-06 → start no earlier than 2007-04-27 |
| 601 | Monthly Status Report (Task 1.3) | 2007-04-13 → 2007-04-30 (+17d) | 2007-04-13 → 2007-04-30 (+17d) |  |  |  | constraint must finish on 2007-04-13 → must finish on 2007-04-30 |
| 602 | Monthly Risk Matrix Update (Task 1.3) | 2007-04-13 → 2007-04-30 (+17d) | 2007-04-13 → 2007-04-30 (+17d) |  | 143d → 121d |  |  |
| 603 | **Collaboration Management Activities** | 2007-03-15 → 2007-04-05 (+21d) | 2007-04-05 → 2007-04-26 (+21d) |  |  |  |  |
| 604 | Adopters Mtg | 2007-03-15 → 2007-04-05 (+21d) | 2007-03-15 → 2007-04-05 (+21d) |  | -18d → 0d |  | constraint must start on 2007-03-15 → must start on 2007-04-05 |
| 605 | Bi-Weekly AE SIG Meeting | 2007-03-22 → 2007-04-12 (+21d) | 2007-03-22 → 2007-04-12 (+21d) |  | -13d → 133d |  | constraint must start on 2007-03-22 → start no earlier than 2007-04-12 |
| 606 | Adopters Mtg | 2007-03-29 → 2007-04-19 (+21d) | 2007-03-29 → 2007-04-19 (+21d) |  | -8d → 128d |  | constraint must start on 2007-03-29 → start no earlier than 2007-04-19 |
| 607 | Bi-Weekly AE SIG Meeting | 2007-04-05 → 2007-04-26 (+21d) | 2007-04-05 → 2007-04-26 (+21d) |  | -3d → 123d |  | constraint must start on 2007-04-05 → start no earlier than 2007-04-26 |
| 608 | **Environment (Iter-3)** | 2007-04-10 → 2007-04-02 (-8d) | 2007-04-12 → 2007-04-04 (-8d) |  | 144d → 139d |  | was named Environment |
| 609 | Update Environment | 2007-04-10 → 2007-04-02 (-8d) | 2007-04-12 → 2007-04-04 (-8d) |  | 144d → 139d |  |  |
| 610 | **SCM (Iter-3)** | 2007-04-10 → 2007-04-02 (-8d) | 2007-04-16 → 2007-04-06 (-10d) |  | 142d → 137d |  | was named SCM |
| 611 | Manage Repository | 2007-04-10 → 2007-04-02 (-8d) | 2007-04-16 → 2007-04-06 (-10d) |  | 142d → 137d |  |  |
| 612 | **Requirements (Iter-3)** | 2007-04-10 → 2007-04-02 (-8d) | 2007-05-21 → 2007-05-11 (-10d) |  | 117d → 112d |  | was named Requirements |
| 618 | **Updated Use Case Specification and Realization** | 2007-04-10 → 2007-04-02 (-8d) | 2007-05-21 → 2007-05-11 (-10d) |  | 117d → 112d |  |  |
| 619 | Developer draft | 2007-04-10 → 2007-04-02 (-8d) | 2007-04-16 → 2007-04-06 (-10d) |  | 117d → 112d |  |  |
| 620 | Adopters/Collobators Review | 2007-04-17 → 2007-04-09 (-8d) | 2007-04-23 → 2007-04-13 (-10d) |  | 117d → 112d |  |  |
| 621 | Update Use Case Document | 2007-04-24 → 2007-04-16 (-8d) | 2007-04-30 → 2007-04-20 (-10d) |  | 117d → 112d |  |  |
| 622 | Submit Updated Use Case Document to BAH (Task 3.1) | 2007-04-30 → 2007-04-20 (-10d) | 2007-04-30 → 2007-04-20 (-10d) |  | 117d → 112d |  |  |
| 623 | Formal Review of Updated Use Case Document | 2007-05-01 → 2007-04-23 (-8d) | 2007-05-21 → 2007-05-11 (-10d) |  | 117d → 112d |  |  |
| 624 | **Updated SRS Document** | 2007-04-10 → 2007-04-02 (-8d) | 2007-05-21 → 2007-05-11 (-10d) |  | 117d → 112d |  |  |
| 625 | Developer draft | 2007-04-10 → 2007-04-02 (-8d) | 2007-04-16 → 2007-04-06 (-10d) |  | 117d → 112d |  |  |
| 626 | Adopters/Collobators Review | 2007-04-17 → 2007-04-09 (-8d) | 2007-04-23 → 2007-04-13 (-10d) |  | 117d → 112d |  |  |
| 627 | Update SRS | 2007-04-24 → 2007-04-16 (-8d) | 2007-04-30 → 2007-04-20 (-10d) |  | 117d → 112d |  |  |
| 628 | Submit Updated SRS Document to BAH (Task 3.2) | 2007-04-30 → 2007-04-20 (-10d) | 2007-04-30 → 2007-04-20 (-10d) |  | 117d → 112d |  |  |
| 629 | Formal Review of Updated SRS | 2007-05-01 → 2007-04-23 (-8d) | 2007-05-21 → 2007-05-11 (-10d) |  | 117d → 112d |  |  |
| 630 | **Updated UML Static Class Diagram Model** | 2007-04-10 → 2007-04-02 (-8d) | 2007-05-21 → 2007-05-11 (-10d) |  | 117d → 112d |  |  |
| 631 | Developer draft | 2007-04-10 → 2007-04-02 (-8d) | 2007-04-16 → 2007-04-06 (-10d) |  | 117d → 112d |  |  |
| 632 | Adopters/Collobators Review | 2007-04-17 → 2007-04-09 (-8d) | 2007-04-23 → 2007-04-13 (-10d) |  | 117d → 112d |  |  |
| 633 | Update UML | 2007-04-24 → 2007-04-16 (-8d) | 2007-04-30 → 2007-04-20 (-10d) |  | 117d → 112d |  |  |
| 634 | Submit UML to BAH (Task 3.3) | 2007-04-30 → 2007-04-20 (-10d) | 2007-04-30 → 2007-04-20 (-10d) |  | 117d → 112d |  |  |
| 635 | Formal Review of UML | 2007-05-01 → 2007-04-23 (-8d) | 2007-05-21 → 2007-05-11 (-10d) |  | 117d → 112d |  |  |
| 636 | **Analysis and Design (Iter-3)** | 2007-04-10 → 2007-04-02 (-8d) | 2007-05-16 → 2007-05-08 (-8d) | 27d? → 27d | 120d → 115d |  | was named Analysis and Design |
| 637 | **Design Documents** | 2007-04-10 → 2007-04-02 (-8d) | 2007-05-16 → 2007-05-08 (-8d) | 27d? → 27d | 120d → 115d |  |  |
| 638 | **AE Data Collection (cont'd)** | 2007-04-10 → 2007-04-02 (-8d) | 2007-05-02 → 2007-04-24 (-8d) |  | 120d → 115d |  | was named AE Data Collection |
| 639 | Develop appropriate UML Artifacts | 2007-04-10 → 2007-04-02 (-8d) | 2007-04-16 → 2007-04-06 (-10d) |  | 120d → 115d |  |  |
| 640 | Create Design Document | 2007-04-17 → 2007-04-09 (-8d) | 2007-04-23 → 2007-04-13 (-10d) |  | 120d → 115d |  |  |
| 641 | Adopters/Collaborators Review | 2007-04-24 → 2007-04-16 (-8d) | 2007-04-30 → 2007-04-20 (-10d) |  | 120d → 115d |  |  |
| 642 | Developers Update | 2007-05-01 → 2007-04-23 (-8d) | 2007-05-02 → 2007-04-24 (-8d) |  | 120d → 115d |  |  |
| 643 | **Candidate AE** | 2007-04-10 → 2007-04-02 (-8d) | 2007-04-10 → 2007-04-02 (-8d) | 1d? → 1d | 136d → 131d |  |  |
| 644 | Develop appropriate UML Artifacts | 2007-04-10 → 2007-04-02 (-8d) | 2007-04-10 → 2007-04-02 (-8d) | 1d? → 1d | 146d → 141d |  |  |
| 645 | Create Design Document | 2007-04-10 → 2007-04-02 (-8d) | 2007-04-10 → 2007-04-02 (-8d) | 1d? → 1d | 146d → 141d |  |  |
| 646 | Adopters/Collaborators Review | 2007-04-10 → 2007-04-02 (-8d) | 2007-04-10 → 2007-04-02 (-8d) | 1d? → 1d | 146d → 141d |  |  |
| 647 | Developers Update | 2007-04-10 → 2007-04-02 (-8d) | 2007-04-10 → 2007-04-02 (-8d) | 1d? → 1d | 136d → 131d |  |  |
| 649 | Develop appropriate UML Artifacts | 2007-04-10 → 2007-04-02 (-8d) | 2007-04-16 → 2007-04-02 (-14d) | 5d → 1d | 120d → 141d |  | resources Krikor → Kulasekeran |
| 650 | Create Design Document | 2007-04-17 → 2007-04-02 (-15d) | 2007-04-23 → 2007-04-02 (-21d) | 5d → 1d | 120d → 141d | 649 → none | resources Krikor → Kulasekeran |
| 651 | Adopters/Collaborators Review | 2007-04-24 → 2007-04-02 (-22d) | 2007-04-30 → 2007-04-02 (-28d) | 5d → 1d | 120d → 141d | 650 → none | resources Mayo; WF → none |

| ID | Task | Start | Finish | Duration | Complete | Total float | Predecessors | Other |
| --- | --- | --- | --- | --- | --- | --- | --- | --- |
| 652 | Developers Update | 2007-05-01 → 2007-04-02 (-29d) | 2007-05-02 → 2007-04-02 (-30d) | 2d → 1d |  | 120d → 141d | 651 → none | resources Krikor → Kulasekeran |
| 654 | Develop appropriate UML Artifacts | 2007-04-10 → 2007-04-02 (-8d) | 2007-04-16 → 2007-04-06 (-10d) |  |  | 120d → 115d |  |  |
| 655 | Create Design Document | 2007-04-17 → 2007-04-09 (-8d) | 2007-04-23 → 2007-04-13 (-10d) |  |  | 120d → 115d |  |  |
| 656 | Adopters/Collaborators Review | 2007-04-24 → 2007-04-16 (-8d) | 2007-04-30 → 2007-04-20 (-10d) |  |  | 120d → 115d |  |  |
| 657 | Developers Update | 2007-05-01 → 2007-04-23 (-8d) | 2007-05-02 → 2007-04-24 (-8d) |  |  | 120d → 115d |  |  |
| 668 | Deliver Design document to BAH (Task 3.4) | 2007-05-02 → 2007-04-24 (-8d) | 2007-05-02 → 2007-04-24 (-8d) |  |  | 130d → 125d | 652, 642, 647, 657 → 642, 647, 657 |  |
| 669 | Deliver UML to BAH (Task 3.3) | 2007-05-02 → 2007-04-24 (-8d) | 2007-05-02 → 2007-04-24 (-8d) |  |  | 120d → 115d | 652, 642, 647, 657 → 642, 647, 657 |  |
| 670 | Formal Review by BAH | 2007-05-03 → 2007-04-25 (-8d) | 2007-05-16 → 2007-05-08 (-8d) |  |  | 120d → 115d |  |  |
| 671 | **Modeling** | 2007-04-10 → 2007-04-02 (-8d) | 2007-04-16 → 2007-04-06 (-10d) |  |  | 142d → 137d |  | was named Domain Model |
| 673 | Update Domain Analysis Model/BRIDG Harmonization | 2007-04-10 → 2007-04-02 (-8d) | 2007-04-16 → 2007-04-06 (-10d) |  |  | 142d → 137d |  | was named Update Model/BRIDG Harmonization; resources Ram → Sean |
| 675 | **Semantic Integration** | 2007-04-10 → 2007-04-02 (-8d) | 2007-05-07 → 2007-04-09 (-28d) | 20d → 6d |  | 127d → 136d |  | was named Technical/Architecture Guide |
| 676 | CDE Gap Analysis/Report | 2007-04-10 → 2007-04-02 (-8d) | 2007-04-16 → 2007-04-06 (-10d) |  |  | 127d → 136d |  | was named Update Tech/Arch Guide; resources Vinay; Joshua → Sean |
| 677 | Meeting with VCDE | 2007-04-16 → 2007-04-09 (-7d) | 2007-04-16 → 2007-04-09 (-7d) | 0d → 1d |  | 127d → 136d |  | was named Deliver to BAH (Task 2.8); resources Edmond → Sean; Brian D; Lynne W; Brenda M |
| 678 | **Implementation (Iter-3)** | 2007-04-10 → 2007-04-02 (-8d) | 2007-05-01 → 2007-04-23 (-8d) |  |  | 111d → 106d |  | was named Implementation |
| 679 | **Web interface** | 2007-04-10 → 2007-04-02 (-8d) | 2007-04-16 → 2007-04-06 (-10d) |  |  | 122d → 117d |  |  |
| 680 | UI Refinement | 2007-04-10 → 2007-04-02 (-8d) | 2007-04-16 → 2007-04-06 (-10d) |  |  | 122d → 117d |  | was named Fourth web interface iteration |
| 684 | **Implement Use Cases** | 2007-04-10 → 2007-04-02 (-8d) | 2007-05-01 → 2007-04-23 (-8d) |  |  | 111d → 106d |  |  |
| 685 | **New Version of Study** | 2007-04-10 → 2007-04-02 (-8d) | 2007-05-01 → 2007-04-23 (-8d) |  |  | 111d → 106d |  |  |
| 686 | Implement O/R mapping | 2007-04-10 → 2007-04-02 (-8d) | 2007-04-16 → 2007-04-06 (-10d) |  |  | 111d → 106d |  | resources Krikor → Kulasekaran |
| 687 | Develop DAO | 2007-04-12 → 2007-04-04 (-8d) | 2007-04-25 → 2007-04-17 (-8d) |  |  | 111d → 106d |  | resources Krikor → Kulasekaran |
| 688 | Develop Service | 2007-04-16 → 2007-04-06 (-10d) | 2007-04-27 → 2007-04-19 (-8d) |  |  | 111d → 106d |  | resources Krikor → Kulasekaran |
| 689 | Develop controller and command objects | 2007-04-18 → 2007-04-10 (-8d) | 2007-05-01 → 2007-04-23 (-8d) |  |  | 111d → 106d |  | resources Krikor → Kulasekaran |
| 690 | Develop JUnit test cases | 2007-04-20 → 2007-04-12 (-8d) | 2007-04-30 → 2007-04-20 (-10d) |  |  | 112d → 107d |  | resources Krikor → Kulasekaran |
| 691 | **AE Data Collection (cont'd)** | 2007-04-10 → 2007-04-02 (-8d) | 2007-05-01 → 2007-04-23 (-8d) |  |  | 111d → 106d |  |  |
| 692 | Implement O/R mapping | 2007-04-10 → 2007-04-02 (-8d) | 2007-04-16 → 2007-04-06 (-10d) |  |  | 111d → 106d |  |  |
| 693 | Develop DAO | 2007-04-12 → 2007-04-04 (-8d) | 2007-04-25 → 2007-04-17 (-8d) |  |  | 111d → 106d |  |  |
| 694 | Develop Service | 2007-04-16 → 2007-04-06 (-10d) | 2007-04-27 → 2007-04-19 (-8d) |  |  | 111d → 106d |  |  |
| 695 | Develop controller and command objects | 2007-04-18 → 2007-04-10 (-8d) | 2007-05-01 → 2007-04-23 (-8d) |  |  | 111d → 106d |  |  |
| 696 | Develop JUnit test cases | 2007-04-20 → 2007-04-12 (-8d) | 2007-04-30 → 2007-04-20 (-10d) |  |  | 112d → 107d |  |  |
| 697 | **Candidate AE** | 2007-04-10 → 2007-04-02 (-8d) | 2007-05-01 → 2007-04-23 (-8d) |  |  | 111d → 106d |  |  |
| 698 | Implement O/R mapping | 2007-04-10 → 2007-04-02 (-8d) | 2007-04-16 → 2007-04-06 (-10d) |  |  | 111d → 106d |  |  |
| 699 | Develop DAO | 2007-04-12 → 2007-04-04 (-8d) | 2007-04-25 → 2007-04-17 (-8d) |  |  | 111d → 106d |  |  |
| 700 | Develop Service | 2007-04-16 → 2007-04-06 (-10d) | 2007-04-27 → 2007-04-19 (-8d) |  |  | 111d → 106d |  |  |
| 701 | Develop controller and command objects | 2007-04-18 → 2007-04-10 (-8d) | 2007-05-01 → 2007-04-23 (-8d) |  |  | 111d → 106d |  |  |
| 702 | Develop JUnit test cases | 2007-04-20 → 2007-04-12 (-8d) | 2007-04-30 → 2007-04-20 (-10d) |  |  | 112d → 107d |  |  |
| 710 | Implement O/R mapping | 2007-04-10 → 2007-04-02 (-8d) | 2007-04-16 → 2007-04-06 (-10d) |  |  | 111d → 106d |  |  |
| 711 | Develop DAO | 2007-04-12 → 2007-04-04 (-8d) | 2007-04-25 → 2007-04-17 (-8d) |  |  | 111d → 106d |  |  |
| 712 | Develop Service | 2007-04-16 → 2007-04-06 (-10d) | 2007-04-27 → 2007-04-19 (-8d) |  |  | 111d → 106d |  |  |
| 713 | Develop controller and command objects | 2007-04-18 → 2007-04-10 (-8d) | 2007-05-01 → 2007-04-23 (-8d) |  |  | 111d → 106d |  |  |
| 714 | Develop JUnit test cases | 2007-04-20 → 2007-04-12 (-8d) | 2007-04-30 → 2007-04-20 (-10d) |  |  | 112d → 107d |  |  |
| 727 | **Testing (Iter-3)** | 2007-04-10 → 2007-04-02 (-8d) | 2007-05-29 → 2007-05-21 (-8d) | 36d? → 36d |  | 111d → 106d |  | was named Testing |
| 729 | Update Test Plan Document (Task 3.6) | 2007-04-10 → 2007-04-02 (-8d) | 2007-04-23 → 2007-04-13 (-10d) |  |  | 136d → 122d |  |  |
| 730 | Submit to BAH | 2007-04-23 → 2007-04-13 (-10d) | 2007-04-23 → 2007-04-13 (-10d) |  |  | 136d → 122d |  |  |
| 731 | Formal Review by BAH | 2007-04-24 → 2007-04-16 (-8d) | 2007-04-24 → 2007-04-27 (+3d) | 1d? → 10d |  | 136d → 122d |  |  |
| 732 | **Run Tests** | 2007-05-02 → 2007-04-24 (-8d) | 2007-05-29 → 2007-05-21 (-8d) |  |  | 111d → 106d |  | was named Testing |
| 733 | Testing | 2007-05-02 → 2007-04-24 (-8d) | 2007-05-08 → 2007-04-30 (-8d) |  |  | 111d → 106d |  |  |
| 734 | Submit Test Results Report (Task 3.8) | 2007-05-08 → 2007-04-30 (-8d) | 2007-05-08 → 2007-04-30 (-8d) |  |  | 111d → 106d |  | was named Submit Test Results Report (Task 3.7) |
| 735 | Formal Review of Test results Report | 2007-05-09 → 2007-05-01 (-8d) | 2007-05-29 → 2007-05-21 (-8d) |  |  | 111d → 106d |  |  |
| 738 | Update Installation Guide | 2007-05-02 → 2007-04-20 (-12d) | 2007-05-03 → 2007-04-24 (-9d) | 2d → 3d |  | 128d → 115d | 678 → none | constraint none → start no earlier than 2007-04-20; resources Krikor; Vinay → Rhett; Edmond |
| 749 | **Deployment (Iter-3)** | 2007-05-02 → 2007-04-30 (-2d) | 2007-05-22 → 2007-05-14 (-8d) | 15d → 10d |  | 116d → 111d |  | was named Deployment |
| 750 | Submit prototype code (Task 3.5) | 2007-05-08 → 2007-04-30 (-8d) | 2007-05-08 → 2007-04-30 (-8d) |  |  | 116d → 111d |  |  |
| 751 | Formal Review of Code by BAH | 2007-05-09 → 2007-05-01 (-8d) | 2007-05-22 → 2007-05-14 (-8d) |  |  | 116d → 111d |  |  |
| 752 | Deploy Prototype for Iteration 1 at Mayo and WF | 2007-05-09 → 2007-05-01 (-8d) | 2007-05-09 → 2007-05-01 (-8d) |  |  | 125d → 120d | 733, 738 → 733 |  |
| 753 | Finish Iteration 3 | 2007-05-07 → 2007-05-01 (-6d) | 2007-05-07 → 2007-05-01 (-6d) |  |  | 0d → 120d | Begin Iteration 3FS+20d → 752 | baseline start 2007-05-02 → 2007-03-29; baseline finish 2007-05-02 → 2007-04-04 |
| 754 | **Construction Phase Iteration 4** | 2007-05-10 → 2007-05-01 (-9d) | 2007-06-12 → 2007-06-13 (+1d) | 23d → 32d |  |  | Iteration 3 Review and Feedback → none |  |
| 755 | Begin Iteration 4 | 2007-05-10 → 2007-05-01 (-9d) | 2007-05-10 → 2007-05-01 (-9d) |  |  |  |  | constraint none → must start on 2007-05-01 |
| 861 | **Triggers/Notification (cont'd)** | 2007-04-10 → 2007-05-07 (+27d) | 2007-05-01 → 2007-05-28 (+27d) |  |  | 111d → 91d |  |  |
| 888 | **End User Guide Draft** | 2007-06-01 → 2007-05-25 (-7d) | 2007-06-07 → 2007-05-31 (-7d) |  |  | 104d → 98d |  |  |
| 891 | **Test Plan** | 2007-04-10 → 2007-05-07 (+27d) | 2007-04-24 → 2007-05-25 (+31d) | 11d? → 15d |  | 136d → 102d |  |  |
| 895 | **RTM** | 2007-04-24 → 2007-05-07 (+13d) | 2007-04-30 → 2007-05-11 (+11d) |  |  | 132d → 112d |  |  |
| 896 | Create RTM | 2007-04-24 → 2007-05-07 (+13d) | 2007-04-30 → 2007-05-11 (+11d) |  |  | 132d → 112d | Create Functional Tests for Use Cases → none |  |
| 898 | Testing | 2007-04-10 → 2007-05-07 (+27d) | 2007-05-07 → 2007-05-18 (+11d) | 20d → 10d |  | 127d → 97d |  | resources none → Renee; David; Natasha; baseline start 2007-04-05 → none; baseline finish 2007-05-02 → none |
| 899 | Submit Test Results Report (Task 3.7) | 2007-04-06 → 2007-05-18 (+42d) | 2007-04-06 → 2007-05-18 (+42d) |  |  | 133d → 97d | 558 → 898 |  |
| 905 | Finish Iteration 4 | 2007-06-07 → 2007-05-31 (-7d) | 2007-06-07 → 2007-05-31 (-7d) |  |  |  | 755FS+20d → none | constraint none → must finish on 2007-05-31 |
| 906 | **Construction Phase Iteration 5** | 2007-06-12 → 2007-06-01 (-11d) |  | 23d → 31d |  |  | Iteration 4 Review and Feedback → none |  |
| 907 | Begin Iteration 5 | 2007-06-12 → 2007-06-01 (-11d) | 2007-06-12 → 2007-06-01 (-11d) |  |  |  |  | constraint none → must start on 2007-06-01; baseline start 2007-06-07 → 2007-05-07; baseline finish 2007-06-07 → 2007-05-07 |
| 978 | **Institution AE Notification Trigger** | 2007-04-10 → 2007-06-05 (+56d) | 2007-05-02 → 2007-06-20 (+49d) | 17d → 12d |  | 120d → 74d |  |  |
| 1029 | **Testing** | 2007-02-14 A → 2007-06-05 (+111d) | 2007-03-21 → 2007-07-02 (+103d) | 26d → 20d | 22% → 0% | 160d → 76d |  |  |
| 1030 | Testing | 2007-05-11 → 2007-06-05 (+25d) | 2007-06-07 → 2007-06-18 (+11d) | 20d → 10d |  | 104d → 76d |  | resources none → Renee; David; Natasha; baseline start 2007-05-08 → none; baseline finish 2007-06-04 → none |
| 1039 | Finish Iteration 5 | 2007-07-10 → 2007-06-30 (-10d) | 2007-07-10 → 2007-06-30 (-10d) |  |  |  | 907FS+20d → none | constraint none → must finish on 2007-06-30; baseline start 2007-07-05 → 2007-06-04; baseline finish 2007-07-05 → 2007-06-04 |

| ID | Task | Start | Finish | Duration | Complete | Total float | Predecessors | Other |
| --- | --- | --- | --- | --- | --- | --- | --- | --- |
| 1040 | **Construction Phase Iteration 6** | 2007-07-13 → 2007-07-02 (-11d) | 2007-08-15 → 2007-08-07 (-8d) | 23d → 27d |  |  | Iteration 5 Review and Feedback → none |  |
| 1041 | Begin Iteration 6 | 2007-07-13 → 2007-07-02 (-11d) | 2007-07-13 → 2007-07-02 (-11d) |  |  |  |  | constraint none → must start on 2007-07-02; baseline start 2007-07-10 → 2007-05-07; baseline finish 2007-07-10 → 2007-05-07 |
| 1155 | **Test Data** | 2007-02-14 → 2007-07-04 (+140d) | 2007-03-13 → 2007-07-31 (+140d) |  |  | 166d → 55d |  |  |
| 1156 | Create test data set (Task 3.7) | 2007-02-14 → 2007-07-04 (+140d) | 2007-02-27 → 2007-07-17 (+140d) |  |  | 166d → 55d | 305 → none |  |
| 1157 | Submit for Review | 2007-02-27 → 2007-07-17 (+140d) | 2007-02-27 → 2007-07-17 (+140d) |  |  | 166d → 55d |  |  |
| 1158 | Review | 2007-02-28 → 2007-07-18 (+140d) | 2007-03-13 → 2007-07-31 (+140d) |  |  | 166d → 55d |  |  |
| 1159 | **Testing** | 2007-02-26 A → 2007-07-04 (+128d) | 2007-03-21 → 2007-08-07 (+139d) | 18d → 25d | 17% → 0% | 160d → 30d |  |  |
| 1160 | Testing | 2007-06-13 → 2007-07-04 (+21d) | 2007-07-10 → 2007-07-24 (+14d) | 20d → 15d |  | 81d → 30d |  | resources none → Renee; David; Natasha; baseline start 2007-06-08 → none; baseline finish 2007-07-05 → none |
| 1173 | Finish Iteration 6 | 2007-08-10 → 2007-07-31 (-10d) | 2007-08-10 → 2007-07-31 (-10d) |  |  |  | 1041FS+20d → none | constraint none → must finish on 2007-07-31 |
| 1174 | **Construction Phase Iteration 7** | 2007-08-15 → 2007-08-01 (-14d) | 2007-09-17 → 2007-09-13 (-4d) | 23d → 32d |  |  | Iteration 6 Review and Feedback → none |  |
| 1175 | Begin Iteration 7 | 2007-08-15 → 2007-08-01 (-14d) | 2007-08-15 → 2007-08-01 (-14d) |  |  |  |  | constraint none → must start on 2007-08-01 |
| 1183 | Review | 2007-03-15 → 2007-08-10 (+148d) | 2007-03-28 → 2007-08-23 (+148d) |  |  | 155d → 33d | 1242 → 1182 | resources BAH; Mayo; WF → BAH; NCI; Mayo; WF |
| 1240 | **Test Data** | 2007-03-01 → 2007-08-08 (+160d) | 2007-03-28 → 2007-09-04 (+160d) |  |  | 155d → 30d |  |  |
| 1242 | Submit for Review | 2007-03-14 → 2007-08-21 (+160d) | 2007-03-14 → 2007-08-21 (+160d) |  |  | 155d → 30d | Create test data set (Task 3.7) → 1241 |  |
| 1243 | Review | 2007-04-24 → 2007-08-22 (+120d) | 2007-05-07 → 2007-09-04 (+120d) |  |  | 127d → 30d | Submit for Review → 1242 |  |
| 1245 | Testing | 2007-07-16 → 2007-08-03 (+18d) | 2007-08-10 → 2007-08-30 (+20d) |  |  | 58d → 23d | none → 1178 | resources none → Renee; David; Natasha; baseline start 2007-07-11 → none; baseline finish 2007-08-07 → none |
| 1263 | Finish Iteration 7 | 2007-09-12 → 2007-08-31 (-12d) | 2007-09-12 → 2007-08-31 (-12d) |  |  |  | 1175FS+20d → none | constraint none → must finish on 2007-08-31 |
| 1264 | Finish Construction Phase | 2007-09-17 → 2007-08-31 (-17d) | 2007-09-17 → 2007-08-31 (-17d) |  |  |  | Iteration 7 Review and Feedback → 1263 |  |
| 1265 | **Transition Phase** | 2007-09-18 → 2007-09-03 (-15d) | 2007-10-31 → 2007-10-16 (-15d) |  |  |  |  |  |
| 1266 | Deployment Plan (Task 4.1) | 2007-09-18 → 2007-09-03 (-15d) | 2007-09-19 → 2007-09-04 (-15d) |  |  |  |  |  |
| 1267 | Deployment | 2007-09-20 → 2007-09-05 (-15d) | 2007-10-03 → 2007-09-18 (-15d) |  |  |  |  |  |
| 1268 | Deployment Report (Task 4.2) | 2007-09-18 → 2007-09-03 (-15d) | 2007-09-18 → 2007-09-03 (-15d) |  |  |  |  |  |
| 1269 | Code Release Updates (if needed) (Task 4.3) | 2007-10-04 → 2007-09-19 (-15d) | 2007-10-31 → 2007-10-16 (-15d) |  |  |  |  |  |
| 1270 | Guide Updates (if needed) | 2007-09-18 → 2007-09-03 (-15d) | 2007-10-01 → 2007-09-14 (-17d) |  |  |  |  |  |
| 1271 | **Project Closing Activities** | 2007-09-18 → 2007-09-03 (-15d) | 2007-10-01 → 2007-09-14 (-17d) |  |  |  |  |  |
| 1272 | Lessons Learned (Task 1.6) | 2007-09-18 → 2007-09-03 (-15d) | 2007-10-01 → 2007-09-14 (-17d) |  |  |  |  |  |
| 1273 | Archiving | 2007-09-18 → 2007-09-03 (-15d) | 2007-10-01 → 2007-09-14 (-17d) |  |  |  |  |  |
| 1274 | Contract Closeout | 2007-09-18 → 2007-09-03 (-15d) | 2007-10-01 → 2007-09-14 (-17d) |  |  |  |  |  |

## Version 6 (saved 2007-03-22)

Note of the change: SVN-Revision: 987

Last finish stays 2007-10-16.

Removed: 790 MedDRA; 791 Triggers/Notification

Changed:

| ID | Task | Total float | Other |
| --- | --- | --- | --- |
| 789 | 1st Construction Phase F2F Meeting | 90d → 0d | was named DCP Reqts (Continued); constraint none → must start on 2007-05-03; resources Sean → All |

## Version 7 (saved 2007-03-23)

Note of the change: SVN-Revision: 1109

Last finish stays 2007-10-16.

Added:

| ID | Task | Duration | Start | Finish | Resources |
| --- | --- | --- | --- | --- | --- |
| 616 | Begin Talks with AdEERS Tech. POC | 3d | 2007-04-02 | 2007-04-04 | Ram; Sean; Edmond |

Changed:

| ID | Task | Start | Finish | Duration | Total float | Predecessors |
| --- | --- | --- | --- | --- | --- | --- |
| 580 | **Construction Phase Iteration 3** |  | 2007-05-21 → 2007-05-23 (+2d) | 36d → 38d |  |  |
| 613 | **Requirements Gathering and Elucidation** |  | 2007-04-03 → 2007-04-04 (+1d) | 2d → 3d | 140d → 139d |  |
| 637 | **Analysis and Design (Iter-3)** |  | 2007-05-08 → 2007-05-10 (+2d) | 27d → 29d | 115d → 113d |  |
| 638 | **Design Documents** |  | 2007-05-08 → 2007-05-10 (+2d) | 27d → 29d | 115d → 113d |  |
| 639 | **AE Data Collection (cont'd)** | 2007-04-02 → 2007-04-04 (+2d) | 2007-04-24 → 2007-04-26 (+2d) |  | 115d → 113d |  |
| 640 | Develop appropriate UML Artifacts | 2007-04-02 → 2007-04-04 (+2d) | 2007-04-06 → 2007-04-10 (+4d) |  | 115d → 113d | none → 584 |
| 641 | Create Design Document | 2007-04-09 → 2007-04-11 (+2d) | 2007-04-13 → 2007-04-17 (+4d) |  | 115d → 113d |  |
| 642 | Adopters/Collaborators Review | 2007-04-16 → 2007-04-18 (+2d) | 2007-04-20 → 2007-04-24 (+4d) |  | 115d → 113d |  |
| 643 | Developers Update | 2007-04-23 → 2007-04-25 (+2d) | 2007-04-24 → 2007-04-26 (+2d) |  | 115d → 113d |  |
| 669 | Deliver Design document to BAH (Task 3.4) | 2007-04-24 → 2007-04-26 (+2d) | 2007-04-24 → 2007-04-26 (+2d) |  | 125d → 123d |  |
| 670 | Deliver UML to BAH (Task 3.3) | 2007-04-24 → 2007-04-26 (+2d) | 2007-04-24 → 2007-04-26 (+2d) |  | 115d → 113d |  |
| 671 | Formal Review by BAH | 2007-04-25 → 2007-04-27 (+2d) | 2007-05-08 → 2007-05-10 (+2d) |  | 115d → 113d |  |
| 673 | Update Implementation Model | 2007-04-02 → 2007-04-04 (+2d) | 2007-04-03 → 2007-04-05 (+2d) |  | 140d → 138d | none → 584 |
| 679 | **Implementation (Iter-3)** |  | 2007-04-23 → 2007-04-25 (+2d) | 16d → 18d | 106d → 104d |  |
| 685 | **Implement Use Cases** | 2007-04-02 → 2007-04-04 (+2d) | 2007-04-23 → 2007-04-25 (+2d) |  | 106d → 104d | none → 584 |
| 686 | **New Version of Study** | 2007-04-02 → 2007-04-04 (+2d) | 2007-04-23 → 2007-04-25 (+2d) |  | 106d → 104d |  |
| 687 | Implement O/R mapping | 2007-04-02 → 2007-04-04 (+2d) | 2007-04-06 → 2007-04-10 (+4d) |  | 106d → 104d | none → 584 |
| 688 | Develop DAO | 2007-04-04 → 2007-04-06 (+2d) | 2007-04-17 → 2007-04-19 (+2d) |  | 106d → 104d |  |
| 689 | Develop Service | 2007-04-06 → 2007-04-10 (+4d) | 2007-04-19 → 2007-04-23 (+4d) |  | 106d → 104d |  |
| 690 | Develop controller and command objects | 2007-04-10 → 2007-04-12 (+2d) | 2007-04-23 → 2007-04-25 (+2d) |  | 106d → 104d |  |
| 691 | Develop JUnit test cases | 2007-04-12 → 2007-04-16 (+4d) | 2007-04-20 → 2007-04-24 (+4d) |  | 107d → 105d |  |
| 692 | **AE Data Collection (cont'd)** | 2007-04-02 → 2007-04-04 (+2d) | 2007-04-23 → 2007-04-25 (+2d) |  | 106d → 104d |  |
| 693 | Implement O/R mapping | 2007-04-02 → 2007-04-04 (+2d) | 2007-04-06 → 2007-04-10 (+4d) |  | 106d → 104d |  |
| 694 | Develop DAO | 2007-04-04 → 2007-04-06 (+2d) | 2007-04-17 → 2007-04-19 (+2d) |  | 106d → 104d |  |
| 695 | Develop Service | 2007-04-06 → 2007-04-10 (+4d) | 2007-04-19 → 2007-04-23 (+4d) |  | 106d → 104d |  |
| 696 | Develop controller and command objects | 2007-04-10 → 2007-04-12 (+2d) | 2007-04-23 → 2007-04-25 (+2d) |  | 106d → 104d |  |
| 697 | Develop JUnit test cases | 2007-04-12 → 2007-04-16 (+4d) | 2007-04-20 → 2007-04-24 (+4d) |  | 107d → 105d |  |
| 698 | **Candidate AE** | 2007-04-02 → 2007-04-04 (+2d) | 2007-04-23 → 2007-04-25 (+2d) |  | 106d → 104d |  |
| 699 | Implement O/R mapping | 2007-04-02 → 2007-04-04 (+2d) | 2007-04-06 → 2007-04-10 (+4d) |  | 106d → 104d |  |
| 700 | Develop DAO | 2007-04-04 → 2007-04-06 (+2d) | 2007-04-17 → 2007-04-19 (+2d) |  | 106d → 104d |  |
| 701 | Develop Service | 2007-04-06 → 2007-04-10 (+4d) | 2007-04-19 → 2007-04-23 (+4d) |  | 106d → 104d |  |
| 702 | Develop controller and command objects | 2007-04-10 → 2007-04-12 (+2d) | 2007-04-23 → 2007-04-25 (+2d) |  | 106d → 104d |  |
| 703 | Develop JUnit test cases | 2007-04-12 → 2007-04-16 (+4d) | 2007-04-20 → 2007-04-24 (+4d) |  | 107d → 105d |  |
| 704 | **Solicted AE** | 2007-04-02 → 2007-04-04 (+2d) | 2007-04-23 → 2007-04-25 (+2d) |  | 106d → 104d |  |
| 705 | Implement O/R mapping | 2007-04-02 → 2007-04-04 (+2d) | 2007-04-06 → 2007-04-10 (+4d) |  | 106d → 104d |  |
| 706 | Develop DAO | 2007-04-04 → 2007-04-06 (+2d) | 2007-04-17 → 2007-04-19 (+2d) |  | 106d → 104d |  |
| 707 | Develop Service | 2007-04-06 → 2007-04-10 (+4d) | 2007-04-19 → 2007-04-23 (+4d) |  | 106d → 104d |  |
| 708 | Develop controller and command objects | 2007-04-10 → 2007-04-12 (+2d) | 2007-04-23 → 2007-04-25 (+2d) |  | 106d → 104d |  |
| 709 | Develop JUnit test cases | 2007-04-12 → 2007-04-16 (+4d) | 2007-04-20 → 2007-04-24 (+4d) |  | 107d → 105d |  |
| 710 | **Triggers and Notification (cont'd)** | 2007-04-02 → 2007-04-04 (+2d) | 2007-04-23 → 2007-04-25 (+2d) |  | 106d → 104d |  |
| 711 | Implement O/R mapping | 2007-04-02 → 2007-04-04 (+2d) | 2007-04-06 → 2007-04-10 (+4d) |  | 106d → 104d |  |
| 712 | Develop DAO | 2007-04-04 → 2007-04-06 (+2d) | 2007-04-17 → 2007-04-19 (+2d) |  | 106d → 104d |  |
| 713 | Develop Service | 2007-04-06 → 2007-04-10 (+4d) | 2007-04-19 → 2007-04-23 (+4d) |  | 106d → 104d |  |
| 714 | Develop controller and command objects | 2007-04-10 → 2007-04-12 (+2d) | 2007-04-23 → 2007-04-25 (+2d) |  | 106d → 104d |  |
| 715 | Develop JUnit test cases | 2007-04-12 → 2007-04-16 (+4d) | 2007-04-20 → 2007-04-24 (+4d) |  | 107d → 105d |  |
| 716 | **Reports: Create Report Form** | 2007-04-02 → 2007-04-04 (+2d) | 2007-04-23 → 2007-04-25 (+2d) |  | 106d → 104d |  |
| 717 | Implement O/R mapping | 2007-04-02 → 2007-04-04 (+2d) | 2007-04-06 → 2007-04-10 (+4d) |  | 106d → 104d |  |
| 718 | Develop DAO | 2007-04-04 → 2007-04-06 (+2d) | 2007-04-17 → 2007-04-19 (+2d) |  | 106d → 104d |  |
| 719 | Develop Service | 2007-04-06 → 2007-04-10 (+4d) | 2007-04-19 → 2007-04-23 (+4d) |  | 106d → 104d |  |
| 720 | Develop controller and command objects | 2007-04-10 → 2007-04-12 (+2d) | 2007-04-23 → 2007-04-25 (+2d) |  | 106d → 104d |  |
| 721 | Develop JUnit test cases | 2007-04-12 → 2007-04-16 (+4d) | 2007-04-20 → 2007-04-24 (+4d) |  | 107d → 105d |  |
| 722 | **Data Exchange: Import Data (cont'd)** | 2007-04-02 → 2007-04-04 (+2d) | 2007-04-23 → 2007-04-25 (+2d) |  | 106d → 104d |  |
| 723 | Implement O/R mapping | 2007-04-02 → 2007-04-04 (+2d) | 2007-04-06 → 2007-04-10 (+4d) |  | 106d → 104d |  |
| 724 | Develop DAO | 2007-04-04 → 2007-04-06 (+2d) | 2007-04-17 → 2007-04-19 (+2d) |  | 106d → 104d |  |
| 725 | Develop Service | 2007-04-06 → 2007-04-10 (+4d) | 2007-04-19 → 2007-04-23 (+4d) |  | 106d → 104d |  |
| 726 | Develop controller and command objects | 2007-04-10 → 2007-04-12 (+2d) | 2007-04-23 → 2007-04-25 (+2d) |  | 106d → 104d |  |
| 727 | Develop JUnit test cases | 2007-04-12 → 2007-04-16 (+4d) | 2007-04-20 → 2007-04-24 (+4d) |  | 107d → 105d |  |
| 728 | **Testing (Iter-3)** |  | 2007-05-21 → 2007-05-23 (+2d) | 36d → 38d | 106d → 104d |  |
| 733 | **Run Tests** | 2007-04-24 → 2007-04-26 (+2d) | 2007-05-21 → 2007-05-23 (+2d) |  | 106d → 104d |  |
| 734 | Testing | 2007-04-24 → 2007-04-26 (+2d) | 2007-04-30 → 2007-05-02 (+2d) |  | 106d → 104d |  |
| 735 | Submit Test Results Report (Task 3.8) | 2007-04-30 → 2007-05-02 (+2d) | 2007-04-30 → 2007-05-02 (+2d) |  | 106d → 104d |  |
| 736 | Formal Review of Test results Report | 2007-05-01 → 2007-05-03 (+2d) | 2007-05-21 → 2007-05-23 (+2d) |  | 106d → 104d |  |
| 750 | **Deployment (Iter-3)** | 2007-04-30 → 2007-05-02 (+2d) | 2007-05-14 → 2007-05-16 (+2d) |  | 111d → 109d |  |
| 751 | Submit prototype code (Task 3.5) | 2007-04-30 → 2007-05-02 (+2d) | 2007-04-30 → 2007-05-02 (+2d) |  | 111d → 109d |  |
| 752 | Formal Review of Code by BAH | 2007-05-01 → 2007-05-03 (+2d) | 2007-05-14 → 2007-05-16 (+2d) |  | 111d → 109d |  |
| 753 | Deploy Prototype for Iteration 1 at Mayo and WF | 2007-05-01 → 2007-05-03 (+2d) | 2007-05-01 → 2007-05-03 (+2d) |  | 120d → 118d |  |
| 754 | Finish Iteration 3 | 2007-05-01 → 2007-05-03 (+2d) | 2007-05-01 → 2007-05-03 (+2d) |  | 120d → 118d |  |

## Version 8 (saved 2007-04-10)

Note of the change: Updated at beginning of Construction Phase - Iteration 3

Last finish stays 2007-10-16. Complete tasks 297 → 382.

Added:

| ID | Task | Duration | Start | Finish | Predecessors | Resources |
| --- | --- | --- | --- | --- | --- | --- |
| 618 | Bulk Routine AE Loading | 1d | 2007-04-02 | 2007-04-02 |  | Sean; Adopters |
| 688 | Complete Attribution Page | 3d | 2007-04-04 | 2007-04-06 |  | Rhett |
| 689 | Treatment | 2d | 2007-04-09 | 2007-04-10 | 688 | Rhett |
| 690 | Concomitant Medications | 2d | 2007-04-11 | 2007-04-12 | 689 | Rhett |
| 691 | Prior Therapies | 2d | 2007-04-13 | 2007-04-16 | 690 | Rhett |
| 692 | Other Contributing Causes | 2d | 2007-04-17 | 2007-04-18 | 691 | Rhett |
| 693 | Agents | 3d | 2007-04-19 | 2007-04-23 | 692 | Rhett |
| 694 | Pre-existing conditions | 2d | 2007-04-24 | 2007-04-25 | 693 | Rhett |
| 695 | Sites of Metastatic disease | 1d | 2007-04-26 | 2007-04-26 | 694 | Rhett |
| 696 | Reporter Information | 2d | 2007-04-04 | 2007-04-05 |  | Kulasekaran |
| 697 | Patient Information | 2d | 2007-04-04 | 2007-04-05 |  | Kulasekaran |
| 698 | Additional Information | 1d | 2007-04-04 | 2007-04-04 |  | Kulasekaran |
| 713 | Add Diseases to XML import | 2d | 2007-04-18 | 2007-04-19 | 711 |  |
| 714 | Add XLS based import soltuion | 3d | 2007-04-20 | 2007-04-24 | 713 |  |
| 715 | **Bulk Routine AE Loading** | 5d | 2007-04-04 | 2007-04-10 |  |  |
| 716 | Create bulk routine AE solution | 5d | 2007-04-04 | 2007-04-10 |  | Krikor |

Removed: 686 New Version of Study; 705 Implement O/R mapping; 706 Develop DAO; 707 Develop Service; 708 Develop controller and command objects; 709 Develop JUnit test cases; 718 Develop DAO; 719 Develop Service; 720 Develop controller and command objects; 721 Develop JUnit test cases; 723 Implement O/R mapping; 724 Develop DAO; 725 Develop Service; 726 Develop controller and command objects; 727 Develop JUnit test cases; 848 Batch AE Entry Screens and Baseline Grading; 849 Implement O/R mapping; 850 Develop DAO; 851 Develop Service; 852 Develop controller and command objects; 853 Develop JUnit test cases; 868 Develop DAO; 869 Develop Service; 870 Develop controller and command objects; 871 Develop JUnit test cases

Changed:

| ID | Task | Start | Finish | Complete | Total float | Other |
| --- | --- | --- | --- | --- | --- | --- |
| 1 | **caAERS Application Development Project** |  |  | 32% → 40% |  |  |
| 2 | **Elaboration Phase** |  |  | 89% → 94% |  |  |
| 178 | **Iteration 2** |  |  | 90% → 99% |  |  |
| 235 | **Analysis and Design** |  | 2007-02-21 A | 50% → 100% | 169d → none |  |
| 236 | **Design Documents** |  | 2007-02-15 A | 72% → 100% | 173d → none |  |
| 252 | Deliver Design document to BAH (Task 2.2) | 2007-01-25 A | 2007-01-25 A | 0% → 100% | 188d → none |  |
| 253 | Deliver UML to BAH (Task 2.3) | 2007-01-25 A | 2007-01-25 A | 0% → 100% | 173d → none |  |
| 254 | Formal Review by BAH | 2007-01-26 A | 2007-02-15 A | 0% → 100% | 173d → none |  |
| 255 | **Domain Model** |  | 2007-01-04 A | 75% → 100% | 203d → none |  |
| 256 | Update Model/BRIDG Harmonization |  | 2007-01-04 A | 75% → 100% | 203d → none |  |
| 257 | **Technical/Architecture Guide** |  | 2007-02-21 A | 11% → 100% | 169d → none |  |
| 258 | Prepare draft of Tech/Arch Guide |  | 2007-01-19 A | 25% → 100% | 170.25d → none |  |
| 259 | Adopter review |  | 2007-01-26 A | 25% → 100% | 169d → none |  |
| 260 | Developer update | 2007-01-29 A | 2007-01-31 A | 0% → 100% | 169d → none |  |
| 261 | Deliver to BAH (Task 2.8) | 2007-01-31 A | 2007-01-31 A | 0% → 100% | 169d → none |  |
| 262 | Formal Review by BAH | 2007-02-01 A | 2007-02-21 A | 0% → 100% | 169d → none |  |
| 303 | **Construction Phase** |  |  | 17% → 25% |  |  |
| 419 | **Construction Phase Iteration 2** |  |  | 41% → 75% |  |  |
| 424 | **Project Management (Iter-2)** |  |  | 71% → 98% |  |  |
| 425 | Update Project Plan |  | 2007-03-07 A | 75% → 100% | 159d → none |  |
| 428 | **Weekly Team/Developers Meeting** |  | 2007-03-26 A | 75% → 100% | 0d → none |  |
| 432 | Weekly Team Meeting 4 | 2007-03-26 A | 2007-03-26 A | 0% → 100% | 0d → none |  |
| 433 | **Status and Risk Reporting** |  |  | 63% → 94% |  |  |
| 439 | Bi-weekly Status Update Meeting with BAH/NCI | 2007-03-23 A | 2007-03-23 A | 0% → 100% | 0d → none |  |
| 440 | Monthly Status Report (Task 1.3) | 2007-03-30 A |  | 0% → 75% |  |  |
| 441 | Monthly Risk Matrix Update (Task 1.3) | 2007-03-30 A |  | 0% → 75% |  |  |
| 442 | **Collaboration Management Activities** |  | 2007-03-22 A | 75% → 100% | 0d → none |  |
| 446 | Bi-Weekly AE SIG Meeting | 2007-03-22 A | 2007-03-22 A | 0% → 100% | 0d → none |  |
| 447 | **Environment (Iter-2)** |  | 2007-03-05 A | 75% → 100% | 161d → none |  |
| 448 | Update Environment |  | 2007-03-05 A | 75% → 100% | 161d → none |  |
| 449 | **SCM (Iter-2)** |  | 2007-03-07 A | 75% → 100% | 159d → none |  |
| 450 | Manage Repository |  | 2007-03-07 A | 75% → 100% | 159d → none |  |
| 451 | **Requirements (Iter-2)** |  |  | 35% → 59% |  |  |
| 452 | **Requirement Gathering/Elucidation Meetings** |  | 2007-03-07 A | 65% → 100% | 159d → none |  |
| 453 | CTEP |  | 2007-03-07 A | 75% → 100% | 159d → none |  |
| 454 | DCP |  | 2007-03-07 A | 50% → 100% | 159d → none |  |
| 455 | MedDRA |  | 2007-03-01 A | 75% → 100% | 163d → none |  |
| 456 | Diseases |  | 2007-03-01 A | 75% → 100% | 163d → none |  |
| 457 | **Updated Use Case Specification and Realization** |  | 2007-04-09 A | 35% → 100% | 136d → none |  |
| 458 | Developer draft |  | 2007-03-07 A | 75% → 100% | 142d → none |  |
| 459 | Adopters/Collobators Review |  | 2007-03-14 A | 75% → 100% | 138.25d → none |  |
| 460 | Update Use Case Document |  | 2007-03-19 A | 75% → 100% | 136d → none |  |
| 461 | Submit Updated Use Case Document to BAH (Task 3.1) | 2007-03-19 A | 2007-03-19 A | 0% → 100% | 136d → none |  |
| 462 | Formal Review of Updated Use Case Document | 2007-03-20 A | 2007-04-09 A | 0% → 100% | 136d → none |  |
| 475 | **Analysis and Design (Iter-2)** |  | 2007-04-10 A | 27% → 100% | 135d → none |  |
| 476 | **Design Documents** |  | 2007-04-10 A | 26% → 100% | 135d → none |  |
| 477 | **Protocol Abstraction (Diseases)** |  | 2007-03-15 A | 39% → 100% | 142d → none |  |
| 478 | Develop appropriate UML Artifacts |  | 2007-03-06 A | 50% → 100% | 144.5d → none |  |
| 479 | Create Design Document |  | 2007-03-08 A | 50% → 100% | 143.5d → none |  |
| 480 | Adopters/Collaborators Review |  | 2007-03-13 A | 50% → 100% | 142d → none |  |
| 481 | Developers Update | 2007-03-14 A | 2007-03-15 A | 0% → 100% | 142d → none |  |
| 482 | **Data Exchange with Local CTMS (Import)** | 2007-03-16 A | 2007-03-30 A | 0% → 100% | 142d → none |  |
| 483 | Develop appropriate UML Artifacts | 2007-03-16 A | 2007-03-19 A | 0% → 100% | 142d → none |  |
| 484 | Create Design Document | 2007-03-20 A | 2007-03-21 A | 0% → 100% | 142d → none |  |
| 485 | Adopters/Collaborators Review | 2007-03-22 A | 2007-03-28 A | 0% → 100% | 142d → none |  |
| 486 | Developers Update | 2007-03-29 A | 2007-03-30 A | 0% → 100% | 142d → none |  |
| 487 | **AE Data Collection (AE Attribution Related Functionality)** |  | 2007-03-27 A | 22% → 100% | 135d → none |  |
| 488 | Develop appropriate UML Artifacts |  | 2007-03-09 A | 25% → 100% | 137.5d → none |  |
| 489 | Create Design Document |  | 2007-03-16 A | 25% → 100% | 136.25d → none |  |
| 490 | Adopters/Collaborators Review |  | 2007-03-23 A | 25% → 100% | 135d → none |  |
| 491 | Developers Update | 2007-03-26 A | 2007-03-27 A | 0% → 100% | 135d → none |  |
| 492 | **Protocol Abstraction (Study Investigators, Study Personnel)** |  | 2007-03-22 A | 39% → 100% | 138d → none |  |
| 493 | Develop appropriate UML Artifacts |  | 2007-03-07 A | 50% → 100% | 142d → none | resources Kulasekeran → Kulasekaran |
| 494 | Create Design Document |  | 2007-03-12 A | 50% → 100% | 140.5d → none | resources Kulasekeran → Kulasekaran |
| 495 | Adopters/Collaborators Review |  | 2007-03-19 A | 50% → 100% | 138d → none |  |
| 496 | Developers Update | 2007-03-20 A | 2007-03-22 A | 0% → 100% | 138d → none | resources Kulasekeran → Kulasekaran |
| 497 | **Protocol Level AE Notification Trigger** |  | 2007-03-23 A | 44% → 100% | 137d → none |  |
| 498 | Develop appropriate UML Artifacts |  | 2007-03-07 A | 50% → 100% | 142d → none |  |
| 499 | Create Design Document |  | 2007-03-14 A | 50% → 100% | 139.5d → none |  |
| 500 | Adopters/Collaborators Review |  | 2007-03-21 A | 50% → 100% | 137d → none |  |

| ID | Task | Start | Finish | Duration | Complete | Total float |
| --- | --- | --- | --- | --- | --- | --- |
| 501 | Developers Update | 2007-03-22 A | 2007-03-23 A |  | 0% → 100% | 137d → none |
| 502 | Deliver Design document to BAH (Task 3.4) | 2007-03-27 A | 2007-03-27 A |  | 0% → 100% | 145d → none |
| 503 | Deliver UML to BAH (Task 3.3) | 2007-03-27 A | 2007-03-27 A |  | 0% → 100% | 135d → none |
| 504 | Formal Review by BAH | 2007-03-28 A | 2007-04-10 A |  | 0% → 100% | 135d → none |
| 505 | **Modeling** |  | 2007-03-16 A |  | 38% → 100% | 152d → none |
| 506 | Update Implementation Model |  | 2007-03-09 A |  | 50% → 100% | 152.25d → none |
| 507 | Domain Analysis Model/BRIDG Harmonization |  | 2007-03-16 A |  | 25% → 100% | 152d → none |
| 508 | **Semantic Interoperability** |  | 2007-03-23 A |  | 21% → 100% | 147d → none |
| 509 | Begin process of matching to existing CDEs |  | 2007-03-22 A |  | 25% → 100% | 147d → none |
| 510 | Meeting with VCDE | 2007-03-23 A | 2007-03-23 A |  | 0% → 100% | 147d → none |
| 511 | **Implementation (Iter-2)** |  |  |  | 63% → 99% |  |
| 512 | **Web interface** |  | 2007-03-16 A |  | 75% → 100% | 4d → none |
| 513 | UI Refinement |  | 2007-03-16 A |  | 75% → 100% | 4d → none |
| 517 | **Implement Use Cases** |  | 2007-03-30 A |  | 61% → 100% | 0d → none |
| 518 | **Protocol Abstraction (Diseases)** |  | 2007-03-15 A |  | 90% → 100% | 5d → none |
| 519 | Implement O/R mapping |  | 2007-03-05 A |  | 90% → 100% | 13d → none |
| 520 | Develop DAO |  | 2007-03-07 A |  | 90% → 100% | 11d → none |
| 521 | Develop Service |  | 2007-03-09 A |  | 90% → 100% | 9d → none |
| 522 | Develop controller and command objects |  | 2007-03-13 A |  | 90% → 100% | 7d → none |
| 523 | Develop JUnit test cases |  | 2007-03-15 A |  | 90% → 100% | 1.25d → none |
| 524 | **Data Exchange with Local CTMS (Import)** |  | 2007-03-30 A |  | 25% → 100% | 0d → none |
| 525 | Implement O/R mapping |  | 2007-03-22 A |  | 25% → 100% | 0d → none |
| 526 | Develop DAO |  | 2007-03-26 A |  | 25% → 100% | -2d → none |
| 527 | Develop Service |  | 2007-03-28 A |  | 25% → 100% | -4d → none |
| 528 | Develop controller and command objects |  | 2007-03-29 A |  | 25% → 100% | -5d → none |
| 529 | Develop JUnit test cases |  | 2007-03-30 A |  | 25% → 100% | -6d → none |
| 530 | **AE Data Collection (cont'd)** |  | 2007-03-26 A |  | 25% → 100% | 0d → none |
| 531 | Implement O/R mapping |  | 2007-03-09 A |  | 25% → 100% | 9d → none |
| 532 | Develop DAO |  | 2007-03-20 A |  | 25% → 100% | 2d → none |
| 533 | Develop Service |  | 2007-03-22 A |  | 25% → 100% | 0d → none |
| 534 | Develop controller and command objects |  | 2007-03-26 A |  | 25% → 100% | -2d → none |
| 535 | Develop JUnit test cases |  | 2007-03-23 A |  | 25% → 100% | -1d → none |
| 536 | **Protocol Abstraction (Study Investigators/Personnel)** |  | 2007-03-26 A |  | 75% → 100% | 0d → none |
| 537 | Implement O/R mapping |  | 2007-03-09 A |  | 75% → 100% | 9d → none |
| 538 | Develop DAO |  | 2007-03-20 A |  | 75% → 100% | 2d → none |
| 539 | Develop Service |  | 2007-03-22 A |  | 75% → 100% | 0d → none |
| 540 | Develop controller and command objects |  | 2007-03-26 A |  | 75% → 100% | -2d → none |
| 541 | Develop JUnit test cases |  | 2007-03-23 A |  | 75% → 100% | -1d → none |
| 542 | **Protocol Level Triggers/Notification and Reports (cont'd)** |  | 2007-03-26 A |  | 75% → 100% | 0d → none |
| 543 | Implement O/R mapping |  | 2007-03-09 A |  | 75% → 100% | 9d → none |
| 544 | Develop DAO |  | 2007-03-20 A |  | 75% → 100% | 2d → none |
| 545 | Develop Service |  | 2007-03-22 A |  | 75% → 100% | 0d → none |
| 546 | Develop controller and command objects |  | 2007-03-26 A |  | 75% → 100% | -2d → none |
| 547 | Develop JUnit test cases |  | 2007-03-23 A |  | 75% → 100% | -1d → none |
| 561 | **Documentation (Iter-2)** | 2007-03-22 A |  |  | 0% → 6% |  |
| 562 | **Installation Guide** | 2007-03-22 A |  |  | 0% → 12% |  |
| 563 | Update Installation Guide | 2007-03-22 A |  |  | 0% → 50% |  |
| 570 | **Release Notes** | 2007-03-26 A |  |  | 0% → 9% |  |
| 571 | Update Release Notes | 2007-03-26 A | 2007-03-26 A |  | 0% → 100% | 136d → none |
| 580 | **Construction Phase Iteration 3** | 2007-04-01 A | 2007-05-23 → 2007-05-24 (+1d) | 38d → 39d | 0% → 3% | 0d → 103d |
| 582 | **Iteration Planning (Iter-3)** | 2007-04-02 A | 2007-04-03 A |  | 0% → 100% | 104d → none |
| 583 | Review and finalize Ucases and Work List for Iteration | 2007-04-02 A | 2007-04-02 A |  | 0% → 100% | 104d → none |
| 584 | Review and finalize assignments for Iteration | 2007-04-03 A | 2007-04-03 A |  | 0% → 100% | 104d → none |
| 585 | **Project Management (Iter-3)** | 2007-04-02 A |  |  | 0% → 36% | 3d → 121d |
| 586 | Update Project Plan | 2007-04-04 A |  |  | 0% → 75% |  |
| 589 | **Weekly Team/Developers Meeting** | 2007-04-02 A |  |  | 0% → 50% |  |
| 590 | Weekly Team Meeting 1 | 2007-04-02 A | 2007-04-02 A |  | 0% → 100% | 141d → none |
| 591 | Weekly Team Meeting 2 | 2007-04-09 A | 2007-04-09 A |  | 0% → 100% | 136d → none |
| 594 | **Status and Risk Reporting** | 2007-04-06 A |  |  | 0% → 25% | 16d → 121d |
| 595 | Bi-weekly Risk Update in caMP (Task 1.4) | 2007-04-06 A | 2007-04-06 A |  | 0% → 100% | 137d → none |
| 596 | Bi-weekly Risk Matrix Update Meeting | 2007-04-06 A | 2007-04-06 A |  | 0% → 100% | 137d → none |
| 603 | **Collaboration Management Activities** | 2007-04-05 A |  |  | 0% → 25% | 0d → 123d |
| 604 | Adopters Mtg | 2007-04-05 A | 2007-04-05 A |  | 0% → 100% | 0d → none |
| 608 | **Environment (Iter-3)** | 2007-04-02 A |  |  | 0% → 25% |  |
| 609 | Update Environment | 2007-04-02 A |  |  | 0% → 25% |  |
| 610 | **SCM (Iter-3)** | 2007-04-02 A |  |  | 0% → 25% |  |
| 611 | Manage Repository | 2007-04-02 A |  |  | 0% → 25% |  |
| 612 | **Requirements (Iter-3)** | 2007-04-02 A |  |  | 0% → 1% |  |
| 613 | **Requirements Gathering and Elucidation** | 2007-04-02 A |  |  | 0% → 8% |  |
| 614 | DCP Reqts (Continued) | 2007-04-02 A |  |  | 0% → 25% |  |

| ID | Task | Start | Finish | Duration | Complete | Total float | Predecessors | Other |
| --- | --- | --- | --- | --- | --- | --- | --- | --- |
| 617 | Triggers/Notification | 2007-04-02 A |  |  | 0% → 25% |  |  |  |
| 646 | Develop appropriate UML Artifacts |  |  |  |  |  |  | resources Kulasekeran → Kulasekaran |
| 647 | Create Design Document |  |  |  |  |  |  | resources Kulasekeran → Kulasekaran |
| 649 | Developers Update |  |  |  |  |  |  | resources Kulasekeran → Kulasekaran |
| 651 | Develop appropriate UML Artifacts |  |  |  |  |  |  | resources Kulasekeran → Kulasekaran |
| 652 | Create Design Document |  |  |  |  |  |  | resources Kulasekeran → Kulasekaran |
| 654 | Developers Update |  |  |  |  |  |  | resources Kulasekeran → Kulasekaran |
| 680 | **Implementation (Iter-3)** |  | 2007-04-25 → 2007-04-26 (+1d) | 18d → 19d |  | 104d → 103d |  |  |
| 686 | **Implement Use Cases** |  | 2007-04-25 → 2007-04-26 (+1d) | 16d → 17d |  | 104d → 103d |  |  |
| 687 | **AE Data Collection (cont'd)** |  | 2007-04-25 → 2007-04-26 (+1d) | 16d → 17d |  | 104d → 103d |  |  |
| 710 | **MedDRA 9.0** | 2007-04-04 → 2007-04-11 (+7d) | 2007-04-25 → 2007-04-17 (-8d) | 16d → 5d |  | 104d → 105d |  | was named Reports: Create Report Form |
| 711 | Implement MedDRA 9.0 into Study Disease | 2007-04-04 → 2007-04-11 (+7d) | 2007-04-10 → 2007-04-17 (+7d) |  |  | 104d → 105d | none → 716 | was named Implement O/R mapping; resources Sujith → Krikor |
| 712 | **Data Exchange: Import Study/Participant Data (cont'd)** | 2007-04-04 → 2007-04-18 (+14d) | 2007-04-25 → 2007-04-24 (-1d) | 16d → 5d |  | 104d → 105d |  | was named Data Exchange: Import Data (cont'd) |
| 717 | **Testing (Iter-3)** |  | 2007-05-23 → 2007-05-24 (+1d) | 38d → 39d |  | 104d → 103d |  |  |
| 722 | **Run Tests** | 2007-04-26 → 2007-04-27 (+1d) | 2007-05-23 → 2007-05-24 (+1d) |  |  | 104d → 103d |  |  |
| 723 | Testing | 2007-04-26 → 2007-04-27 (+1d) | 2007-05-02 → 2007-05-03 (+1d) |  |  | 104d → 103d |  |  |
| 724 | Submit Test Results Report (Task 3.8) | 2007-05-02 → 2007-05-03 (+1d) | 2007-05-02 → 2007-05-03 (+1d) |  |  | 104d → 103d |  |  |
| 725 | Formal Review of Test results Report | 2007-05-03 → 2007-05-04 (+1d) | 2007-05-23 → 2007-05-24 (+1d) |  |  | 104d → 103d |  |  |
| 739 | **Deployment (Iter-3)** | 2007-05-02 → 2007-05-03 (+1d) | 2007-05-16 → 2007-05-17 (+1d) |  |  | 109d → 108d |  |  |
| 740 | Submit prototype code (Task 3.5) | 2007-05-02 → 2007-05-03 (+1d) | 2007-05-02 → 2007-05-03 (+1d) |  |  | 109d → 108d |  |  |
| 741 | Formal Review of Code by BAH | 2007-05-03 → 2007-05-04 (+1d) | 2007-05-16 → 2007-05-17 (+1d) |  |  | 109d → 108d |  |  |
| 742 | Deploy Prototype for Iteration 1 at Mayo and WF | 2007-05-03 → 2007-05-04 (+1d) | 2007-05-03 → 2007-05-04 (+1d) |  |  | 118d → 117d |  |  |
| 743 | Finish Iteration 3 | 2007-05-03 → 2007-05-04 (+1d) | 2007-05-03 → 2007-05-04 (+1d) |  |  | 118d → 117d |  |  |
| 811 | Develop appropriate UML Artifacts |  |  |  |  |  |  | resources Kulasekeran → Kulasekaran |
| 812 | Create Design Document |  |  |  |  |  |  | resources Kulasekeran → Kulasekaran |
| 814 | Developers Update |  |  |  |  |  |  | resources Kulasekeran → Kulasekaran |
| 830 | **Implementation (Iter-4)** |  | 2007-05-28 → 2007-05-30 (+2d) | 16d → 18d |  | 91d → 89d |  |  |
| 836 | **Implement Use Cases** |  | 2007-05-28 → 2007-05-30 (+2d) | 16d → 18d |  | 91d → 89d |  |  |
| 837 | **Candidate AE** | 2007-04-04 → 2007-05-07 (+33d) | 2007-04-25 → 2007-05-28 (+33d) |  |  | 104d → 91d |  |  |
| 838 | Implement O/R mapping | 2007-04-04 → 2007-05-07 (+33d) | 2007-04-10 → 2007-05-11 (+31d) |  |  | 104d → 91d | 584 → none |  |
| 839 | Develop DAO | 2007-04-06 → 2007-05-09 (+33d) | 2007-04-19 → 2007-05-22 (+33d) |  |  | 104d → 91d |  |  |
| 840 | Develop Service | 2007-04-10 → 2007-05-11 (+31d) | 2007-04-23 → 2007-05-24 (+31d) |  |  | 104d → 91d |  |  |
| 841 | Develop controller and command objects | 2007-04-12 → 2007-05-15 (+33d) | 2007-04-25 → 2007-05-28 (+33d) |  |  | 104d → 91d |  |  |
| 842 | Develop JUnit test cases | 2007-04-16 → 2007-05-17 (+31d) | 2007-04-24 → 2007-05-25 (+31d) |  |  | 105d → 92d |  |  |
| 843 | **Solicted AE** | 2007-04-04 → 2007-05-07 (+33d) | 2007-04-25 → 2007-05-28 (+33d) |  |  | 104d → 91d |  |  |
| 844 | Implement O/R mapping | 2007-04-04 → 2007-05-07 (+33d) | 2007-04-10 → 2007-05-11 (+31d) |  |  | 104d → 91d |  |  |
| 845 | Develop DAO | 2007-04-06 → 2007-05-09 (+33d) | 2007-04-19 → 2007-05-22 (+33d) |  |  | 104d → 91d |  |  |
| 846 | Develop Service | 2007-04-10 → 2007-05-11 (+31d) | 2007-04-23 → 2007-05-24 (+31d) |  |  | 104d → 91d |  |  |
| 847 | Develop controller and command objects | 2007-04-12 → 2007-05-15 (+33d) | 2007-04-25 → 2007-05-28 (+33d) |  |  | 104d → 91d |  |  |
| 848 | Develop JUnit test cases | 2007-04-16 → 2007-05-17 (+31d) | 2007-04-24 → 2007-05-25 (+31d) |  |  | 105d → 92d |  |  |
| 849 | **DCP AE Data Capture Workflow (cont'd)** |  | 2007-05-28 → 2007-05-21 (-7d) | 16d → 11d |  | 91d → 89d |  |  |
| 851 | Develop DAO |  | 2007-05-22 → 2007-05-11 (-11d) | 10d → 3d |  | 91d → 89d |  |  |
| 852 | Develop Service |  | 2007-05-24 → 2007-05-15 (-9d) | 10d → 3d |  | 91d → 89d |  |  |
| 853 | Develop controller and command objects |  | 2007-05-28 → 2007-05-17 (-11d) | 10d → 3d |  | 91d → 89d |  |  |
| 854 | Develop JUnit test cases |  | 2007-05-25 → 2007-05-21 (-4d) | 7d → 3d |  | 92d → 89d |  |  |
| 861 | **Reports Template Engine Solution** | 2007-05-07 → 2007-05-22 (+15d) | 2007-05-28 → 2007-05-30 (+2d) | 16d → 7d |  | 91d → 89d |  | was named Reports: Generate Report Form |
| 862 | Develop Reports Engine Solution | 2007-05-07 → 2007-05-22 (+15d) | 2007-05-11 → 2007-05-30 (+19d) | 5d → 7d |  | 91d → 89d | none → 849 | was named Implement O/R mapping; resources Sujith → Rhett |
| 864 | Data Push to AdEERS |  |  |  |  |  |  | resources Krikor → Krikor; Ram |
| 891 | **Deployment (Iter-4)** | 2007-05-28 → 2007-05-30 (+2d) | 2007-06-11 → 2007-06-13 (+2d) |  |  | 91d → 89d |  |  |
| 892 | Submit prototype code (Task 3.5) | 2007-05-28 → 2007-05-30 (+2d) | 2007-05-28 → 2007-05-30 (+2d) |  |  | 91d → 89d |  |  |
| 893 | Formal Review of Code by BAH | 2007-05-29 → 2007-05-31 (+2d) | 2007-06-11 → 2007-06-13 (+2d) |  |  | 91d → 89d |  |  |
| 894 | Deploy Prototype for Iteration 1 at Mayo and WF | 2007-05-29 → 2007-05-31 (+2d) | 2007-05-29 → 2007-05-31 (+2d) |  |  | 100d → 98d |  |  |
| 964 | Develop appropriate UML Artifacts |  |  |  |  |  |  | resources Kulasekeran → Kulasekaran |
| 965 | Create Design Document |  |  |  |  |  |  | resources Kulasekeran → Kulasekaran |
| 967 | Developers Update |  |  |  |  |  |  | resources Kulasekeran → Kulasekaran |
| 994 | Reports Engine (cont'd) |  |  |  |  |  |  | was named Process Report |
| 1096 | Develop appropriate UML Artifacts |  |  |  |  |  |  | resources Kulasekeran → Kulasekaran |
| 1097 | Create Design Document |  |  |  |  |  |  | resources Kulasekeran → Kulasekaran |
| 1099 | Developers Update |  |  |  |  |  |  | resources Kulasekeran → Kulasekaran |

## Version 9 (saved 2007-05-11)

Note of the change: SVN-Revision: 1555

Last finish stays 2007-10-16. Complete tasks 382 → 475.

Changed:

| ID | Task | Start | Finish | Complete | Total float |
| --- | --- | --- | --- | --- | --- |
| 1 | **caAERS Application Development Project** |  |  | 40% → 49% |  |
| 303 | **Construction Phase** |  |  | 25% → 37% |  |
| 580 | **Construction Phase Iteration 3** |  |  | 3% → 78% |  |
| 585 | **Project Management (Iter-3)** |  | 2007-04-30 A | 36% → 100% | 121d → none |
| 586 | Update Project Plan |  | 2007-04-06 A | 75% → 100% | 137d → none |
| 587 | **CaAERS CCB (Task 2.10)** | 2007-04-02 A | 2007-04-02 A | 0% → 100% | 141d → none |
| 588 | CCB Meetings | 2007-04-02 A | 2007-04-02 A | 0% → 100% | 141d → none |
| 589 | **Weekly Team/Developers Meeting** |  | 2007-04-23 A | 50% → 100% | 126d → none |
| 592 | Weekly Team Meeting 3 | 2007-04-16 A | 2007-04-16 A | 0% → 100% | 131d → none |
| 593 | Weekly Team Meeting 4 | 2007-04-23 A | 2007-04-23 A | 0% → 100% | 126d → none |
| 594 | **Status and Risk Reporting** |  | 2007-04-30 A | 25% → 100% | 121d → none |
| 597 | Bi-weekly Risk Update in caMP (Task 1.4) | 2007-04-20 A | 2007-04-20 A | 0% → 100% | 127d → none |
| 598 | Bi-weekly Risk Matrix Update Meeting | 2007-04-20 A | 2007-04-20 A | 0% → 100% | 127d → none |
| 599 | Bi-weekly Status Update Meeting with BAH/NCI | 2007-04-13 A | 2007-04-13 A | 0% → 100% | 132d → none |
| 600 | Bi-weekly Status Update Meeting with BAH/NCI | 2007-04-27 A | 2007-04-27 A | 0% → 100% | 122d → none |
| 601 | Monthly Status Report (Task 1.3) | 2007-04-30 A | 2007-04-30 A | 0% → 100% | 0d → none |
| 602 | Monthly Risk Matrix Update (Task 1.3) | 2007-04-30 A | 2007-04-30 A | 0% → 100% | 121d → none |
| 603 | **Collaboration Management Activities** |  | 2007-04-26 A | 25% → 100% | 123d → none |
| 605 | Bi-Weekly AE SIG Meeting | 2007-04-12 A | 2007-04-12 A | 0% → 100% | 133d → none |
| 606 | Adopters Mtg | 2007-04-19 A | 2007-04-19 A | 0% → 100% | 128d → none |
| 607 | Bi-Weekly AE SIG Meeting | 2007-04-26 A | 2007-04-26 A | 0% → 100% | 123d → none |
| 608 | **Environment (Iter-3)** |  | 2007-04-04 A | 25% → 100% | 139d → none |
| 609 | Update Environment |  | 2007-04-04 A | 25% → 100% | 139d → none |
| 610 | **SCM (Iter-3)** |  | 2007-04-06 A | 25% → 100% | 137d → none |
| 611 | Manage Repository |  | 2007-04-06 A | 25% → 100% | 137d → none |
| 612 | **Requirements (Iter-3)** |  |  | 1% → 78% |  |
| 613 | **Requirements Gathering and Elucidation** |  | 2007-04-04 A | 8% → 100% | 139d → none |
| 614 | DCP Reqts (Continued) |  | 2007-04-03 A | 25% → 100% | 140d → none |
| 615 | MedDRA | 2007-04-02 A | 2007-04-03 A | 0% → 100% | 140d → none |
| 616 | Begin Talks with AdEERS Tech. POC | 2007-04-02 A | 2007-04-04 A | 0% → 100% | 139d → none |
| 617 | Triggers/Notification |  | 2007-04-03 A | 25% → 100% | 140d → none |
| 618 | Bulk Routine AE Loading | 2007-04-02 A | 2007-04-02 A | 0% → 100% | 141d → none |
| 619 | Report Requirements | 2007-04-02 A | 2007-04-03 A | 0% → 100% | 140d → none |
| 620 | **Updated Use Case Specification and Realization** | 2007-04-02 A |  | 0% → 75% |  |
| 621 | Developer draft | 2007-04-02 A | 2007-04-06 A | 0% → 100% | 112d → none |
| 622 | Adopters/Collobators Review | 2007-04-09 A | 2007-04-13 A | 0% → 100% | 112d → none |
| 623 | Update Use Case Document | 2007-04-16 A | 2007-04-20 A | 0% → 100% | 112d → none |
| 624 | Submit Updated Use Case Document to BAH (Task 3.1) | 2007-04-20 A | 2007-04-20 A | 0% → 100% | 112d → none |
| 625 | Formal Review of Updated Use Case Document | 2007-04-23 A |  | 0% → 50% |  |
| 626 | **Updated SRS Document** | 2007-04-02 A |  | 0% → 75% |  |
| 627 | Developer draft | 2007-04-02 A | 2007-04-06 A | 0% → 100% | 112d → none |
| 628 | Adopters/Collobators Review | 2007-04-09 A | 2007-04-13 A | 0% → 100% | 112d → none |
| 629 | Update SRS | 2007-04-16 A | 2007-04-20 A | 0% → 100% | 112d → none |
| 630 | Submit Updated SRS Document to BAH (Task 3.2) | 2007-04-20 A | 2007-04-20 A | 0% → 100% | 112d → none |
| 631 | Formal Review of Updated SRS | 2007-04-23 A |  | 0% → 50% |  |
| 632 | **Updated UML Static Class Diagram Model** | 2007-04-02 A |  | 0% → 75% |  |
| 633 | Developer draft | 2007-04-02 A | 2007-04-06 A | 0% → 100% | 112d → none |
| 634 | Adopters/Collobators Review | 2007-04-09 A | 2007-04-13 A | 0% → 100% | 112d → none |
| 635 | Update UML | 2007-04-16 A | 2007-04-20 A | 0% → 100% | 112d → none |
| 636 | Submit UML to BAH (Task 3.3) | 2007-04-20 A | 2007-04-20 A | 0% → 100% | 112d → none |
| 637 | Formal Review of UML | 2007-04-23 A |  | 0% → 50% |  |
| 638 | **Analysis and Design (Iter-3)** | 2007-04-02 A |  | 0% → 77% |  |
| 639 | **Design Documents** | 2007-04-02 A |  | 0% → 82% |  |
| 640 | **AE Data Collection (cont'd)** | 2007-04-04 A | 2007-04-26 A | 0% → 100% | 113d → none |
| 641 | Develop appropriate UML Artifacts | 2007-04-04 A | 2007-04-10 A | 0% → 100% | 113d → none |
| 642 | Create Design Document | 2007-04-11 A | 2007-04-17 A | 0% → 100% | 113d → none |
| 643 | Adopters/Collaborators Review | 2007-04-18 A | 2007-04-24 A | 0% → 100% | 113d → none |
| 644 | Developers Update | 2007-04-25 A | 2007-04-26 A | 0% → 100% | 113d → none |
| 655 | **Triggers and Notifications (cont'd)** | 2007-04-02 A | 2007-04-24 A | 0% → 100% | 115d → none |
| 656 | Develop appropriate UML Artifacts | 2007-04-02 A | 2007-04-06 A | 0% → 100% | 115d → none |
| 657 | Create Design Document | 2007-04-09 A | 2007-04-13 A | 0% → 100% | 115d → none |
| 658 | Adopters/Collaborators Review | 2007-04-16 A | 2007-04-20 A | 0% → 100% | 115d → none |
| 659 | Developers Update | 2007-04-23 A | 2007-04-24 A | 0% → 100% | 115d → none |
| 660 | **Reports: Create Report Form** | 2007-04-02 A | 2007-04-24 A | 0% → 100% | 125d → none |
| 661 | Develop appropriate UML Artifacts | 2007-04-02 A | 2007-04-06 A | 0% → 100% | 125d → none |
| 662 | Create Design Document | 2007-04-09 A | 2007-04-13 A | 0% → 100% | 125d → none |
| 663 | Adopters/Collaborators Review | 2007-04-16 A | 2007-04-20 A | 0% → 100% | 125d → none |
| 664 | Developers Update | 2007-04-23 A | 2007-04-24 A | 0% → 100% | 125d → none |
| 665 | **Role Based Authorization (cont'd)** | 2007-04-02 A | 2007-04-02 A | 0% → 100% | 141d → none |
| 666 | Develop appropriate UML Artifacts | 2007-04-02 A | 2007-04-02 A | 0% → 100% | 141d → none |

| ID | Task | Start | Finish | Complete | Total float |
| --- | --- | --- | --- | --- | --- |
| 667 | Create Design Document | 2007-04-02 A | 2007-04-02 A | 0% → 100% | 141d → none |
| 668 | Adopters/Collaborators Review | 2007-04-02 A | 2007-04-02 A | 0% → 100% | 141d → none |
| 669 | Developers Update | 2007-04-02 A | 2007-04-02 A | 0% → 100% | 141d → none |
| 670 | Deliver Design document to BAH (Task 3.4) | 2007-04-26 A | 2007-04-26 A | 0% → 100% | 123d → none |
| 671 | Deliver UML to BAH (Task 3.3) | 2007-04-26 A | 2007-04-26 A | 0% → 100% | 113d → none |
| 672 | Formal Review by BAH | 2007-04-27 A |  | 0% → 50% |  |
| 673 | **Modeling** | 2007-04-02 A |  | 0% → 58% |  |
| 674 | Update Implementation Model | 2007-04-04 A | 2007-04-05 A | 0% → 100% | 138d → none |
| 675 | Update Domain Analysis Model/BRIDG Harmonization | 2007-04-02 A |  | 0% → 50% |  |
| 676 | Create/Update Dynamic Models (BRIDG) | 2007-04-02 A |  | 0% → 50% |  |
| 677 | **Semantic Integration** | 2007-04-02 A |  | 0% → 58% |  |
| 678 | CDE Gap Analysis/Report | 2007-04-02 A |  | 0% → 50% | 136d → 137d |
| 679 | Meeting with VCDE | 2007-04-09 A | 2007-04-09 A | 0% → 100% | 136d → none |
| 680 | **Implementation (Iter-3)** | 2007-04-02 A |  | 0% → 89% | 103d → 123d |
| 681 | **Web interface** | 2007-04-02 A | 2007-04-06 A | 0% → 100% | 117d → none |
| 682 | UI Refinement | 2007-04-02 A | 2007-04-06 A | 0% → 100% | 117d → none |
| 683 | **Bug Fixes** | 2007-04-02 A | 2007-04-09 A | 0% → 100% | 116d → none |
| 684 | Review and assignment of Bugs from prior iteration | 2007-04-02 A | 2007-04-02 A | 0% → 100% | 116d → none |
| 685 | Bug Fixes | 2007-04-03 A | 2007-04-09 A | 0% → 100% | 116d → none |
| 686 | **Implement Use Cases** | 2007-04-04 A |  | 0% → 88% | 103d → 123d |
| 687 | **AE Data Collection (cont'd)** | 2007-04-04 A |  | 0% → 86% | 103d → 123d |
| 688 | Complete Attribution Page | 2007-04-04 A | 2007-04-06 A | 0% → 100% | 103d → none |
| 689 | Treatment | 2007-04-09 A | 2007-04-10 A | 0% → 100% | 103d → none |
| 690 | Concomitant Medications | 2007-04-11 A | 2007-04-12 A | 0% → 100% | 103d → none |
| 691 | Prior Therapies | 2007-04-13 A | 2007-04-16 A | 0% → 100% | 103d → none |
| 692 | Other Contributing Causes | 2007-04-17 A | 2007-04-18 A | 0% → 100% | 103d → none |
| 693 | Agents | 2007-04-19 A | 2007-04-23 A | 0% → 100% | 103d → none |
| 695 | Sites of Metastatic disease | 2007-04-26 A | 2007-04-26 A | 0% → 100% | 103d → none |
| 696 | Reporter Information | 2007-04-04 A | 2007-04-05 A | 0% → 100% | 118d → none |
| 697 | Patient Information | 2007-04-04 A | 2007-04-05 A | 0% → 100% | 118d → none |
| 698 | Additional Information | 2007-04-04 A | 2007-04-04 A | 0% → 100% | 119d → none |
| 699 | Implement O/R mapping | 2007-04-04 A | 2007-04-10 A | 0% → 100% | 104d → none |
| 700 | Develop DAO | 2007-04-06 A | 2007-04-19 A | 0% → 100% | 104d → none |
| 701 | Develop Service | 2007-04-10 A | 2007-04-23 A | 0% → 100% | 104d → none |
| 702 | Develop controller and command objects | 2007-04-12 A | 2007-04-25 A | 0% → 100% | 104d → none |
| 704 | **Triggers and Notification (cont'd)** | 2007-04-04 A | 2007-04-25 A | 0% → 100% | 104d → none |
| 705 | Implement O/R mapping | 2007-04-04 A | 2007-04-10 A | 0% → 100% | 104d → none |
| 706 | Develop DAO | 2007-04-06 A | 2007-04-19 A | 0% → 100% | 104d → none |
| 707 | Develop Service | 2007-04-10 A | 2007-04-23 A | 0% → 100% | 104d → none |
| 708 | Develop controller and command objects | 2007-04-12 A | 2007-04-25 A | 0% → 100% | 104d → none |
| 709 | Develop JUnit test cases | 2007-04-16 A | 2007-04-24 A | 0% → 100% | 105d → none |
| 710 | **MedDRA 9.0** | 2007-04-11 A | 2007-04-17 A | 0% → 100% | 105d → none |
| 711 | Implement MedDRA 9.0 into Study Disease | 2007-04-11 A | 2007-04-17 A | 0% → 100% | 105d → none |
| 712 | **Data Exchange: Import Study/Participant Data (cont'd)** | 2007-04-18 A |  | 0% → 40% | 105d → 125d |
| 713 | Add Diseases to XML import | 2007-04-18 A | 2007-04-19 A | 0% → 100% | 105d → none |
| 715 | **Bulk Routine AE Loading** | 2007-04-04 A |  | 0% → 50% | 105d → 135d |
| 716 | Create bulk routine AE solution | 2007-04-04 A |  | 0% → 50% | 105d → 135d |
| 717 | **Testing (Iter-3)** | 2007-04-02 A |  | 0% → 69% |  |
| 718 | **Update Test Plan** | 2007-04-02 A |  | 0% → 75% |  |
| 719 | Update Test Plan Document (Task 3.6) | 2007-04-02 A | 2007-04-13 A | 0% → 100% | 122d → none |
| 720 | Submit to BAH | 2007-04-13 A | 2007-04-13 A | 0% → 100% | 122d → none |
| 721 | Formal Review by BAH | 2007-04-16 A |  | 0% → 50% |  |
| 722 | **Run Tests** | 2007-04-27 A |  | 0% → 63% |  |
| 723 | Testing | 2007-04-27 A | 2007-05-03 A | 0% → 100% | 103d → none |
| 724 | Submit Test Results Report (Task 3.8) | 2007-05-03 A | 2007-05-03 A | 0% → 100% | 103d → none |
| 725 | Formal Review of Test results Report | 2007-05-04 A |  | 0% → 50% |  |
| 726 | **Documentation (Iter-3)** | 2007-04-16 A |  | 0% → 29% |  |
| 727 | **Installation Guide** | 2007-04-20 A |  | 0% → 23% |  |
| 728 | Update Installation Guide | 2007-04-20 A | 2007-04-24 A | 0% → 100% | 115d → none |
| 729 | Submit to BAH/Adopters | 2007-04-24 A | 2007-04-24 A | 0% → 100% | 115d → none |
| 731 | **Administrators Guide** | 2007-04-16 A |  | 0% → 41% |  |
| 732 | Update Administrators Guide | 2007-04-16 A | 2007-04-24 A | 0% → 100% | 115d → none |
| 733 | Submit to BAH | 2007-04-24 A | 2007-04-24 A | 0% → 100% | 115d → none |
| 735 | **Release Notes** | 2007-04-23 A |  | 0% → 17% |  |
| 736 | Update Release Notes | 2007-04-23 A | 2007-04-24 A | 0% → 100% | 115d → none |
| 737 | Submit to BAH | 2007-04-24 A | 2007-04-24 A | 0% → 100% | 115d → none |
| 739 | **Deployment (Iter-3)** | 2007-05-03 A |  | 0% → 95% |  |
| 740 | Submit prototype code (Task 3.5) | 2007-05-03 A | 2007-05-03 A | 0% → 100% | 108d → none |
| 741 | Formal Review of Code by BAH | 2007-05-04 A | 2007-05-17 A | 0% → 100% | 108d → none |
| 742 | Deploy Prototype for Iteration 1 at Mayo and WF | 2007-05-04 A |  | 0% → 50% |  |

| ID | Task | Start | Finish | Complete | Total float |
| --- | --- | --- | --- | --- | --- |
| 743 | Finish Iteration 3 | 2007-05-04 A | 2007-05-04 A | 0% → 100% | 117d → none |
| 744 | **Construction Phase Iteration 4** | 2007-05-01 A |  | 0% → 1% | 0d → 89d |
| 746 | **Iteration Planning (Iter-4)** | 2007-05-01 A | 2007-05-02 A | 0% → 100% | 0d → none |
| 747 | Review and finalize Ucases and Work List for Iteration | 2007-05-01 A | 2007-05-01 A | 0% → 100% | 0d → none |
| 748 | Review and finalize assignments for Iteration | 2007-05-02 A | 2007-05-02 A | 0% → 100% | 0d → none |
| 777 | **Requirements (Iter-4)** | 2007-05-03 A |  | 0% → 2% | 0d → 89d |
| 778 | **Requirements Gathering and Elucidation** | 2007-05-03 A | 2007-05-04 A | 0% → 100% | 0d → none |
| 779 | 1st Construction Phase F2F Meeting | 2007-05-03 A | 2007-05-04 A | 0% → 100% | 0d → none |

## Version 10 (saved 2007-06-11)

Note of the change: Updated at beginning of Iteration 5

Last finish stays 2007-10-16. Complete tasks 475 → 609.

Added:

| ID | Task | Duration | Start | Finish | Predecessors | Resources |
| --- | --- | --- | --- | --- | --- | --- |
| 832 | **Routine AE** | 16d | 2007-05-07 A | 2007-05-28 A |  |  |
| 838 | **CTEP Expedited AE Data Capture Workflow (cont'd)** | 11d | 2007-05-07 A | 2007-05-21 A |  |  |
| 917 | Roles | 1d? | 2007-06-05 | 2007-06-05 |  | Sean |
| 918 | Solicited AE's | 2d | 2007-06-05 | 2007-06-06 |  | Sean |
| 940 | Study Organizations (model refactoring) | 2d | 2007-06-05 | 2007-06-06 |  | Biju |
| 941 | Study Identifiers (model refactoring) | 1d? | 2007-06-05 | 2007-06-05 |  | Biju |
| 954 | Implement O/R mapping | 5d | 2007-06-05 | 2007-06-11 |  | Krikor |
| 955 | Develop DAO | 10d | 2007-06-07 | 2007-06-20 | 954SS+2d | Krikor |
| 956 | Develop Service | 10d | 2007-06-11 | 2007-06-22 | 955SS+2d | Krikor |
| 957 | Develop controller and command objects | 10d | 2007-06-13 | 2007-06-26 | 956SS+2d | Krikor |
| 958 | Develop JUnit test cases | 7d | 2007-06-15 | 2007-06-25 | 957SS+2d | Krikor |
| 986 | Study Model Refactoring | 2d | 2007-06-05 | 2007-06-06 |  | Biju |
| 987 | Study Identifiers Refactoring | 2d | 2007-06-07 | 2007-06-08 | 986 | Biju |
| 988 | Solicited AE's | 5d | 2007-06-19 | 2007-06-25 | 990 | Krikor |
| 994 | Rules Engine Integration | 19d | 2007-06-05 | 2007-06-29 |  | Vinay; Visu; Biju |
| 995 | Online Help | 1d? | 2007-06-05 | 2007-06-05 |  | Jason |
| 1085 | Implement O/R mapping | 5d | 2007-07-04 | 2007-07-10 |  | Rhett |
| 1086 | Develop DAO | 3d | 2007-07-06 | 2007-07-10 | 1085SS+2d | Rhett |
| 1087 | Develop Service | 3d | 2007-07-10 | 2007-07-12 | 1086SS+2d | Rhett |
| 1088 | Develop controller and command objects | 3d | 2007-07-12 | 2007-07-16 | 1087SS+2d | Rhett |
| 1089 | Develop JUnit test cases | 3d | 2007-07-16 | 2007-07-18 | 1088SS+2d | Rhett |
| 1122 | TAC Code (for Treatment Tab) | 3d | 2007-07-04 | 2007-07-06 |  | Rhett |
| 1123 | Submission Mechanisms (cont'd) | 15d | 2007-07-04 | 2007-07-24 |  |  |
| 1124 | Report Definition Templates | 15d | 2007-07-04 | 2007-07-24 |  | Biju |
| 1125 | Expedited Report States (Pending, Submitted, etc.) | 4d | 2007-07-04 | 2007-07-09 |  | Rhett |
| 1126 | Implement DCP Expedited Report Data Capture flow | 15d | 2007-07-04 | 2007-07-24 |  |  |
| 1127 | Duplicate AE Checking/Validation | 3d | 2007-07-04 | 2007-07-06 |  |  |
| 1128 | Duplicate Studies Checking/Validation | 2d | 2007-07-04 | 2007-07-05 |  |  |
| 1130 | Validations | 5d | 2007-07-04 | 2007-07-10 |  |  |
| 1131 | Error Messages | 3d | 2007-07-04 | 2007-07-06 |  |  |
| 1167 | **BRIDG Review (Cont'd)** | 5d | 2007-07-11 | 2007-07-17 |  |  |
| 1235 | Validations | 1d? | 2007-08-03 | 2007-08-03 |  |  |
| 1236 | Error Messages | 1d? | 2007-08-03 | 2007-08-03 |  |  |
| 1254 | Harmonization with BRIDG Model (Review) | 5d | 2007-08-01 | 2007-08-07 | 1179 | Sean |

Removed: 810 Reports (cont'd); 811 Develop appropriate UML Artifacts; 812 Create Design Document; 813 Adopters/Collaborators Review; 814 Developers Update; 863 Data Exchange: Exporting Data; 878 End User Guide Draft; 879 Create Draft of End User Guide; 931 Triggers; 958 Batch AE (cont'd); 959 Develop appropriate UML Artifacts; 960 Create Design Document; 961 Adopters/Collaborators Review; 962 Developers Update; 1119 Reports (cont'd); 1218 Reports (cont'd); 1222 Reports

Changed:

| ID | Task | Start | Finish | Duration | Complete | Total float |
| --- | --- | --- | --- | --- | --- | --- |
| 1 | **caAERS Application Development Project** |  |  | 226d → 226d? | 49% → 63% |  |
| 303 | **Construction Phase** |  |  | 161d → 161d? | 37% → 55% |  |
| 304 | **Construction Phase Iteration 1** |  |  |  | 93% → 99% |  |
| 335 | **Requirements (Iter-1)** |  | 2007-03-22 A |  | 86% → 100% | 148d → none |
| 336 | **Updated Use Case Specification and Realization** |  | 2007-03-22 A |  | 86% → 100% | 148d → none |
| 341 | Formal Review of Updated Use Case Document |  | 2007-03-22 A |  | 75% → 100% | 148d → none |
| 342 | **Updated SRS Document** |  | 2007-03-22 A |  | 86% → 100% | 148d → none |
| 347 | Formal Review of Updated SRS |  | 2007-03-22 A |  | 75% → 100% | 148d → none |
| 348 | **Updated UML Static Class Diagram Model** |  | 2007-03-22 A |  | 86% → 100% | 148d → none |
| 353 | Formal Review of UML |  | 2007-03-22 A |  | 75% → 100% | 148d → none |
| 403 | **Testing (Iter-1)** |  | 2007-03-21 A |  | 84% → 100% | 149d → none |
| 404 | **Test Plan** |  | 2007-03-13 A |  | 88% → 100% | 155d → none |
| 407 | Formal Review by BAH |  | 2007-03-13 A |  | 75% → 100% | 155d → none |
| 408 | **Run Tests** |  | 2007-03-21 A |  | 79% → 100% | 149d → none |
| 411 | Formal Review of Test results Report |  | 2007-03-21 A |  | 75% → 100% | 149d → none |
| 412 | **Deployment (Iter-1)** |  | 2007-03-14 A |  | 82% → 100% | 154d → none |
| 414 | Formal Review of Code by BAH |  | 2007-03-14 A |  | 75% → 100% | 154d → none |
| 419 | **Construction Phase Iteration 2** |  |  |  | 75% → 99% |  |
| 424 | **Project Management (Iter-2)** |  | 2007-03-31 A |  | 98% → 100% | 142d → none |
| 433 | **Status and Risk Reporting** |  | 2007-03-31 A |  | 94% → 100% | 142d → none |
| 440 | Monthly Status Report (Task 1.3) |  | 2007-03-31 A |  | 75% → 100% | 0d → none |
| 441 | Monthly Risk Matrix Update (Task 1.3) |  | 2007-03-30 A |  | 75% → 100% | 142d → none |
| 451 | **Requirements (Iter-2)** |  |  |  | 59% → 97% |  |
| 463 | **Updated SRS Document** |  |  |  | 35% → 88% |  |
| 467 | Submit Updated SRS Document to BAH (Task 3.2) | 2007-03-21 A | 2007-03-21 A |  | 0% → 100% | 134d → none |
| 468 | Formal Review of Updated SRS | 2007-03-22 A | 2007-04-11 A |  | 0% → 100% | 134d → none |
| 469 | **Updated UML Static Class Diagram Model** |  | 2007-04-10 A |  | 22% → 100% | 135d → none |
| 470 | Developer draft |  | 2007-03-09 A |  | 50% → 100% | 138.5d → none |
| 471 | Adopters/Collobators Review |  | 2007-03-16 A |  | 50% → 100% | 136d → none |
| 472 | Update UML |  | 2007-03-20 A |  | 50% → 100% | 135d → none |
| 473 | Submit UML to BAH (Task 3.3) | 2007-03-20 A | 2007-03-20 A |  | 0% → 100% | 135d → none |
| 474 | Formal Review of UML | 2007-03-21 A | 2007-04-10 A |  | 0% → 100% | 135d → none |
| 552 | **Testing (Iter-2)** | 2007-03-01 A | 2007-04-20 A |  | 0% → 100% | 16d → none |
| 553 | **Test Plan** | 2007-03-01 A | 2007-03-28 A |  | 0% → 100% | 144d → none |
| 554 | Update Test Plan Document (Task 3.6) | 2007-03-01 A | 2007-03-14 A |  | 0% → 100% | 144d → none |
| 555 | Submit to BAH | 2007-03-14 A | 2007-03-14 A |  | 0% → 100% | 144d → none |
| 556 | Formal Review by BAH | 2007-03-15 A | 2007-03-28 A |  | 0% → 100% | 144d → none |
| 557 | **Run Tests** | 2007-04-02 A | 2007-04-20 A |  | 0% → 100% | -6d → none |
| 558 | Testing | 2007-04-02 A | 2007-04-06 A |  | 0% → 100% | -6d → none |
| 559 | Submit Test Results Report (Task 3.8) | 2007-04-06 A | 2007-04-06 A |  | 0% → 100% | 127d → none |
| 560 | Formal Review of Test results Report | 2007-04-09 A | 2007-04-20 A |  | 0% → 100% | 127d → none |
| 561 | **Documentation (Iter-2)** |  | 2007-04-13 A |  | 6% → 100% | 132d → none |
| 562 | **Installation Guide** |  | 2007-04-09 A |  | 12% → 100% | 136d → none |
| 563 | Update Installation Guide |  | 2007-03-26 A |  | 50% → 100% | 136d → none |
| 564 | Submit to BAH/Adopters | 2007-03-26 A | 2007-03-26 A |  | 0% → 100% | 136d → none |
| 565 | Review of Installation Guide | 2007-03-27 A | 2007-04-09 A |  | 0% → 100% | 136d → none |
| 566 | **Administrators Guide** | 2007-03-26 A | 2007-04-13 A |  | 0% → 100% | 132d → none |
| 567 | Update Administrators Guide | 2007-03-26 A | 2007-03-30 A |  | 0% → 100% | 132d → none |
| 568 | Submit to BAH | 2007-03-30 A | 2007-03-30 A |  | 0% → 100% | 132d → none |
| 569 | Review of Admin Guide | 2007-04-02 A | 2007-04-13 A |  | 0% → 100% | 132d → none |
| 570 | **Release Notes** |  | 2007-04-09 A |  | 9% → 100% | 136d → none |
| 572 | Submit to BAH | 2007-03-26 A | 2007-03-26 A |  | 0% → 100% | 136d → none |
| 573 | Review of Release Notes | 2007-03-27 A | 2007-04-09 A |  | 0% → 100% | 136d → none |
| 574 | **Deployment (Iter-2)** | 2007-04-06 A | 2007-04-20 A |  | 0% → 100% | -6d → none |
| 575 | Submit prototype code (Task 3.5) | 2007-04-06 A | 2007-04-06 A |  | 0% → 100% | 127d → none |
| 576 | Formal Review of Code by BAH | 2007-04-09 A | 2007-04-20 A |  | 0% → 100% | 127d → none |
| 577 | Deploy Prototype for Iteration 1 at Mayo and WF | 2007-04-09 A | 2007-04-09 A |  | 0% → 100% | -6d → none |
| 578 | Make URL Public | 2007-04-09 A | 2007-04-09 A |  | 0% → 100% | 136d → none |
| 579 | Finish Iteration 2 | 2007-03-31 A | 2007-03-31 A |  | 0% → 100% | -6d → none |
| 580 | **Construction Phase Iteration 3** |  |  |  | 78% → 98% |  |
| 612 | **Requirements (Iter-3)** |  | 2007-05-11 A |  | 78% → 100% | 112d → none |
| 620 | **Updated Use Case Specification and Realization** |  | 2007-05-11 A |  | 75% → 100% | 112d → none |
| 625 | Formal Review of Updated Use Case Document |  | 2007-05-11 A |  | 50% → 100% | 112d → none |
| 626 | **Updated SRS Document** |  | 2007-05-11 A |  | 75% → 100% | 112d → none |
| 631 | Formal Review of Updated SRS |  | 2007-05-11 A |  | 50% → 100% | 112d → none |
| 632 | **Updated UML Static Class Diagram Model** |  | 2007-05-11 A |  | 75% → 100% | 112d → none |
| 637 | Formal Review of UML |  | 2007-05-11 A |  | 50% → 100% | 112d → none |
| 638 | **Analysis and Design (Iter-3)** |  | 2007-05-10 A |  | 77% → 100% | 113d → none |
| 639 | **Design Documents** |  | 2007-05-10 A |  | 82% → 100% | 113d → none |
| 645 | **Candidate AE** | 2007-04-02 A | 2007-04-02 A |  | 0% → 100% | 141d → none |

| ID | Task | Start | Finish | Duration | Complete | Total float |
| --- | --- | --- | --- | --- | --- | --- |
| 646 | Develop appropriate UML Artifacts | 2007-04-02 A | 2007-04-02 A |  | 0% → 100% | 141d → none |
| 647 | Create Design Document | 2007-04-02 A | 2007-04-02 A |  | 0% → 100% | 141d → none |
| 648 | Adopters/Collaborators Review | 2007-04-02 A | 2007-04-02 A |  | 0% → 100% | 141d → none |
| 649 | Developers Update | 2007-04-02 A | 2007-04-02 A |  | 0% → 100% | 141d → none |
| 650 | **Solicited AE** | 2007-04-02 A | 2007-04-02 A |  | 0% → 100% | 141d → none |
| 651 | Develop appropriate UML Artifacts | 2007-04-02 A | 2007-04-02 A |  | 0% → 100% | 141d → none |
| 652 | Create Design Document | 2007-04-02 A | 2007-04-02 A |  | 0% → 100% | 141d → none |
| 653 | Adopters/Collaborators Review | 2007-04-02 A | 2007-04-02 A |  | 0% → 100% | 141d → none |
| 654 | Developers Update | 2007-04-02 A | 2007-04-02 A |  | 0% → 100% | 141d → none |
| 672 | Formal Review by BAH |  | 2007-05-10 A |  | 50% → 100% | 113d → none |
| 673 | **Modeling** |  | 2007-04-06 A |  | 58% → 100% | 137d → none |
| 675 | Update Domain Analysis Model/BRIDG Harmonization |  | 2007-04-06 A |  | 50% → 100% | 137d → none |
| 676 | Create/Update Dynamic Models (BRIDG) |  | 2007-04-06 A |  | 50% → 100% | 137d → none |
| 677 | **Semantic Integration** |  | 2007-04-09 A |  | 58% → 100% | 136d → none |
| 678 | CDE Gap Analysis/Report |  | 2007-04-06 A |  | 50% → 100% | 137d → none |
| 680 | **Implementation (Iter-3)** |  |  |  | 89% → 93% |  |
| 686 | **Implement Use Cases** |  |  |  | 88% → 93% |  |
| 712 | **Data Exchange: Import Study/Participant Data (cont'd)** |  | 2007-04-24 A |  | 40% → 100% | 125d → none |
| 714 | Add XLS based import soltuion | 2007-04-20 A | 2007-04-24 A |  | 0% → 100% | 125d → none |
| 715 | **Bulk Routine AE Loading** |  | 2007-04-10 A |  | 50% → 100% | 135d → none |
| 716 | Create bulk routine AE solution |  | 2007-04-10 A |  | 50% → 100% | 135d → none |
| 717 | **Testing (Iter-3)** |  | 2007-05-24 A |  | 69% → 100% | 103d → none |
| 718 | **Update Test Plan** |  | 2007-04-27 A |  | 75% → 100% | 122d → none |
| 721 | Formal Review by BAH |  | 2007-04-27 A |  | 50% → 100% | 122d → none |
| 722 | **Run Tests** |  | 2007-05-24 A |  | 63% → 100% | 103d → none |
| 725 | Formal Review of Test results Report |  | 2007-05-24 A |  | 50% → 100% | 103d → none |
| 726 | **Documentation (Iter-3)** |  | 2007-05-08 A |  | 29% → 100% | 115d → none |
| 727 | **Installation Guide** |  | 2007-05-08 A |  | 23% → 100% | 115d → none |
| 730 | Review of Installation Guide | 2007-04-25 A | 2007-05-08 A |  | 0% → 100% | 115d → none |
| 731 | **Administrators Guide** |  | 2007-05-08 A |  | 41% → 100% | 115d → none |
| 734 | Review of Admin Guide | 2007-04-25 A | 2007-05-08 A |  | 0% → 100% | 115d → none |
| 735 | **Release Notes** |  | 2007-05-08 A |  | 17% → 100% | 115d → none |
| 738 | Review of Release Notes | 2007-04-25 A | 2007-05-08 A |  | 0% → 100% | 115d → none |
| 739 | **Deployment (Iter-3)** |  | 2007-05-17 A |  | 95% → 100% | 108d → none |
| 742 | Deploy Prototype for Iteration 1 at Mayo and WF |  | 2007-05-04 A |  | 50% → 100% | 117d → none |
| 744 | **Construction Phase Iteration 4** |  | 2007-06-13 → 2007-06-14 (+1d) | 32d → 33d | 1% → 65% | 89d → 88d |
| 745 | Begin Iteration 4 | 2007-05-01 A | 2007-05-01 A |  | 0% → 100% | 0d → none |
| 749 | **Project Management (Iter-4)** | 2007-05-03 A |  |  | 0% → 95% | 2d → 0d |
| 750 | Update Project Plan | 2007-05-03 A | 2007-05-07 A |  | 0% → 100% | 116d → none |
| 753 | **Weekly Team Meeting** | 2007-05-07 A | 2007-05-28 A |  | 0% → 100% | 101d → none |
| 754 | Weekly Team Meeting 1 | 2007-05-07 A | 2007-05-07 A |  | 0% → 100% | 116d → none |
| 755 | Weekly Team Meeting 2 | 2007-05-14 A | 2007-05-14 A |  | 0% → 100% | 111d → none |
| 756 | Weekly Team Meeting 3 | 2007-05-21 A | 2007-05-21 A |  | 0% → 100% | 106d → none |
| 757 | Weekly Team Meeting 4 | 2007-05-28 A | 2007-05-28 A |  | 0% → 100% | 101d → none |
| 758 | **Status and Risk Reporting** | 2007-05-04 A | 2007-05-31 A |  | 0% → 100% | 19d → none |
| 759 | Bi-weekly Risk Update in caMP (Task 1.4) | 2007-05-04 A | 2007-05-04 A |  | 0% → 100% | 117d → none |
| 760 | Bi-weekly Risk Matrix Update Meeting | 2007-05-04 A | 2007-05-04 A |  | 0% → 100% | 117d → none |
| 761 | Bi-weekly Risk Update in caMP (Task 1.4) | 2007-05-18 A | 2007-05-18 A |  | 0% → 100% | 107d → none |
| 762 | Bi-weekly Risk Matrix Update Meeting | 2007-05-18 A | 2007-05-18 A |  | 0% → 100% | 107d → none |
| 763 | Bi-weekly Status Update Meeting with BAH/NCI | 2007-05-11 A | 2007-05-11 A |  | 0% → 100% | 112d → none |
| 764 | Bi-weekly Status Update Meeting with BAH/NCI | 2007-05-25 A | 2007-05-25 A |  | 0% → 100% | 102d → none |
| 765 | Monthly Status Report (Task 1.3) | 2007-05-31 A | 2007-05-31 A |  | 0% → 100% | 0d → none |
| 766 | Monthly Risk Matrix Update (Task 1.3) | 2007-05-31 A | 2007-05-31 A |  | 0% → 100% | 98d → none |
| 767 | **Collaboration Management Activities** | 2007-05-03 A | 2007-05-31 A |  | 0% → 100% | 21d → none |
| 768 | Adopters Mtg | 2007-05-03 A | 2007-05-03 A |  | 0% → 100% | 118d → none |
| 769 | Bi-Weekly AE SIG Meeting | 2007-05-10 A | 2007-05-10 A |  | 0% → 100% | 113d → none |
| 770 | Adopters Mtg | 2007-05-18 A | 2007-05-18 A |  | 0% → 100% | 107d → none |
| 771 | Bi-Weekly AE SIG Meeting | 2007-05-25 A | 2007-05-25 A |  | 0% → 100% | 102d → none |
| 772 | Adopters Colloboration Report | 2007-05-31 A | 2007-05-31 A |  | 0% → 100% | 0d → none |
| 773 | **Environment (Iter-4)** | 2007-05-03 A | 2007-05-07 A |  | 0% → 100% | 116d → none |
| 774 | Update Environment | 2007-05-03 A | 2007-05-07 A |  | 0% → 100% | 116d → none |
| 775 | **SCM (Iter-4)** | 2007-05-03 A | 2007-05-09 A |  | 0% → 100% | 114d → none |
| 776 | Manage Repository | 2007-05-03 A | 2007-05-09 A |  | 0% → 100% | 114d → none |
| 777 | **Requirements (Iter-4)** |  |  |  | 2% → 18% |  |
| 792 | **Updated UML Static Class Diagram Model** | 2007-05-03 A |  |  | 0% → 50% |  |
| 793 | Developer draft | 2007-05-03 A | 2007-05-09 A |  | 0% → 100% | 89d → none |
| 794 | Adopters/Collobators Review | 2007-05-10 A | 2007-05-16 A |  | 0% → 100% | 89d → none |
| 795 | Update UML | 2007-05-17 A | 2007-05-23 A |  | 0% → 100% | 89d → none |
| 796 | Submit UML to BAH (Task 3.3) | 2007-05-23 A | 2007-05-23 A |  | 0% → 100% | 89d → none |
| 798 | **Analysis and Design (Iter-4)** | 2007-05-07 A |  |  | 0% → 84% |  |

| ID | Task | Start | Finish | Duration | Complete | Total float | Predecessors | Other |
| --- | --- | --- | --- | --- | --- | --- | --- | --- |
| 799 | **Design Documents** | 2007-05-07 A |  |  | 0% → 84% |  |  |  |
| 800 | **Routine AE** | 2007-05-07 A | 2007-05-29 A |  | 0% → 100% | 90d → none |  | was named Batch AE |
| 801 | Develop appropriate UML Artifacts | 2007-05-07 A | 2007-05-11 A |  | 0% → 100% | 90d → none |  |  |
| 802 | Create Design Document | 2007-05-14 A | 2007-05-18 A |  | 0% → 100% | 90d → none |  |  |
| 803 | Adopters/Collaborators Review | 2007-05-21 A | 2007-05-25 A |  | 0% → 100% | 90d → none |  |  |
| 804 | Developers Update | 2007-05-28 A | 2007-05-29 A |  | 0% → 100% | 90d → none |  |  |
| 805 | **AE Data Collection (DCP)** | 2007-05-07 A | 2007-05-29 A |  | 0% → 100% | 90d → none |  |  |
| 806 | Develop appropriate UML Artifacts | 2007-05-07 A | 2007-05-11 A |  | 0% → 100% | 90d → none |  |  |
| 807 | Create Design Document | 2007-05-14 A | 2007-05-18 A |  | 0% → 100% | 90d → none |  |  |
| 808 | Adopters/Collaborators Review | 2007-05-21 A | 2007-05-25 A |  | 0% → 100% | 90d → none |  |  |
| 809 | Developers Update | 2007-05-28 A | 2007-05-29 A |  | 0% → 100% | 90d → none |  |  |
| 810 | **AE Notification Trigger (cont'd)** | 2007-05-07 A | 2007-05-29 A |  | 0% → 100% | 90d → none |  |  |
| 811 | Develop appropriate UML Artifacts | 2007-05-07 A | 2007-05-11 A |  | 0% → 100% | 90d → none |  |  |
| 812 | Create Design Document | 2007-05-14 A | 2007-05-18 A |  | 0% → 100% | 90d → none |  |  |
| 813 | Adopters/Collaborators Review | 2007-05-21 A | 2007-05-25 A |  | 0% → 100% | 90d → none |  |  |
| 814 | Developers Update | 2007-05-28 A | 2007-05-29 A |  | 0% → 100% | 90d → none |  |  |
| 815 | Deliver Design document to BAH (Task 3.4) | 2007-05-29 A | 2007-05-29 A |  | 0% → 100% | 100d → none | 804, 809, Developers Update, 814 → 804, 809, 814 |  |
| 816 | Deliver UML to BAH (Task 3.3) |  |  |  |  |  | 804, 809, Developers Update, 814 → 804, 809, 814 |  |
| 818 | **Modeling** | 2007-05-07 A | 2007-05-11 A |  | 0% → 100% | 112d → none |  |  |
| 819 | Update Implementation Model | 2007-05-07 A | 2007-05-08 A |  | 0% → 100% | 115d → none |  |  |
| 820 | Update Domain Analysis Model/BRIDG Harmonization | 2007-05-07 A | 2007-05-11 A |  | 0% → 100% | 112d → none |  |  |
| 821 | Create/Update Dynamic Models (BRIDG) | 2007-05-07 A | 2007-05-11 A |  | 0% → 100% | 112d → none |  |  |
| 822 | **Semantic Interoperability** | 2007-05-07 A |  |  | 0% → 58% |  |  |  |
| 823 | CDE Gap Analysis/Report | 2007-05-07 A |  |  | 0% → 50% | 111d → 112d |  |  |
| 824 | Meeting with VCDE | 2007-05-14 A | 2007-05-14 A |  | 0% → 100% | 111d → none |  |  |
| 825 | **Implementation (Iter-4)** | 2007-05-07 A | 2007-05-30 → 2007-05-31 A (+1d) | 18d → 19d | 0% → 100% | 89d → none |  |  |
| 826 | **Web interface** | 2007-05-07 A | 2007-05-11 A |  | 0% → 100% | 102d → none |  |  |
| 827 | UI Refinement | 2007-05-07 A | 2007-05-11 A |  | 0% → 100% | 102d → none |  |  |
| 828 | **Bug Fixes** | 2007-05-07 A | 2007-05-14 A |  | 0% → 100% | 101d → none |  |  |
| 829 | Review and assignment of Bugs from prior iteration | 2007-05-07 A | 2007-05-07 A |  | 0% → 100% | 101d → none |  |  |
| 830 | Bug Fixes | 2007-05-08 A | 2007-05-14 A |  | 0% → 100% | 101d → none |  |  |
| 831 | **Implement Use Cases** | 2007-05-07 A | 2007-05-30 → 2007-05-31 A (+1d) | 18d → 19d | 0% → 100% | 89d → none |  |  |
| 833 | Implement O/R mapping | 2007-05-07 A | 2007-05-11 A |  | 0% → 100% | 91d → none |  | resources Kulasekaran → Krikor |
| 834 | Develop DAO | 2007-05-09 A | 2007-05-22 A |  | 0% → 100% | 91d → none |  | resources Kulasekaran → Krikor |
| 835 | Develop Service | 2007-05-11 A | 2007-05-24 A |  | 0% → 100% | 91d → none |  | resources Kulasekaran → Krikor |
| 836 | Develop controller and command objects | 2007-05-15 A | 2007-05-28 A |  | 0% → 100% | 91d → none |  | resources Kulasekaran → Krikor |
| 837 | Develop JUnit test cases | 2007-05-17 A | 2007-05-25 A |  | 0% → 100% | 92d → none |  | resources Kulasekaran → Krikor |
| 839 | Implement O/R mapping | 2007-05-07 A | 2007-05-11 A |  | 0% → 100% | 91d → none |  | resources Kulasekaran → Rhett |
| 840 | Develop DAO | 2007-05-09 A | 2007-05-22 → 2007-05-11 A (-11d) | 10d → 3d | 0% → 100% | 91d → none |  | resources Kulasekaran → Rhett |
| 841 | Develop Service | 2007-05-11 A | 2007-05-24 → 2007-05-15 A (-9d) | 10d → 3d | 0% → 100% | 91d → none |  | resources Kulasekaran → Rhett |
| 842 | Develop controller and command objects | 2007-05-15 A | 2007-05-28 → 2007-05-17 A (-11d) | 10d → 3d | 0% → 100% | 91d → none |  | resources Kulasekaran → Rhett |
| 843 | Develop JUnit test cases | 2007-05-17 A | 2007-05-25 → 2007-05-21 A (-4d) | 7d → 3d | 0% → 100% | 92d → none |  | resources Kulasekaran → Rhett |
| 844 | **Study Level Rules Authoring** | 2007-05-07 A | 2007-05-28 A |  | 0% → 100% | 91d → none |  | was named Triggers/Notification (cont'd) |
| 845 | Implement O/R mapping | 2007-05-07 A | 2007-05-11 A |  | 0% → 100% | 91d → none |  |  |
| 846 | Develop DAO | 2007-05-09 A | 2007-05-22 A |  | 0% → 100% | 91d → none |  |  |
| 847 | Develop Service | 2007-05-11 A | 2007-05-24 A |  | 0% → 100% | 91d → none |  |  |
| 848 | Develop controller and command objects | 2007-05-15 A | 2007-05-28 A |  | 0% → 100% | 91d → none |  |  |
| 849 | Develop JUnit test cases | 2007-05-17 A | 2007-05-25 A |  | 0% → 100% | 92d → none |  |  |
| 850 | **Report Calendar and Notifications** | 2007-05-22 → 2007-05-07 A (-15d) | 2007-05-30 → 2007-05-31 A (+1d) | 7d → 19d | 0% → 100% | 89d → none |  | was named Reports Template Engine Solution |
| 851 | Calendar and Email Notification Templates | 2007-05-22 → 2007-05-07 A (-15d) | 2007-05-30 → 2007-05-31 A (+1d) | 7d → 19d | 0% → 100% | 89d → none | 1084 → none | was named Develop Reports Engine Solution; resources Rhett → Biju |
| 852 | Data Push to AdEERS | 2007-05-07 A | 2007-05-18 → 2007-05-31 A (+13d) | 10d → 19d | 0% → 100% | 97d → none |  | resources Krikor; Ram → Srini |
| 853 | **Documentation (Iter-4)** | 2007-05-07 A |  |  | 0% → 29% |  |  |  |
| 854 | **Installation Guide** | 2007-05-21 A |  |  | 0% → 33% |  |  |  |
| 855 | Update Installation Guide | 2007-05-21 A | 2007-05-25 A |  | 0% → 100% | 92d → none |  |  |
| 856 | Submit to BAH/Adopters | 2007-05-25 A | 2007-05-25 A |  | 0% → 100% | 92d → none |  |  |
| 858 | **Administrators Guide** | 2007-05-07 A |  |  | 0% → 33% |  |  |  |
| 859 | Update Administrators Guide | 2007-05-07 A | 2007-05-11 A |  | 0% → 100% | 102d → none |  |  |
| 860 | Submit to BAH | 2007-05-11 A | 2007-05-11 A |  | 0% → 100% | 102d → none |  |  |
| 862 | **Release Notes** | 2007-05-07 A |  |  | 0% → 17% |  |  |  |
| 863 | Update Release Notes | 2007-05-07 A | 2007-05-08 A |  | 0% → 100% | 105d → none |  |  |
| 864 | Submit to BAH | 2007-05-08 A | 2007-05-08 A |  | 0% → 100% | 105d → none |  |  |
| 866 | **Testing (Iter-4)** | 2007-05-07 A |  |  | 0% → 38% |  |  |  |
| 867 | **Test Plan** | 2007-05-07 A |  |  | 0% → 33% |  |  |  |
| 868 | Update Test Plan Document (Task 3.6) | 2007-05-07 A | 2007-05-11 A |  | 0% → 100% | 102d → none |  |  |
| 869 | Submit to BAH | 2007-05-11 A | 2007-05-11 A |  | 0% → 100% | 102d → none |  |  |
| 873 | **Run Tests** | 2007-05-07 A |  |  | 0% → 50% |  |  |  |
| 874 | Testing | 2007-05-07 A | 2007-05-18 A |  | 0% → 100% | 97d → none |  |  |
| 877 | **Deployment (Iter-4)** | 2007-05-30 A | 2007-06-13 → 2007-06-14 (+1d) | 10d → 11d |  | 89d → 88d |  |  |
| 878 | Submit prototype code (Task 3.5) | 2007-05-30 A | 2007-05-30 A |  | 0% → 100% | 89d → none |  |  |
| 879 | Formal Review of Code by BAH | 2007-05-31 → 2007-06-01 (+1d) | 2007-06-13 → 2007-06-14 (+1d) |  |  | 89d → 88d |  |  |

| ID | Task | Start | Finish | Duration | Complete | Total float | Predecessors | Other |
| --- | --- | --- | --- | --- | --- | --- | --- | --- |
| 880 | Deploy Prototype for Iteration 1 at Mayo and WF | 2007-05-31 → 2007-06-01 (+1d) | 2007-05-31 → 2007-06-01 (+1d) |  |  | 98d → 97d |  |  |
| 881 | Finish Iteration 4 | 2007-05-31 A | 2007-05-31 A |  | 0% → 100% | 0d → none |  |  |
| 882 | **Construction Phase Iteration 5** | 2007-06-01 A |  | 31d → 31d? | 0% → 2% | 0d → 67d |  |  |
| 884 | **Iteration Planning (Iter-5)** | 2007-06-01 A | 2007-06-04 A |  | 0% → 100% | 67d → none |  |  |
| 885 | Review and finalize Ucases and Work List for Iteration | 2007-06-01 A | 2007-06-01 A |  | 0% → 100% | 67d → none |  |  |
| 886 | Review and finalize assignments for Iteration | 2007-06-04 A | 2007-06-04 A |  | 0% → 100% | 67d → none |  |  |
| 887 | **Project Management (Iter-5)** | 2007-06-04 A |  |  | 0% → 18% | 0d → 77d |  |  |
| 888 | Update Project Plan | 2007-06-05 A |  |  | 0% → 50% |  |  |  |
| 891 | **Weekly Team Meeting** | 2007-06-04 A |  |  | 0% → 25% |  |  |  |
| 892 | Weekly Team Meeting 1 | 2007-06-04 A | 2007-06-04 A |  | 0% → 100% | 96d → none |  |  |
| 896 | **Status and Risk Reporting** | 2007-06-08 A |  |  | 0% → 13% |  |  |  |
| 897 | Bi-weekly Risk Update in caMP (Task 1.4) | 2007-06-08 A | 2007-06-08 A |  | 0% → 100% | 92d → none |  |  |
| 910 | **Environment (Iter-5)** | 2007-06-05 A |  |  | 0% → 50% |  |  |  |
| 911 | Update Environment | 2007-06-05 A |  |  | 0% → 50% |  |  |  |
| 912 | **SCM (Iter-5)** | 2007-06-05 A |  |  | 0% → 25% |  |  |  |
| 913 | Manage Repository | 2007-06-05 A |  |  | 0% → 25% |  |  |  |
| 914 | **Requirements (Iter-5)** |  |  | 21d → 21d? |  |  |  |  |
| 915 | **Requirements Gathering and Elucidation** |  | 2007-06-05 → 2007-06-06 (+1d) | 1d → 2d? |  | 95d → 94d |  |  |
| 919 | 2d |  |  |  |  |  |  | was named Reports; resources none → Sean; Krikor; Edmond |
| 938 | **Analysis and Design (Iter-5)** |  |  | 22d → 22d? |  |  |  |  |
| 939 | **Design Documents** |  |  | 22d → 22d? |  |  |  |  |
| 947 | **Candidate AE** | 2007-05-07 → 2007-06-05 (+29d) | 2007-05-28 → 2007-06-26 (+29d) |  |  | 91d → 80d |  |  |
| 948 | Implement O/R mapping | 2007-05-07 → 2007-06-05 (+29d) | 2007-05-11 → 2007-06-11 (+31d) |  |  | 89d → 80d |  | resources Rhett → Krikor |
| 949 | Develop DAO | 2007-05-09 → 2007-06-07 (+29d) | 2007-05-11 → 2007-06-20 (+40d) | 3d → 10d |  | 89d → 80d |  | resources Rhett → Krikor |
| 950 | Develop Service | 2007-05-11 → 2007-06-11 (+31d) | 2007-05-15 → 2007-06-22 (+38d) | 3d → 10d |  | 89d → 80d |  | resources Rhett → Krikor |
| 951 | Develop controller and command objects | 2007-05-15 → 2007-06-13 (+29d) | 2007-05-17 → 2007-06-26 (+40d) | 3d → 10d |  | 89d → 80d |  | resources Rhett → Krikor |
| 952 | Develop JUnit test cases | 2007-05-17 → 2007-06-15 (+29d) | 2007-05-21 → 2007-06-25 (+35d) | 3d → 7d |  | 89d → 81d |  | resources Rhett → Krikor |
| 953 | **Solicted AE** | 2007-05-07 → 2007-06-05 (+29d) | 2007-05-28 → 2007-06-26 (+29d) |  |  | 91d → 80d |  |  |
| 960 | Develop appropriate UML Artifacts |  |  |  |  |  |  | resources Kulasekaran → Krikor |
| 961 | Create Design Document |  |  |  |  |  |  | resources Kulasekaran → Krikor |
| 963 | Developers Update |  |  |  |  |  |  | resources Kulasekaran → Krikor |
| 965 | Develop appropriate UML Artifacts |  |  |  |  |  |  | resources Sujith → Visu |
| 966 | Create Design Document |  |  |  |  |  |  | resources Sujith → Visu |
| 968 | Developers Update |  |  |  |  |  |  | resources Sujith → Visu |
| 969 | Deliver Design document to BAH (Task 3.4) |  |  |  |  |  | 946, Developers Update, 963, 968 → 946, 963, 968 |  |
| 970 | Deliver UML to BAH (Task 3.3) |  |  |  |  |  | 946, Developers Update, 963, 968 → 946, 963, 968 |  |
| 979 | **Implementation (Iter-5)** |  |  | 19d → 19d? |  |  |  |  |
| 985 | **Implement Use Cases** |  |  | 19d → 19d? |  |  |  |  |
| 989 | Import (cont'd) | 2007-06-05 → 2007-06-14 (+9d) | 2007-06-18 → 2007-06-15 (-3d) | 10d → 2d |  | 76d → 77d | none → 986, 993 | resources none → Krikor |
| 990 | Export Data to Local CTMS | 2007-06-05 → 2007-06-14 (+9d) | 2007-06-25 → 2007-06-18 (-7d) | 15d → 3d |  |  | none → 993 | resources none → Krikor |
| 991 | Pushing data to AdEERS (cont'd) |  |  |  |  |  |  | resources none → Srini |
| 992 | Complete AE Expedited Report Flow |  |  |  |  |  |  | was named Batch AE Entry and Baseline Assignments(cont'd); resources none → Rhett |
| 993 | Searching/Views/Analysis |  | 2007-06-27 → 2007-06-13 (-14d) | 17d → 7d |  | 69d → 71d |  | was named Reports Engine (cont'd); resources none → Krikor |
| 998 | Update Installation Guide |  |  |  |  |  |  | resources none → Jason |
| 1002 | Update Administrators Guide |  |  |  |  |  |  | resources none → Jason |
| 1010 | Create Draft of End User Guide |  |  |  |  |  |  | resources none → Jason |
| 1023 | Harmonization with BRIDG Model (Review) |  |  |  |  |  |  | resources none → Sean |
| 1084 | **DCP AE Data Capture Workflow (cont'd)** | 2007-05-07 → 2007-07-04 (+58d) | 2007-05-21 → 2007-07-18 (+58d) |  |  | 89d → 64d |  |  |
| 1129 | Export (cont'd) |  | 2007-07-31 → 2007-07-10 (-21d) | 20d → 5d |  | 55d → 70d |  |  |
| 1132 | LOV Maintenance Screens/Functionality | 2007-06-05 → 2007-07-04 (+29d) | 2007-06-18 → 2007-07-10 (+22d) | 10d → 5d |  | 76d → 70d |  |  |
| 1133 | System Admin (cont'd) |  | 2007-07-31 → 2007-07-10 (-21d) | 20d → 5d |  | 55d → 70d |  | resources none → Visu; Biju; Vinay |
| 1168 | Harmonization with BRIDG Model (Final Review) |  |  |  |  |  |  | resources none → Sean |
| 1178 | **Construction Phase Iteration 7** |  |  | 32d → 32d? |  |  |  |  |
| 1225 | **Implementation (Iter-7)** |  | 2007-08-23 → 2007-08-30 (+7d) | 15d → 20d? |  | 28d → 23d |  |  |
| 1231 | **Implement Use Cases** |  | 2007-08-23 → 2007-08-30 (+7d) | 15d → 20d? |  | 28d → 23d |  |  |
| 1234 | New Version of Study |  |  |  |  |  |  | was named Triggers/Notification (cont'd) |
| 1237 | System Admin (cont'd) | 2007-06-05 → 2007-08-03 (+59d) | 2007-06-29 → 2007-08-30 (+62d) | 19d → 20d |  | 67d → 23d |  |  |
| 1253 | **BRIDG Review (Final)** | 2007-07-11 → 2007-08-01 (+21d) | 2007-07-17 → 2007-08-07 (+21d) |  |  | 65d → 50d |  |  |
| 1266 | **Deployment (Iter-7)** | 2007-08-23 → 2007-08-30 (+7d) | 2007-09-06 → 2007-09-13 (+7d) |  |  | 28d → 23d |  |  |
| 1267 | Submit Final Code Base (Task 3.5) | 2007-08-23 → 2007-08-30 (+7d) | 2007-08-23 → 2007-08-30 (+7d) |  |  | 28d → 23d |  |  |
| 1268 | Formal Review of Code by BAH | 2007-08-24 → 2007-08-31 (+7d) | 2007-09-06 → 2007-09-13 (+7d) |  |  | 28d → 23d |  |  |
| 1269 | Deploy Prototype for Iteration 1 at Mayo and WF | 2007-08-24 → 2007-08-31 (+7d) | 2007-08-24 → 2007-08-31 (+7d) |  |  | 37d → 32d |  |  |

## Version 11 (saved 2007-06-28)

Note of the change: Updated to reflect extending remaining construction phase iterations to 6wks.

Last finish 2007-10-16 → 2007-11-30 (+45d).

Added:

| ID | Task | Duration | Start | Finish | Predecessors | Constraint | Resources |
| --- | --- | --- | --- | --- | --- | --- | --- |
| 887 | Create Iteration 5 Planning Workbook | 0d | 2007-06-04 | 2007-06-04 | 886 |  |  |
| 921 | CTEP Report Types (Required/Optional Sections) | 1d | 2007-06-12 | 2007-06-12 | 920 |  | Sean |
| 1034 | Create Iteration 6 Planning and Management Workbook | 0d | 2007-07-17 | 2007-07-17 | 1033 |  |  |
| 1037 | Daily Scrum Meetings | 30d | 2007-07-16 | 2007-08-24 | 1030 |  |  |
| 1163 | Internal Review of BRIDG Harmonization Artifacts | 5d | 2007-07-25 | 2007-07-31 | 1103 |  |  |
| 1175 | Create Iteration 7 Planning and Management Workbook | 0d | 2007-09-04 | 2007-09-04 | 1174 |  | Edmond |
| 1183 | Daily Scrum Meetings | 35d | 2007-09-03 | 2007-10-19 | 1171 |  | Edmond |
| 1194 | **caAERS-Adopters Weekly Meeting** | 26d | 2007-09-06 | 2007-10-11 |  |  |  |
| 1195 | caAERS-Adopters Weekly Meeting 1 | 1d | 2007-09-06 | 2007-09-06 |  | start no earlier than 2007-09-06 |  |
| 1196 | caAERS-Adopters Weekly Meeting 2 | 1d | 2007-09-13 | 2007-09-13 |  | start no earlier than 2007-09-13 |  |
| 1197 | caAERS-Adopters Weekly Meeting 3 | 1d | 2007-09-20 | 2007-09-20 |  | start no earlier than 2007-09-20 |  |
| 1198 | caAERS-Adopters Weekly Meeting 4 | 1d | 2007-09-27 | 2007-09-27 |  | start no earlier than 2007-09-27 |  |
| 1199 | caAERS-Adopters Weekly Meeting 5 | 1d | 2007-10-04 | 2007-10-04 |  | start no earlier than 2007-10-04 |  |
| 1200 | caAERS-Adopters Weekly Meeting 6 | 1d | 2007-10-11 | 2007-10-11 |  | start no earlier than 2007-10-11 |  |
| 1276 | Finish Transition Phase | 0d | 2007-11-30 | 2007-11-30 | 1268, 1272, 1266, 1267 | finish no later than 2007-12-01 |  |

Removed: 1022 BRIDG Review (Begin); 1023 Harmonization with BRIDG Model (Review); 1036 CaAERS CCB (Task 2.10); 1037 CCB Meetings; 1038 Weekly Team Meeting; 1039 Weekly Team Meeting 1; 1040 Weekly Team Meeting 2; 1041 Weekly Team Meeting 3; 1042 Weekly Team Meeting 4; 1190 CaAERS CCB (Task 2.10); 1191 CCB Meetings; 1192 Weekly Team Meeting; 1193 Weekly Team Meeting 1; 1194 Weekly Team Meeting 2; 1195 Weekly Team Meeting 3; 1196 Weekly Team Meeting 4; 1207 Adopters Mtg; 1208 Bi-Weekly AE SIG Meeting; 1209 Adopters Mtg; 1210 Bi-Weekly AE SIG Meeting

Changed:

| ID | Task | Start | Finish | Duration | Complete | Total float | Predecessors | Other |
| --- | --- | --- | --- | --- | --- | --- | --- | --- |
| 1 | **caAERS Application Development Project** |  | 2007-10-16 → 2007-11-30 (+45d) | 226d? → 259d | 63% → 59% |  |  |  |
| 303 | **Construction Phase** |  | 2007-09-13 → 2007-10-26 (+43d) | 161d? → 192d | 55% → 51% | 23d → 25d |  |  |
| 882 | **Construction Phase Iteration 5** |  | 2007-07-13 → 2007-07-16 (+3d) | 31d? → 32d |  | 67d → 99d |  |  |
| 884 | **Iteration Planning (Iter-5)** |  | 2007-06-04 A → 2007-06-04 |  | 100% → 99% | none → 127.5d |  |  |
| 889 | Update Project Plan |  |  |  |  | 93d → 126d | 886 → 887 |  |
| 915 | **Requirements (Iter-5)** |  | 2007-07-03 → 2007-07-06 (+3d) | 21d? → 24d |  | 75d → 105d |  |  |
| 916 | **Requirements Gathering and Elucidation** |  | 2007-06-06 → 2007-06-12 (+6d) | 2d? → 6d |  | 94d → 123d |  |  |
| 918 | Roles | 2007-06-05 → 2007-06-06 (+1d) | 2007-06-05 → 2007-06-06 (+1d) | 1d? → 1d |  | 95d → 123d | none → 917 |  |
| 919 | Solicited AE's | 2007-06-05 → 2007-06-07 (+2d) | 2007-06-06 → 2007-06-08 (+2d) |  |  | 94d → 123d | none → 918 |  |
| 920 | Multi-modality studies | 2007-06-05 → 2007-06-11 (+6d) | 2007-06-05 → 2007-06-11 (+6d) |  |  | 95d → 123d | none → 919 | was named 2d |
| 922 | **Updated Use Case Specification and Realization** |  | 2007-07-03 → 2007-07-06 (+3d) | 21d → 24d |  | 75d → 105d |  |  |
| 925 | Update Use Case Document |  | 2007-06-19 → 2007-06-22 (+3d) | 2d → 5d |  | 75d → 105d |  |  |
| 926 | Submit Updated Use Case Document to BAH (Task 3.1) | 2007-06-19 → 2007-06-22 (+3d) | 2007-06-19 → 2007-06-22 (+3d) |  |  | 75d → 105d |  |  |
| 927 | Formal Review of Updated Use Case Document | 2007-06-20 → 2007-06-25 (+5d) | 2007-07-03 → 2007-07-06 (+3d) |  |  | 75d → 105d |  |  |
| 928 | **Updated SRS Document** |  | 2007-07-03 → 2007-07-06 (+3d) | 21d → 24d |  | 75d → 105d |  |  |
| 931 | Update SRS |  | 2007-06-19 → 2007-06-22 (+3d) | 2d → 5d |  | 75d → 105d |  |  |
| 932 | Submit Updated SRS Document to BAH (Task 3.2) | 2007-06-19 → 2007-06-22 (+3d) | 2007-06-19 → 2007-06-22 (+3d) |  |  | 75d → 105d |  |  |
| 933 | Formal Review of Updated SRS | 2007-06-20 → 2007-06-25 (+5d) | 2007-07-03 → 2007-07-06 (+3d) |  |  | 75d → 105d |  |  |
| 934 | **Updated UML Static Class Diagram Model** |  | 2007-06-29 → 2007-07-04 (+5d) | 19d → 22d |  | 77d → 107d |  |  |
| 937 | Update UML |  | 2007-06-15 → 2007-06-20 (+5d) | 2d → 5d |  | 77d → 107d |  |  |
| 938 | Submit UML to BAH (Task 3.3) | 2007-06-15 → 2007-06-20 (+5d) | 2007-06-15 → 2007-06-20 (+5d) |  |  | 77d → 107d |  |  |
| 939 | Formal Review of UML | 2007-06-18 → 2007-06-21 (+3d) | 2007-06-29 → 2007-07-04 (+5d) |  |  | 77d → 107d |  |  |
| 940 | **Analysis and Design (Iter-5)** |  |  | 22d? → 22d |  | 74d → 107d |  |  |
| 941 | **Design Documents** |  |  | 22d? → 22d |  | 74d → 107d |  |  |
| 943 | Study Identifiers (model refactoring) |  | 2007-06-05 → 2007-06-06 (+1d) | 1d? → 2d |  | 95d → 127d |  |  |
| 981 | **Implementation (Iter-5)** |  | 2007-06-29 → 2007-07-09 (+10d) | 19d? → 25d |  | 67d → 99d |  |  |
| 987 | **Implement Use Cases** |  | 2007-06-29 → 2007-07-09 (+10d) | 19d? → 25d |  | 67d → 99d |  |  |
| 990 | Solicited AE's | 2007-06-19 → 2007-06-28 (+9d) | 2007-06-25 → 2007-07-04 (+9d) |  |  | 71d → 97d |  |  |
| 991 | Import (cont'd) |  | 2007-06-15 → 2007-06-20 (+5d) | 2d → 5d |  | 77d → 107d |  |  |
| 992 | Export Data to Local CTMS |  | 2007-06-18 → 2007-06-27 (+9d) | 3d → 10d |  | 71d → 97d |  |  |
| 993 | Pushing data to AdEERS (cont'd) |  | 2007-06-25 → 2007-07-02 (+7d) | 15d → 20d |  | 71d → 99d |  |  |
| 994 | Complete AE Expedited Report Flow |  | 2007-06-25 → 2007-07-02 (+7d) | 15d → 20d |  | 71d → 99d |  |  |
| 997 | Online Help |  | 2007-06-05 → 2007-07-09 (+34d) | 1d? → 25d |  | 85d → 94d |  |  |
| 1013 | **Testing (Iter-5)** |  | 2007-07-02 → 2007-07-16 (+14d) | 20d → 30d |  | 76d → 99d |  |  |
| 1020 | **Testing** |  | 2007-07-02 → 2007-07-16 (+14d) | 20d → 30d |  | 76d → 99d |  |  |
| 1021 | Testing |  | 2007-06-18 → 2007-07-02 (+14d) | 10d → 20d |  | 76d → 99d |  |  |
| 1022 | Submit Test Results Report (Task 3.8) | 2007-06-18 → 2007-07-02 (+14d) | 2007-06-18 → 2007-07-02 (+14d) |  |  | 76d → 99d |  |  |
| 1023 | Formal Review of Test results Report | 2007-06-19 → 2007-07-03 (+14d) | 2007-07-02 → 2007-07-16 (+14d) |  |  | 76d → 99d |  |  |
| 1024 | **Deployment (Iter-5)** | 2007-06-29 → 2007-07-03 (+4d) | 2007-07-13 → 2007-07-16 (+3d) |  |  | 67d → 99d |  |  |
| 1025 | Submit prototype code (Task 3.5) | 2007-06-29 → 2007-07-09 (+10d) | 2007-06-29 → 2007-07-09 (+10d) |  |  | 67d → 104d |  |  |
| 1026 | Deploy Prototype for Iteration 1 at Mayo and WF | 2007-06-29 → 2007-07-16 (+17d) | 2007-06-29 → 2007-07-16 (+17d) |  |  | 67d → 100d |  | constraint none → start no earlier than 2007-07-16 |
| 1027 | Formal Review of Code by BAH | 2007-07-02 → 2007-07-03 (+1d) | 2007-07-13 → 2007-07-16 (+3d) |  |  | 67d → 99d | 1026 → 987FS-5d, 1026 |  |
| 1028 | Finish Iteration 5 | 2007-06-30 → 2007-07-15 (+15d) | 2007-06-30 → 2007-07-15 (+15d) |  |  |  |  | constraint must finish on 2007-06-30 → must finish on 2007-07-15 |
| 1029 | **Construction Phase Iteration 6** | 2007-07-02 → 2007-07-05 (+3d) | 2007-08-07 → 2007-08-31 (+24d) | 27d → 42d |  | 0d → 7d |  |  |
| 1030 | Begin Iteration 6 | 2007-07-02 → 2007-07-16 (+14d) | 2007-07-02 → 2007-07-16 (+14d) |  |  |  |  | constraint must start on 2007-07-02 → must start on 2007-07-16 |
| 1031 | **Iteration Planning (Iter-6)** | 2007-07-02 → 2007-07-16 (+14d) | 2007-07-03 → 2007-07-17 (+14d) |  |  | 3d → 73d |  |  |
| 1032 | Review and finalize Ucases and Work List for Iteration | 2007-07-02 → 2007-07-16 (+14d) | 2007-07-02 → 2007-07-16 (+14d) |  |  | 3d → 73d |  |  |
| 1033 | Review and finalize assignments for Iteration | 2007-07-03 → 2007-07-17 (+14d) | 2007-07-03 → 2007-07-17 (+14d) |  |  | 3d → 73d |  |  |
| 1035 | **Project Management (Iter-6)** | 2007-07-02 → 2007-07-05 (+3d) | 2007-07-31 → 2007-08-31 (+31d) | 22d → 42d |  | 55d → 65d |  |  |
| 1036 | Update Project Plan | 2007-07-03 → 2007-07-18 (+15d) | 2007-07-05 → 2007-07-20 (+15d) |  |  | 73d → 95d | 1032 → 1031 |  |
| 1038 | **Status and Risk Reporting** | 2007-07-06 → 2007-07-18 (+12d) | 2007-07-31 → 2007-08-31 (+31d) | 18d → 33d |  | 55d → 65d |  |  |
| 1039 | Bi-weekly Risk Update in caMP (Task 1.4) | 2007-07-06 → 2007-07-18 (+12d) | 2007-07-06 → 2007-07-18 (+12d) |  |  | 72d → 97d |  | constraint start no earlier than 2007-07-06 → start no earlier than 2007-07-18 |
| 1040 | Bi-weekly Risk Matrix Update Meeting | 2007-07-06 → 2007-07-20 (+14d) | 2007-07-06 → 2007-07-20 (+14d) |  |  | 72d → 95d |  | constraint start no earlier than 2007-07-06 → start no earlier than 2007-07-20 |
| 1041 | Bi-weekly Risk Update in caMP (Task 1.4) | 2007-07-20 → 2007-08-01 (+12d) | 2007-07-20 → 2007-08-01 (+12d) |  |  | 62d → 87d |  | constraint start no earlier than 2007-07-20 → start no earlier than 2007-08-01 |
| 1042 | Bi-weekly Risk Matrix Update Meeting | 2007-07-20 → 2007-08-03 (+14d) | 2007-07-20 → 2007-08-03 (+14d) |  |  | 62d → 85d |  | constraint start no earlier than 2007-07-20 → start no earlier than 2007-08-03 |
| 1043 | Bi-weekly Status Update Meeting with BAH/NCI | 2007-07-13 → 2007-07-27 (+14d) | 2007-07-13 → 2007-07-27 (+14d) |  |  | 67d → 90d |  | constraint start no earlier than 2007-07-13 → start no earlier than 2007-07-27 |
| 1044 | Bi-weekly Status Update Meeting with BAH/NCI | 2007-07-13 → 2007-08-10 (+28d) | 2007-07-13 → 2007-08-10 (+28d) |  |  | 67d → 80d |  | constraint start no earlier than 2007-07-13 → start no earlier than 2007-08-10 |
| 1045 | Iteration Status Report (Task 1.3) | 2007-07-31 → 2007-08-31 (+31d) | 2007-07-31 → 2007-08-31 (+31d) |  |  | 55d → 65d |  | was named Monthly Status Report (Task 1.3); constraint start no earlier than 2007-07-31 → start no earlier than 2007-08-31 |
| 1046 | Iteration Risk Matrix Update (Task 1.3) | 2007-07-31 → 2007-08-31 (+31d) | 2007-07-31 → 2007-08-31 (+31d) |  |  | 55d → 65d |  | was named Monthly Risk Matrix Update (Task 1.3) |
| 1052 | **Environment (Iter-6)** | 2007-07-03 → 2007-07-17 (+14d) | 2007-07-05 → 2007-07-19 (+14d) |  |  | 73d → 96d |  |  |
| 1053 | Update Environment | 2007-07-03 → 2007-07-17 (+14d) | 2007-07-05 → 2007-07-19 (+14d) |  |  | 73d → 96d |  |  |
| 1054 | **SCM (Iter-6)** | 2007-07-02 → 2007-07-16 (+14d) | 2007-07-06 → 2007-07-20 (+14d) |  |  | 72d → 95d |  |  |
| 1055 | Manage Repository | 2007-07-02 → 2007-07-16 (+14d) | 2007-07-06 → 2007-07-20 (+14d) |  |  | 72d → 95d |  |  |
| 1056 | **Requirements (Iter-6)** | 2007-07-02 → 2007-07-16 (+14d) | 2007-07-25 → 2007-08-08 (+14d) |  |  | 59d → 82d |  |  |
| 1057 | **Requirements Gathering and Elucidation** | 2007-07-02 → 2007-07-16 (+14d) | 2007-07-06 → 2007-07-20 (+14d) |  |  | 72d → 95d |  |  |
| 1058 | Requirements gathering/research for iteration | 2007-07-02 → 2007-07-16 (+14d) | 2007-07-06 → 2007-07-20 (+14d) |  |  | 72d → 95d |  |  |
| 1059 | **Updated Use Case Specification and Realization** | 2007-07-04 → 2007-07-18 (+14d) | 2007-07-25 → 2007-08-08 (+14d) |  |  | 59d → 82d |  |  |
| 1060 | Developer draft | 2007-07-04 → 2007-07-18 (+14d) | 2007-07-05 → 2007-07-19 (+14d) |  |  | 59d → 82d |  |  |
| 1061 | Adopters/Collobators Review | 2007-07-06 → 2007-07-20 (+14d) | 2007-07-10 → 2007-07-24 (+14d) |  |  | 59d → 82d |  |  |
| 1062 | Update Use Case Document | 2007-07-11 → 2007-07-25 (+14d) | 2007-07-11 → 2007-07-25 (+14d) |  |  | 59d → 82d |  |  |

| ID | Task | Start | Finish | Total float |
| --- | --- | --- | --- | --- |
| 1063 | Submit Updated Use Case Document to BAH (Task 3.1) | 2007-07-11 → 2007-07-25 (+14d) | 2007-07-11 → 2007-07-25 (+14d) | 59d → 82d |
| 1064 | Formal Review of Updated Use Case Document | 2007-07-12 → 2007-07-26 (+14d) | 2007-07-25 → 2007-08-08 (+14d) | 59d → 82d |
| 1065 | **Updated SRS Document** | 2007-07-04 → 2007-07-18 (+14d) | 2007-07-25 → 2007-08-08 (+14d) | 59d → 82d |
| 1066 | Developer draft | 2007-07-04 → 2007-07-18 (+14d) | 2007-07-05 → 2007-07-19 (+14d) | 59d → 82d |
| 1067 | Adopters/Collobators Review | 2007-07-06 → 2007-07-20 (+14d) | 2007-07-10 → 2007-07-24 (+14d) | 59d → 82d |
| 1068 | Update SRS | 2007-07-11 → 2007-07-25 (+14d) | 2007-07-11 → 2007-07-25 (+14d) | 59d → 82d |
| 1069 | Submit Updated SRS Document to BAH (Task 3.2) | 2007-07-11 → 2007-07-25 (+14d) | 2007-07-11 → 2007-07-25 (+14d) | 59d → 82d |
| 1070 | Formal Review of Updated SRS | 2007-07-12 → 2007-07-26 (+14d) | 2007-07-25 → 2007-08-08 (+14d) | 59d → 82d |
| 1071 | **Updated UML Static Class Diagram Model** | 2007-07-04 → 2007-07-18 (+14d) | 2007-07-25 → 2007-08-08 (+14d) | 59d → 82d |
| 1072 | Developer draft | 2007-07-04 → 2007-07-18 (+14d) | 2007-07-05 → 2007-07-19 (+14d) | 59d → 82d |
| 1073 | Adopters/Collobators Review | 2007-07-06 → 2007-07-20 (+14d) | 2007-07-10 → 2007-07-24 (+14d) | 59d → 82d |
| 1074 | Update UML | 2007-07-11 → 2007-07-25 (+14d) | 2007-07-11 → 2007-07-25 (+14d) | 59d → 82d |
| 1075 | Submit UML to BAH (Task 3.3) | 2007-07-11 → 2007-07-25 (+14d) | 2007-07-11 → 2007-07-25 (+14d) | 59d → 82d |
| 1076 | Formal Review of UML | 2007-07-12 → 2007-07-26 (+14d) | 2007-07-25 → 2007-08-08 (+14d) | 59d → 82d |
| 1077 | **Analysis and Design (Iter-6)** | 2007-07-04 → 2007-07-18 (+14d) | 2007-08-01 → 2007-08-15 (+14d) | 54d → 77d |
| 1078 | **Design Documents** | 2007-07-04 → 2007-07-18 (+14d) | 2007-08-01 → 2007-08-15 (+14d) | 54d → 77d |
| 1079 | **DCP AE Data Capture Workflow (cont'd)** | 2007-07-04 → 2007-07-18 (+14d) | 2007-07-18 → 2007-08-01 (+14d) | 64d → 87d |
| 1080 | Implement O/R mapping | 2007-07-04 → 2007-07-18 (+14d) | 2007-07-10 → 2007-07-24 (+14d) | 64d → 87d |
| 1081 | Develop DAO | 2007-07-06 → 2007-07-20 (+14d) | 2007-07-10 → 2007-07-24 (+14d) | 64d → 87d |
| 1082 | Develop Service | 2007-07-10 → 2007-07-24 (+14d) | 2007-07-12 → 2007-07-26 (+14d) | 64d → 87d |
| 1083 | Develop controller and command objects | 2007-07-12 → 2007-07-26 (+14d) | 2007-07-16 → 2007-07-30 (+14d) | 64d → 87d |
| 1084 | Develop JUnit test cases | 2007-07-16 → 2007-07-30 (+14d) | 2007-07-18 → 2007-08-01 (+14d) | 64d → 87d |
| 1085 | **Export/Import (Con't)** | 2007-07-04 → 2007-07-18 (+14d) | 2007-07-18 → 2007-08-01 (+14d) | 54d → 77d |
| 1086 | Develop appropriate UML Artifacts | 2007-07-04 → 2007-07-18 (+14d) | 2007-07-06 → 2007-07-20 (+14d) | 54d → 77d |
| 1087 | Create Design Document | 2007-07-09 → 2007-07-23 (+14d) | 2007-07-11 → 2007-07-25 (+14d) | 54d → 77d |
| 1088 | Adopters/Collaborators Review | 2007-07-12 → 2007-07-26 (+14d) | 2007-07-16 → 2007-07-30 (+14d) | 54d → 77d |
| 1089 | Developers Update | 2007-07-17 → 2007-07-31 (+14d) | 2007-07-18 → 2007-08-01 (+14d) | 54d → 77d |
| 1090 | **Rules Engine/Triggers (cont'd)** | 2007-07-04 → 2007-07-18 (+14d) | 2007-07-18 → 2007-08-01 (+14d) | 54d → 77d |
| 1091 | Develop appropriate UML Artifacts | 2007-07-04 → 2007-07-18 (+14d) | 2007-07-06 → 2007-07-20 (+14d) | 54d → 77d |
| 1092 | Create Design Document | 2007-07-09 → 2007-07-23 (+14d) | 2007-07-11 → 2007-07-25 (+14d) | 54d → 77d |
| 1093 | Adopters/Collaborators Review | 2007-07-12 → 2007-07-26 (+14d) | 2007-07-16 → 2007-07-30 (+14d) | 54d → 77d |
| 1094 | Developers Update | 2007-07-17 → 2007-07-31 (+14d) | 2007-07-18 → 2007-08-01 (+14d) | 54d → 77d |
| 1095 | **System Admin Module (cont'd)** | 2007-07-04 → 2007-07-18 (+14d) | 2007-07-16 → 2007-07-30 (+14d) | 56d → 79d |
| 1096 | Develop appropriate UML Artifacts | 2007-07-04 → 2007-07-18 (+14d) | 2007-07-06 → 2007-07-20 (+14d) | 56d → 79d |
| 1097 | Create Design Document | 2007-07-09 → 2007-07-23 (+14d) | 2007-07-10 → 2007-07-24 (+14d) | 56d → 79d |
| 1098 | Adopters/Collaborators Review | 2007-07-11 → 2007-07-25 (+14d) | 2007-07-12 → 2007-07-26 (+14d) | 56d → 79d |
| 1099 | Developers Update | 2007-07-13 → 2007-07-27 (+14d) | 2007-07-16 → 2007-07-30 (+14d) | 56d → 79d |
| 1100 | Deliver Design document to BAH (Task 3.4) | 2007-07-18 → 2007-08-01 (+14d) | 2007-07-18 → 2007-08-01 (+14d) | 64d → 87d |
| 1101 | Deliver UML to BAH (Task 3.3) | 2007-07-18 → 2007-08-01 (+14d) | 2007-07-18 → 2007-08-01 (+14d) | 54d → 77d |
| 1102 | Formal Review by BAH | 2007-07-19 → 2007-08-02 (+14d) | 2007-08-01 → 2007-08-15 (+14d) | 54d → 77d |
| 1103 | **Modeling** | 2007-07-04 → 2007-07-18 (+14d) | 2007-07-10 → 2007-07-24 (+14d) | 65d → 83d |
| 1104 | Update Implementation Model | 2007-07-04 → 2007-07-18 (+14d) | 2007-07-05 → 2007-07-19 (+14d) | 68d → 86d |
| 1105 | Update Domain Analysis Model/BRIDG Harmonization | 2007-07-04 → 2007-07-18 (+14d) | 2007-07-10 → 2007-07-24 (+14d) | 65d → 83d |
| 1106 | Create/Update Dynamic Models (BRIDG) | 2007-07-04 → 2007-07-18 (+14d) | 2007-07-10 → 2007-07-24 (+14d) | 65d → 83d |
| 1107 | **Semantic Integration with caDSR** | 2007-07-04 → 2007-07-18 (+14d) | 2007-07-11 → 2007-07-25 (+14d) | 69d → 92d |
| 1108 | CDE Use Report | 2007-07-04 → 2007-07-18 (+14d) | 2007-07-10 → 2007-07-24 (+14d) | 69d → 92d |
| 1109 | Meeting with VCDE | 2007-07-11 → 2007-07-25 (+14d) | 2007-07-11 → 2007-07-25 (+14d) | 69d → 92d |
| 1110 | **Implementation (Iter-6)** | 2007-07-04 → 2007-07-18 (+14d) | 2007-07-31 → 2007-08-14 (+14d) | 55d → 78d |
| 1111 | **Web interface** | 2007-07-04 → 2007-07-18 (+14d) | 2007-07-10 → 2007-07-24 (+14d) | 70d → 93d |
| 1112 | UI Refinement | 2007-07-04 → 2007-07-18 (+14d) | 2007-07-10 → 2007-07-24 (+14d) | 70d → 93d |
| 1113 | **Bug Fixes** | 2007-07-04 → 2007-07-18 (+14d) | 2007-07-11 → 2007-07-25 (+14d) | 69d → 92d |
| 1114 | Review and assignment of Bugs from prior iteration | 2007-07-04 → 2007-07-18 (+14d) | 2007-07-04 → 2007-07-18 (+14d) | 69d → 92d |
| 1115 | Bug Fixes | 2007-07-05 → 2007-07-19 (+14d) | 2007-07-11 → 2007-07-25 (+14d) | 69d → 92d |
| 1116 | **Impementation** | 2007-07-04 → 2007-07-18 (+14d) | 2007-07-31 → 2007-08-14 (+14d) | 55d → 78d |
| 1117 | TAC Code (for Treatment Tab) | 2007-07-04 → 2007-07-18 (+14d) | 2007-07-06 → 2007-07-20 (+14d) | 72d → 95d |
| 1118 | Submission Mechanisms (cont'd) | 2007-07-04 → 2007-07-18 (+14d) | 2007-07-24 → 2007-08-07 (+14d) | 60d → 83d |
| 1119 | Report Definition Templates | 2007-07-04 → 2007-07-18 (+14d) | 2007-07-24 → 2007-08-07 (+14d) | 60d → 83d |
| 1120 | Expedited Report States (Pending, Submitted, etc.) | 2007-07-04 → 2007-07-18 (+14d) | 2007-07-09 → 2007-07-23 (+14d) | 71d → 94d |
| 1121 | Implement DCP Expedited Report Data Capture flow | 2007-07-04 → 2007-07-18 (+14d) | 2007-07-24 → 2007-08-07 (+14d) | 60d → 83d |
| 1122 | Duplicate AE Checking/Validation | 2007-07-04 → 2007-07-18 (+14d) | 2007-07-06 → 2007-07-20 (+14d) | 72d → 95d |
| 1123 | Duplicate Studies Checking/Validation | 2007-07-04 → 2007-07-18 (+14d) | 2007-07-05 → 2007-07-19 (+14d) | 73d → 96d |
| 1124 | Export (cont'd) | 2007-07-04 → 2007-07-18 (+14d) | 2007-07-10 → 2007-07-24 (+14d) | 70d → 93d |
| 1125 | Validations | 2007-07-04 → 2007-07-18 (+14d) | 2007-07-10 → 2007-07-24 (+14d) | 70d → 93d |
| 1126 | Error Messages | 2007-07-04 → 2007-07-18 (+14d) | 2007-07-06 → 2007-07-20 (+14d) | 72d → 95d |
| 1127 | LOV Maintenance Screens/Functionality | 2007-07-04 → 2007-07-18 (+14d) | 2007-07-10 → 2007-07-24 (+14d) | 70d → 93d |
| 1128 | System Admin (cont'd) | 2007-07-04 → 2007-07-18 (+14d) | 2007-07-10 → 2007-07-24 (+14d) | 70d → 93d |
| 1129 | Triggers/Notification (cont'd) | 2007-07-04 → 2007-07-18 (+14d) | 2007-07-31 → 2007-08-14 (+14d) | 55d → 78d |
| 1130 | **Documentation (Iter-6)** | 2007-07-04 → 2007-07-18 (+14d) | 2007-08-07 → 2007-08-21 (+14d) | 3d → 73d |
| 1135 | **Administrators Guide** | 2007-07-04 → 2007-07-18 (+14d) | 2007-08-07 → 2007-08-21 (+14d) | 50d → 73d |
| 1136 | Update Administrators Guide | 2007-07-04 → 2007-07-18 (+14d) | 2007-07-24 → 2007-08-07 (+14d) | 50d → 73d |

| ID | Task | Start | Finish | Duration | Total float | Predecessors | Other |
| --- | --- | --- | --- | --- | --- | --- | --- |
| 1137 | Submit to BAH | 2007-07-24 → 2007-08-07 (+14d) | 2007-07-24 → 2007-08-07 (+14d) |  | 50d → 73d |  |  |
| 1138 | Review of Admin Guide | 2007-07-25 → 2007-08-08 (+14d) | 2007-08-07 → 2007-08-21 (+14d) |  | 50d → 73d |  |  |
| 1143 | **End User Guide Draft** | 2007-07-04 → 2007-07-18 (+14d) | 2007-08-07 → 2007-08-21 (+14d) |  | 3d → 73d |  |  |
| 1144 | Create Draft of End User Guide | 2007-07-04 → 2007-07-18 (+14d) | 2007-07-24 → 2007-08-07 (+14d) |  | 3d → 73d |  |  |
| 1145 | Submit to BAH (Task 13.15.1) | 2007-07-24 → 2007-08-07 (+14d) | 2007-07-24 → 2007-08-07 (+14d) |  | 3d → 73d |  |  |
| 1146 | Review of End User Guide Draft | 2007-07-25 → 2007-08-08 (+14d) | 2007-08-07 → 2007-08-21 (+14d) |  | 3d → 73d |  |  |
| 1147 | **Testing (Iter-6)** | 2007-07-04 → 2007-07-18 (+14d) | 2007-08-07 → 2007-08-21 (+14d) |  | 30d → 73d |  |  |
| 1148 | **Test Plan** | 2007-07-04 → 2007-07-18 (+14d) | 2007-07-19 → 2007-08-02 (+14d) |  | 63d → 86d |  |  |
| 1149 | Update Test Plan Document (Task 3.6) | 2007-07-04 → 2007-07-18 (+14d) | 2007-07-05 → 2007-07-19 (+14d) |  | 63d → 86d |  |  |
| 1150 | Submit to BAH | 2007-07-05 → 2007-07-19 (+14d) | 2007-07-05 → 2007-07-19 (+14d) |  | 63d → 86d |  |  |
| 1151 | Formal Review by BAH | 2007-07-06 → 2007-07-20 (+14d) | 2007-07-19 → 2007-08-02 (+14d) |  | 63d → 86d |  |  |
| 1152 | **RTM** | 2007-07-04 → 2007-07-18 (+14d) | 2007-07-10 → 2007-07-24 (+14d) |  | 70d → 93d |  |  |
| 1153 | Update RTM | 2007-07-04 → 2007-07-18 (+14d) | 2007-07-10 → 2007-07-24 (+14d) |  | 70d → 93d |  |  |
| 1154 | **Test Data** | 2007-07-04 → 2007-07-18 (+14d) | 2007-07-31 → 2007-08-14 (+14d) |  | 55d → 78d |  |  |
| 1155 | Create test data set (Task 3.7) | 2007-07-04 → 2007-07-18 (+14d) | 2007-07-17 → 2007-07-31 (+14d) |  | 55d → 78d |  |  |
| 1156 | Submit for Review | 2007-07-17 → 2007-07-31 (+14d) | 2007-07-17 → 2007-07-31 (+14d) |  | 55d → 78d |  |  |
| 1157 | Review | 2007-07-18 → 2007-08-01 (+14d) | 2007-07-31 → 2007-08-14 (+14d) |  | 55d → 78d |  |  |
| 1158 | **Testing** | 2007-07-04 → 2007-07-18 (+14d) | 2007-08-07 → 2007-08-21 (+14d) |  | 30d → 73d |  |  |
| 1159 | Testing | 2007-07-04 → 2007-07-18 (+14d) | 2007-07-24 → 2007-08-07 (+14d) |  | 30d → 73d |  |  |
| 1160 | Submit Test Results Report (Task 3.8) | 2007-07-24 → 2007-08-07 (+14d) | 2007-07-24 → 2007-08-07 (+14d) |  | 30d → 73d |  |  |
| 1161 | Formal Review of Test results Report | 2007-07-25 → 2007-08-08 (+14d) | 2007-08-07 → 2007-08-21 (+14d) |  | 30d → 73d |  |  |
| 1162 | **BRIDG Review (Cont'd)** | 2007-07-11 → 2007-07-25 (+14d) | 2007-07-17 → 2007-08-07 (+21d) | 5d → 10d | 65d → 83d |  |  |
| 1164 | Begin Harmonization with BRIDG Model (Final Review) | 2007-07-11 → 2007-08-01 (+21d) | 2007-07-17 → 2007-08-07 (+21d) |  | 65d → 83d | 1103 → 1163, 1103 | was named Harmonization with BRIDG Model (Final Review) |
| 1169 | Finish Iteration 6 | 2007-07-31 → 2007-08-31 (+31d) | 2007-07-31 → 2007-08-31 (+31d) |  |  |  | constraint must finish on 2007-07-31 → must finish on 2007-08-31 |
| 1170 | **Construction Phase Iteration 7** | 2007-08-01 → 2007-09-03 (+33d) | 2007-09-13 → 2007-10-26 (+43d) | 32d? → 40d |  |  |  |
| 1171 | Begin Iteration 7 | 2007-08-01 → 2007-09-03 (+33d) | 2007-08-01 → 2007-09-03 (+33d) |  |  |  | constraint must start on 2007-08-01 → must start on 2007-09-03 |
| 1172 | **Iteration Planning (Iter-7)** | 2007-08-01 → 2007-09-03 (+33d) | 2007-08-02 → 2007-09-04 (+33d) |  | 6d → 14d |  |  |
| 1173 | Review and finalize Ucases and Work List for Iteration | 2007-08-01 → 2007-09-03 (+33d) | 2007-08-01 → 2007-09-03 (+33d) |  | 6d → 14d |  |  |
| 1174 | Review and finalize assignments for Iteration | 2007-08-02 → 2007-09-04 (+33d) | 2007-08-02 → 2007-09-04 (+33d) |  | 6d → 14d |  |  |
| 1176 | **Project Management (Iter-7)** | 2007-08-03 → 2007-09-03 (+31d) | 2007-08-31 → 2007-10-19 (+49d) | 21d → 35d | 1d → 30d |  |  |
| 1177 | Update Project Plan | 2007-08-03 → 2007-09-05 (+33d) | 2007-08-07 → 2007-09-07 (+31d) |  | 50d → 60d | 1174 → 1172 |  |
| 1178 | **Detailed Transition Phase Plan (Task 3.16)** | 2007-08-03 → 2007-09-03 (+31d) | 2007-08-30 → 2007-10-19 (+50d) | 20d → 35d | 33d → 30d |  |  |
| 1179 | Draft Final Transition Phase Plan (3.16) | 2007-08-03 → 2007-09-05 (+33d) | 2007-08-09 → 2007-09-11 (+33d) |  | 33d → 43d |  |  |
| 1180 | Review | 2007-08-10 → 2007-09-12 (+33d) | 2007-08-23 → 2007-09-25 (+33d) |  | 33d → 43d |  |  |
| 1181 | Update | 2007-08-24 → 2007-09-26 (+33d) | 2007-08-30 → 2007-10-02 (+33d) |  | 33d → 43d |  |  |
| 1182 | Submit Final Version of Transition Phase Plan | 2007-08-30 → 2007-10-02 (+33d) | 2007-08-30 → 2007-10-02 (+33d) |  | 33d → 43d |  |  |
| 1184 | **Status and Risk Reporting** | 2007-08-03 → 2007-09-05 (+33d) | 2007-08-31 → 2007-10-15 (+45d) | 21d → 29d | 32d → 34d |  |  |
| 1185 | Bi-weekly Risk Update in caMP (Task 1.4) | 2007-08-03 → 2007-09-05 (+33d) | 2007-08-03 → 2007-09-05 (+33d) |  | 52d → 62d |  | constraint start no earlier than 2007-08-03 → start no earlier than 2007-09-05 |
| 1186 | Bi-weekly Risk Matrix Update Meeting | 2007-08-03 → 2007-09-07 (+35d) | 2007-08-03 → 2007-09-07 (+35d) |  | 52d → 60d |  | constraint start no earlier than 2007-08-03 → start no earlier than 2007-09-07 |
| 1187 | Bi-weekly Risk Update in caMP (Task 1.4) | 2007-08-17 → 2007-09-19 (+33d) | 2007-08-17 → 2007-09-19 (+33d) |  | 42d → 52d |  | constraint start no earlier than 2007-08-17 → start no earlier than 2007-09-19 |
| 1188 | Bi-weekly Risk Matrix Update Meeting | 2007-08-17 → 2007-09-21 (+35d) | 2007-08-17 → 2007-09-21 (+35d) |  | 42d → 50d |  | constraint start no earlier than 2007-08-17 → start no earlier than 2007-09-21 |
| 1189 | Bi-weekly Status Update Meeting with BAH/NCI | 2007-08-10 → 2007-09-14 (+35d) | 2007-08-10 → 2007-09-14 (+35d) |  | 47d → 55d |  | constraint start no earlier than 2007-08-10 → start no earlier than 2007-09-14 |
| 1190 | Bi-weekly Status Update Meeting with BAH/NCI | 2007-08-24 → 2007-09-28 (+35d) | 2007-08-24 → 2007-09-28 (+35d) |  | 37d → 45d |  | constraint start no earlier than 2007-08-24 → start no earlier than 2007-09-28 |
| 1191 | Iteration Status Report (Task 1.3) | 2007-08-31 → 2007-10-15 (+45d) | 2007-08-31 → 2007-10-15 (+45d) |  | 32d → 34d |  | was named Monthly Status Report (Task 1.3); constraint start no earlier than 2007-08-31 → start no earlier than 2007-10-15 |
| 1192 | Iteration Risk Matrix Update (Task 1.3) | 2007-08-31 → 2007-10-15 (+45d) | 2007-08-31 → 2007-10-15 (+45d) |  | 32d → 34d |  | was named Monthly Risk Matrix Update (Task 1.3) |
| 1193 | **Collaboration Management Activities** | 2007-08-09 → 2007-09-06 (+28d) | 2007-08-30 → 2007-10-11 (+42d) | 16d → 26d | 33d → 36d |  |  |
| 1201 | **Environment (Iter-7)** | 2007-08-03 → 2007-09-05 (+33d) | 2007-08-07 → 2007-09-07 (+31d) |  | 50d → 60d |  |  |
| 1202 | Update Environment | 2007-08-03 → 2007-09-05 (+33d) | 2007-08-07 → 2007-09-07 (+31d) |  | 50d → 60d |  |  |
| 1203 | **SCM (Iter-7)** | 2007-08-03 → 2007-09-05 (+33d) | 2007-08-09 → 2007-09-11 (+33d) |  | 48d → 58d |  |  |
| 1204 | Manage Repository | 2007-08-03 → 2007-09-05 (+33d) | 2007-08-09 → 2007-09-11 (+33d) |  | 48d → 58d |  |  |
| 1205 | **Requirements (Iter-7)** | 2007-08-03 → 2007-09-05 (+33d) | 2007-08-14 → 2007-09-14 (+31d) |  | 35d → 25d |  |  |
| 1206 | Req'ts Gathering for Iteration | 2007-08-03 → 2007-09-05 (+33d) | 2007-08-07 → 2007-09-07 (+31d) |  | 35d → 25d |  |  |
| 1207 | Update UC and SRS Documents | 2007-08-08 → 2007-09-10 (+33d) | 2007-08-14 → 2007-09-14 (+31d) |  | 45d → 55d |  |  |
| 1208 | Submit Final Versions of UC and SRS documents (3.1, 3.2, 3.3) | 2007-08-14 → 2007-09-14 (+31d) | 2007-08-14 → 2007-09-14 (+31d) |  | 45d → 55d |  |  |
| 1209 | **Analysis and Design (Iter-7)** | 2007-08-08 → 2007-09-10 (+33d) | 2007-08-28 → 2007-09-28 (+31d) |  | 35d → 25d |  |  |
| 1210 | **Design Documents** | 2007-08-08 → 2007-09-10 (+33d) | 2007-08-28 → 2007-09-28 (+31d) |  | 35d → 25d |  |  |
| 1211 | Update Design Documents | 2007-08-08 → 2007-09-10 (+33d) | 2007-08-14 → 2007-09-14 (+31d) |  | 35d → 25d |  |  |
| 1212 | Deliver Final Design document to BAH (Task 3.4) | 2007-08-14 → 2007-09-14 (+31d) | 2007-08-14 → 2007-09-14 (+31d) |  | 45d → 35d |  |  |
| 1213 | Deliver Final UML to BAH (Task 3.3) | 2007-08-14 → 2007-09-14 (+31d) | 2007-08-14 → 2007-09-14 (+31d) |  | 35d → 25d |  |  |
| 1214 | Formal Review by BAH | 2007-08-15 → 2007-09-17 (+33d) | 2007-08-28 → 2007-09-28 (+31d) |  | 35d → 25d |  |  |
| 1215 | **Implementation (Iter-7)** | 2007-08-03 → 2007-09-05 (+33d) | 2007-08-30 → 2007-10-12 (+43d) | 20d? → 28d | 23d → 34d |  |  |
| 1216 | **Web interface** | 2007-08-03 → 2007-09-05 (+33d) | 2007-08-09 → 2007-09-11 (+33d) |  | 38d → 48d |  |  |
| 1217 | UI Refinement | 2007-08-03 → 2007-09-05 (+33d) | 2007-08-09 → 2007-09-11 (+33d) |  | 38d → 48d |  |  |
| 1218 | **Bug Fixes** | 2007-08-03 → 2007-09-05 (+33d) | 2007-08-10 → 2007-09-12 (+33d) |  | 37d → 47d |  |  |
| 1219 | Review and assignment of Bugs from prior iteration | 2007-08-03 → 2007-09-05 (+33d) | 2007-08-03 → 2007-09-05 (+33d) |  | 37d → 47d |  |  |
| 1220 | Bug Fixes | 2007-08-06 → 2007-09-06 (+31d) | 2007-08-10 → 2007-09-12 (+33d) |  | 37d → 47d |  |  |
| 1221 | **Implement Use Cases** | 2007-08-03 → 2007-09-05 (+33d) | 2007-08-30 → 2007-10-12 (+43d) | 20d? → 28d | 23d → 25d | 1174 → 1172, 1174 |  |
| 1222 | Data Push to AdEERS (cont'd) | 2007-08-03 → 2007-09-05 (+33d) | 2007-08-23 → 2007-09-25 (+33d) |  | 28d → 38d |  |  |
| 1223 | System Admin (cont'd) | 2007-08-03 → 2007-09-05 (+33d) | 2007-08-23 → 2007-09-25 (+33d) |  | 28d → 38d |  |  |
| 1224 | New Version of Study | 2007-08-03 → 2007-09-05 (+33d) | 2007-08-23 → 2007-09-25 (+33d) |  | 28d → 38d |  |  |

| ID | Task | Start | Finish | Duration | Total float | Predecessors | Other |
| --- | --- | --- | --- | --- | --- | --- | --- |
| 1225 | Validations | 2007-08-03 → 2007-09-05 (+33d) | 2007-08-03 → 2007-10-12 (+70d) | 1d? → 28d | 42d → 25d |  |  |
| 1226 | Error Messages | 2007-08-03 → 2007-09-05 (+33d) | 2007-08-03 → 2007-10-12 (+70d) | 1d? → 28d | 42d → 25d |  |  |
| 1227 | System Admin (cont'd) | 2007-08-03 → 2007-09-05 (+33d) | 2007-08-30 → 2007-10-12 (+43d) | 20d → 28d | 23d → 25d |  |  |
| 1228 | **Testing (Iter-7)** | 2007-08-03 → 2007-09-05 (+33d) | 2007-09-13 → 2007-10-26 (+43d) | 30d → 38d | 23d → 25d |  |  |
| 1229 | **Test Plan** | 2007-08-03 → 2007-09-05 (+33d) | 2007-08-20 → 2007-09-20 (+31d) |  | 41d → 51d |  |  |
| 1230 | Update Test Plan Document (Task 3.6) | 2007-08-03 → 2007-09-05 (+33d) | 2007-08-06 → 2007-09-06 (+31d) |  | 41d → 51d |  |  |
| 1231 | Submit to BAH | 2007-08-06 → 2007-09-06 (+31d) | 2007-08-06 → 2007-09-06 (+31d) |  | 41d → 51d |  |  |
| 1232 | Formal Review by BAH | 2007-08-07 → 2007-09-07 (+31d) | 2007-08-20 → 2007-09-20 (+31d) |  | 41d → 51d |  |  |
| 1233 | **RTM** | 2007-08-03 → 2007-09-05 (+33d) | 2007-08-09 → 2007-09-11 (+33d) |  | 48d → 58d |  |  |
| 1234 | Update RTM | 2007-08-03 → 2007-09-05 (+33d) | 2007-08-09 → 2007-09-11 (+33d) |  | 48d → 58d |  |  |
| 1235 | **Test Data** | 2007-08-08 → 2007-09-05 (+28d) | 2007-09-04 → 2007-10-02 (+28d) |  | 30d → 43d |  |  |
| 1236 | Update test data set (Task 3.7) | 2007-08-08 → 2007-09-05 (+28d) | 2007-08-21 → 2007-09-18 (+28d) |  | 30d → 43d | 1161 → 1172, 1161 |  |
| 1237 | Submit for Review | 2007-08-21 → 2007-09-18 (+28d) | 2007-08-21 → 2007-09-18 (+28d) |  | 30d → 43d |  |  |
| 1238 | Review | 2007-08-22 → 2007-09-19 (+28d) | 2007-09-04 → 2007-10-02 (+28d) |  | 30d → 43d |  |  |
| 1239 | **Run Tests** | 2007-08-03 → 2007-09-05 (+33d) | 2007-09-13 → 2007-10-26 (+43d) | 30d → 38d | 23d → 25d |  |  |
| 1240 | Testing | 2007-08-03 → 2007-09-05 (+33d) | 2007-08-30 → 2007-10-12 (+43d) | 20d → 28d | 23d → 25d |  |  |
| 1241 | Submit Final Test Results Report (Task 3.8) | 2007-08-30 → 2007-10-12 (+43d) | 2007-08-30 → 2007-10-12 (+43d) |  | 23d → 25d |  |  |
| 1242 | Formal Review of Test results Report | 2007-08-31 → 2007-10-15 (+45d) | 2007-09-13 → 2007-10-26 (+43d) |  | 23d → 25d |  |  |
| 1243 | **BRIDG Review (Final)** | 2007-08-01 → 2007-10-01 (+61d) | 2007-08-07 → 2007-10-12 (+66d) | 5d → 10d | 50d → 25d |  |  |
| 1244 | Harmonization with BRIDG Model (Review) | 2007-08-01 → 2007-10-01 (+61d) | 2007-08-07 → 2007-10-12 (+66d) | 5d → 10d | 50d → 25d | 1171 → 1209 |  |
| 1245 | **Silver Review (Begin)** | 2007-07-16 → 2007-10-12 (+88d) | 2007-07-16 → 2007-10-12 (+88d) |  | 67d → 25d | 1107 → none |  |
| 1246 | Submit Draft Semantically annotated XMI file (Task 3.11.1) | 2007-07-16 → 2007-10-12 (+88d) | 2007-07-16 → 2007-10-12 (+88d) |  | 67d → 25d | none → 1243 |  |
| 1247 | Submit Draft Full CDE Use Report (Task 3.11.2) | 2007-07-16 → 2007-10-12 (+88d) | 2007-07-16 → 2007-10-12 (+88d) |  | 67d → 25d |  |  |
| 1248 | Submit Draft Compatibility Review Submission Packaged (Task 3.12) | 2007-07-16 → 2007-10-12 (+88d) | 2007-07-16 → 2007-10-12 (+88d) |  | 67d → 25d |  |  |
| 1249 | **Documentation (Iter-7)** | 2007-08-03 → 2007-09-05 (+33d) | 2007-08-31 → 2007-10-15 (+45d) | 21d → 29d | 0d → 14d |  |  |
| 1250 | Update End Users Guide | 2007-08-08 → 2007-09-05 (+28d) | 2007-08-28 → 2007-09-25 (+28d) |  | 3d → 48d | 1146 → 1172, 1146 |  |
| 1251 | Submit Final End Users Guide (Task 3.15.2) | 2007-08-31 → 2007-09-25 (+25d) | 2007-08-31 → 2007-09-25 (+25d) |  | 0d → 48d |  | constraint must finish on 2007-08-31 → none |
| 1252 | Update Final Versions of Other Project Documents | 2007-08-03 → 2007-09-05 (+33d) | 2007-08-23 → 2007-09-25 (+33d) |  | 6d → 14d | 1174 → 1172, 1174 |  |
| 1253 | Submit Final Administrators Guide (Task 3.13) | 2007-08-31 → 2007-10-15 (+45d) | 2007-08-31 → 2007-10-15 (+45d) |  |  |  | constraint must finish on 2007-08-31 → must finish on 2007-10-15 |
| 1254 | Submit Final Installation Guide (Task 3.10) | 2007-08-31 → 2007-10-15 (+45d) | 2007-08-31 → 2007-10-15 (+45d) |  |  |  | constraint must finish on 2007-08-31 → must finish on 2007-10-15 |
| 1255 | Submit Final Release Notes (Task 3.14) | 2007-08-31 → 2007-10-15 (+45d) | 2007-08-31 → 2007-10-15 (+45d) |  |  |  | constraint must finish on 2007-08-31 → must finish on 2007-10-15 |
| 1256 | **Deployment (Iter-7)** | 2007-08-30 → 2007-10-02 (+33d) | 2007-09-13 → 2007-10-16 (+33d) | 10d → 11d | 23d → 33d |  |  |
| 1257 | Submit Final Code Base (Task 3.5) | 2007-08-30 → 2007-10-15 (+46d) | 2007-08-30 → 2007-10-15 (+46d) |  | 23d → 33d |  | constraint none → finish no earlier than 2007-10-15 |
| 1258 | Formal Review of Code by BAH | 2007-08-31 → 2007-10-02 (+32d) | 2007-09-13 → 2007-10-15 (+32d) |  | 23d → 34d | 1257 → 1257FS-10d |  |
| 1259 | Deploy Prototype for Iteration 1 at Mayo and WF | 2007-08-31 → 2007-10-16 (+46d) | 2007-08-31 → 2007-10-16 (+46d) |  | 32d → 33d |  |  |
| 1260 | Finish Iteration 7 | 2007-08-31 → 2007-10-12 (+42d) | 2007-08-31 → 2007-10-12 (+42d) |  |  |  | constraint must finish on 2007-08-31 → must finish on 2007-10-12 |
| 1261 | Finish Construction Phase | 2007-08-31 → 2007-10-15 (+45d) | 2007-08-31 → 2007-10-15 (+45d) |  |  |  | constraint none → must finish on 2007-10-15 |
| 1262 | **Transition Phase** | 2007-09-03 → 2007-10-16 (+43d) | 2007-10-16 → 2007-11-30 (+45d) | 32d → 34d |  |  |  |
| 1263 | Deployment Plan (Task 4.1) | 2007-09-03 → 2007-10-16 (+43d) | 2007-09-04 → 2007-10-17 (+43d) |  | 0d → 2d |  |  |
| 1264 | Deployment | 2007-09-05 → 2007-10-18 (+43d) | 2007-09-18 → 2007-10-31 (+43d) |  | 0d → 2d |  |  |
| 1265 | Deployment Report (Task 4.2) | 2007-09-03 → 2007-10-16 (+43d) | 2007-09-03 → 2007-10-16 (+43d) |  | 31d → 33d |  |  |
| 1266 | Code Release Updates (if needed) (Task 4.3) | 2007-09-19 → 2007-11-01 (+43d) | 2007-10-16 → 2007-11-28 (+43d) |  | 0d → 2d |  |  |
| 1267 | Guide Updates (if needed) | 2007-09-03 → 2007-10-16 (+43d) | 2007-09-14 → 2007-11-05 (+52d) | 10d → 15d | 22d → 19d |  |  |
| 1268 | **Silver Review (Final)** | 2007-08-27 → 2007-10-16 (+50d) | 2007-08-27 → 2007-10-29 (+63d) | 0d → 10d | 37d → 24d |  |  |
| 1269 | Complete Semantically annotated XMI file (Task 3.11.1) | 2007-08-27 → 2007-10-16 (+50d) | 2007-08-27 → 2007-10-22 (+56d) | 0d → 5d | 37d → 24d | none → 1243, 1245 |  |
| 1270 | Full CDE Use Report (Task 3.11.2) | 2007-08-27 → 2007-10-23 (+57d) | 2007-08-27 → 2007-10-29 (+63d) | 0d → 5d | 37d → 24d | none → 1269 |  |
| 1271 | Compatibility Review Submission Packaged (Task 3.12) | 2007-08-27 → 2007-10-29 (+63d) | 2007-08-27 → 2007-10-29 (+63d) |  | 37d → 24d | none → 1270 |  |
| 1272 | **Project Closing Activities** | 2007-09-03 → 2007-11-19 (+77d) | 2007-09-14 → 2007-11-30 (+77d) |  | 22d → 0d |  | constraint none → start no earlier than 2007-11-19 |
| 1273 | Lessons Learned (Task 1.6) | 2007-09-03 → 2007-11-19 (+77d) | 2007-09-14 → 2007-11-30 (+77d) |  | 22d → 0d |  |  |
| 1274 | Archiving | 2007-09-03 → 2007-11-19 (+77d) | 2007-09-14 → 2007-11-30 (+77d) |  | 22d → 0d |  |  |
| 1275 | Contract Closeout | 2007-09-03 → 2007-11-19 (+77d) | 2007-09-14 → 2007-11-30 (+77d) |  | 22d → 0d |  |  |

## Version 12 (saved 2007-07-02)

Note of the change: Updated based on feedback.

Last finish stays 2007-11-30. Complete tasks 609 → 631.

Added:

| ID | Task | Duration | Start | Finish | Predecessors | Constraint |
| --- | --- | --- | --- | --- | --- | --- |
| 890 | Daily Scrum Meeting | 30d | 2007-06-01 A | 2007-07-12 | 883 |  |
| 896 | Bi-weekly Risk Update in caMP (Task 1.4) | 1d | 2007-07-04 | 2007-07-04 |  | start no earlier than 2007-07-04 |
| 897 | Bi-weekly Risk Matrix Update Meeting | 1d | 2007-07-06 | 2007-07-06 |  | start no earlier than 2007-07-06 |
| 900 | Bi-weekly Status Update Meeting with BAH/NCI | 1d | 2007-07-13 | 2007-07-13 |  | start no earlier than 2007-07-13 |
| 904 | **caAERS-Adopters Meetings** | 26d | 2007-06-07 A | 2007-07-12 |  |  |
| 905 | caAERS-Adopters Meetings 1 | 1d | 2007-06-07 A | 2007-06-07 A |  | start no earlier than 2007-06-07 |
| 906 | caAERS-Adopters Meetings 2 | 1d | 2007-06-14 A | 2007-06-14 A |  | start no earlier than 2007-06-14 |
| 907 | caAERS-Adopters Meetings 3 | 1d | 2007-06-21 A | 2007-06-21 A |  | start no earlier than 2007-06-21 |
| 908 | caAERS-Adopters Meetings 4 | 1d | 2007-06-28 A | 2007-06-28 A |  | start no earlier than 2007-06-28 |
| 909 | caAERS-Adopters Meetings 5 | 1d | 2007-07-05 | 2007-07-05 |  | start no earlier than 2007-07-05 |
| 910 | caAERS-Adopters Meetings 6 | 1d | 2007-07-12 | 2007-07-12 |  | start no earlier than 2007-07-12 |
| 1043 | Bi-weekly Risk Update in caMP (Task 1.4) | 1d | 2007-08-15 | 2007-08-15 |  | start no earlier than 2007-08-15 |
| 1044 | Bi-weekly Risk Matrix Update Meeting | 1d | 2007-08-17 | 2007-08-17 |  | start no earlier than 2007-08-17 |
| 1047 | Bi-weekly Status Update Meeting with BAH/NCI | 1d | 2007-08-24 | 2007-08-24 |  | start no earlier than 2007-08-24 |
| 1048 | Bi-weekly Status Update Meeting with BAH/NCI | 1d | 2007-08-31 | 2007-08-31 |  | start no earlier than 2007-08-31 |
| 1052 | **caAERs-Adopters Meetings** | 26d | 2007-07-19 | 2007-08-23 |  |  |
| 1053 | caAERs-Adopters Meetings 1 | 1d | 2007-07-19 | 2007-07-19 |  | start no earlier than 2007-07-19 |
| 1054 | caAERs-Adopters Meetings 2 | 1d | 2007-07-26 | 2007-07-26 |  | start no earlier than 2007-07-26 |
| 1055 | caAERs-Adopters Meetings 3 | 1d | 2007-08-02 | 2007-08-02 |  | start no earlier than 2007-08-02 |
| 1056 | caAERs-Adopters Meetings 4 | 1d | 2007-08-09 | 2007-08-09 |  | start no earlier than 2007-08-09 |
| 1057 | caAERs-Adopters Meetings 5 | 1d | 2007-08-16 | 2007-08-16 |  | start no earlier than 2007-08-16 |
| 1058 | caAERs-Adopters Meetings 6 | 1d | 2007-08-23 | 2007-08-23 |  | start no earlier than 2007-08-23 |
| 1196 | Bi-weekly Risk Update in caMP (Task 1.4) | 1d | 2007-10-03 | 2007-10-03 |  | start no earlier than 2007-10-03 |
| 1197 | Bi-weekly Risk Matrix Update Meeting | 1d | 2007-10-05 | 2007-10-05 |  | start no earlier than 2007-10-05 |
| 1200 | Bi-weekly Status Update Meeting with BAH/NCI | 1d | 2007-10-12 | 2007-10-12 |  | start no earlier than 2007-10-12 |

Removed: 890 CaAERS CCB (Task 2.10); 891 CCB Meetings; 892 Weekly Team Meeting; 893 Weekly Team Meeting 1; 894 Weekly Team Meeting 2; 895 Weekly Team Meeting 3; 896 Weekly Team Meeting 4; 907 Adopters Mtg; 908 Bi-Weekly AE SIG Meeting; 909 Adopters Mtg; 910 Bi-Weekly AE SIG Meeting; 1048 Adopters Mtg; 1049 Bi-Weekly AE SIG Meeting; 1050 Adopters Mtg; 1051 Bi-Weekly AE SIG Meeting

Changed:

| ID | Task | Start | Finish | Duration | Complete | Total float | Predecessors | Other |
| --- | --- | --- | --- | --- | --- | --- | --- | --- |
| 1 | **caAERS Application Development Project** |  |  |  | 59% → 62% |  |  |  |
| 303 | **Construction Phase** |  | 2007-10-26 → 2007-10-29 (+3d) | 192d → 193d | 51% → 55% | 25d → 24d |  |  |
| 744 | **Construction Phase Iteration 4** |  |  |  | 65% → 88% |  |  |  |
| 777 | **Requirements (Iter-4)** |  | 2007-06-13 A |  | 18% → 100% | 122d → none |  |  |
| 780 | **Updated Use Case Specification and Realization** | 2007-05-03 A | 2007-06-13 A |  | 0% → 100% | 122d → none |  |  |
| 781 | Developer draft | 2007-05-03 A | 2007-05-09 A |  | 0% → 100% | 89d → none |  |  |
| 782 | Adopters/Collobators Review | 2007-05-10 A | 2007-05-16 A |  | 0% → 100% | 89d → none |  |  |
| 783 | Update Use Case Document | 2007-05-17 A | 2007-05-23 A |  | 0% → 100% | 89d → none |  |  |
| 784 | Submit Updated Use Case Document to BAH (Task 3.1) | 2007-05-23 A | 2007-05-23 A |  | 0% → 100% | 89d → none |  |  |
| 785 | Formal Review of Updated Use Case Document | 2007-05-24 A | 2007-06-13 A |  | 0% → 100% | 89d → none |  |  |
| 786 | **Updated SRS Document** | 2007-05-03 A | 2007-06-13 A |  | 0% → 100% | 122d → none |  |  |
| 787 | Developer draft | 2007-05-03 A | 2007-05-09 A |  | 0% → 100% | 89d → none |  |  |
| 788 | Adopters/Collobators Review | 2007-05-10 A | 2007-05-16 A |  | 0% → 100% | 89d → none |  |  |
| 789 | Update SRS | 2007-05-17 A | 2007-05-23 A |  | 0% → 100% | 89d → none |  |  |
| 790 | Submit Updated SRS Document to BAH (Task 3.2) | 2007-05-23 A | 2007-05-23 A |  | 0% → 100% | 89d → none |  |  |
| 791 | Formal Review of Updated SRS | 2007-05-24 A | 2007-06-13 A |  | 0% → 100% | 89d → none |  |  |
| 792 | **Updated UML Static Class Diagram Model** |  | 2007-06-13 A |  | 50% → 100% | 122d → none |  |  |
| 797 | Formal Review of UML | 2007-05-24 A | 2007-06-13 A |  | 0% → 100% | 89d → none |  |  |
| 866 | **Testing (Iter-4)** |  |  |  | 38% → 97% |  |  |  |
| 867 | **Test Plan** |  | 2007-05-25 A |  | 33% → 100% | 135d → none |  |  |
| 870 | Formal Review by BAH | 2007-05-14 A | 2007-05-25 A |  | 0% → 100% | 102d → none |  |  |
| 871 | **RTM** | 2007-05-07 A |  |  | 0% → 75% |  |  |  |
| 872 | Create RTM | 2007-05-07 A |  |  | 0% → 75% | 112d → 145d |  |  |
| 873 | **Run Tests** |  | 2007-06-01 A |  | 50% → 100% | 130d → none |  |  |
| 875 | Submit Test Results Report (Task 3.7) | 2007-05-18 A | 2007-05-18 A |  | 0% → 100% | 97d → none |  |  |
| 876 | Formal Review of Test results Report | 2007-05-21 A | 2007-06-01 A |  | 0% → 100% | 97d → none |  |  |
| 877 | **Deployment (Iter-4)** |  |  |  | 0% → 9% |  |  |  |
| 880 | Deploy Prototype for Iteration 4 at Mayo and WF | 2007-06-01 A | 2007-06-01 A |  | 0% → 100% | 97d → none |  | was named Deploy Prototype for Iteration 1 at Mayo and WF |
| 882 | **Construction Phase Iteration 5** |  | 2007-07-16 → 2007-07-27 (+11d) | 32d → 41d | 2% → 11% | 99d → 90d |  |  |
| 883 | Begin Iteration 5 | 2007-06-01 A | 2007-06-01 A |  | 0% → 100% | 0d → none |  |  |
| 888 | **Project Management (Iter-5)** | 2007-06-04 A → 2007-06-01 A (-3d) | 2007-06-29 → 2007-07-16 (+17d) | 20d → 32d | 18% → 66% | 110d → 99d |  |  |
| 889 | Update Project Plan |  |  |  | 50% → 75% |  |  |  |
| 891 | **Status and Risk Reporting** |  | 2007-06-29 → 2007-07-16 (+17d) | 16d → 27d | 13% → 36% | 110d → 99d |  |  |
| 893 | Bi-weekly Risk Matrix Update Meeting | 2007-06-08 A | 2007-06-08 A |  | 0% → 100% | 125d → none |  |  |
| 894 | Bi-weekly Risk Update in caMP (Task 1.4) | 2007-06-22 A | 2007-06-22 A |  | 0% → 100% | 115d → none |  |  |
| 895 | Bi-weekly Risk Matrix Update Meeting | 2007-06-22 A | 2007-06-22 A |  | 0% → 100% | 115d → none |  |  |
| 901 | Iteration Status Report (Task 1.3) | 2007-06-29 → 2007-07-16 (+17d) | 2007-06-29 → 2007-07-16 (+17d) |  |  | 110d → 99d |  | was named Monthly Status Report (Task 1.3); constraint start no earlier than 2007-06-29 → start no earlier than 2007-07-16 |
| 902 | Iteration Risk Matrix Update (Task 1.3) | 2007-06-29 → 2007-07-16 (+17d) | 2007-06-29 → 2007-07-16 (+17d) |  |  | 110d → 99d |  | was named Monthly Risk Matrix Update (Task 1.3) |
| 903 | **Collaboration Management Activities** | 2007-06-07 A | 2007-06-28 → 2007-07-12 (+14d) | 16d → 26d | 0% → 67% | 111d → 101d |  |  |
| 915 | **Requirements (Iter-5)** | 2007-06-05 A |  |  | 0% → 30% |  |  |  |
| 916 | **Requirements Gathering and Elucidation** | 2007-06-05 A |  |  | 0% → 29% |  |  |  |
| 917 | DCP Reqts (Continued) | 2007-06-05 A |  |  | 0% → 50% | 123d → 124.25d |  |  |
| 919 | Solicited AE's | 2007-06-07 A |  |  | 0% → 25% | 123d → 123.75d |  |  |
| 921 | CTEP Report Types (Required/Optional Sections) | 2007-06-12 A |  |  | 0% → 75% |  |  |  |
| 922 | **Updated Use Case Specification and Realization** | 2007-06-05 A |  |  | 0% → 44% |  |  |  |
| 923 | Developer draft | 2007-06-05 A |  |  | 0% → 75% | 105d → 112.5d |  |  |
| 924 | Adopters/Collobators Review | 2007-06-11 A |  |  | 0% → 75% | 105d → 108.75d |  |  |
| 925 | Update Use Case Document | 2007-06-18 A |  |  | 0% → 75% |  |  |  |
| 928 | **Updated SRS Document** | 2007-06-05 A |  |  | 0% → 44% |  |  |  |
| 929 | Developer draft | 2007-06-05 A |  |  | 0% → 75% | 105d → 112.5d |  |  |
| 930 | Adopters/Collobators Review | 2007-06-11 A |  |  | 0% → 75% | 105d → 108.75d |  |  |
| 931 | Update SRS | 2007-06-18 A |  |  | 0% → 75% |  |  |  |
| 998 | **Documentation (Iter-5)** |  | 2007-07-10 → 2007-07-27 (+17d) | 26d → 39d |  | 103d → 90d |  |  |
| 999 | **Installation Guide** | 2007-06-20 → 2007-07-09 (+19d) | 2007-07-10 → 2007-07-27 (+17d) |  |  | 103d → 90d |  |  |
| 1000 | Update Installation Guide | 2007-06-20 → 2007-07-09 (+19d) | 2007-06-26 → 2007-07-13 (+17d) |  |  | 103d → 90d |  | constraint start no earlier than 2007-06-20 → start no earlier than 2007-07-09 |
| 1001 | Submit to BAH/Adopters | 2007-06-26 → 2007-07-13 (+17d) | 2007-06-26 → 2007-07-13 (+17d) |  |  | 103d → 90d |  |  |
| 1002 | Review of Installation Guide | 2007-06-27 → 2007-07-16 (+19d) | 2007-07-10 → 2007-07-27 (+17d) |  |  | 103d → 90d |  |  |
| 1003 | **Administrators Guide** | 2007-06-05 → 2007-07-09 (+34d) | 2007-06-25 → 2007-07-27 (+32d) |  |  | 114d → 90d |  |  |
| 1004 | Update Administrators Guide | 2007-06-05 → 2007-07-09 (+34d) | 2007-06-11 → 2007-07-13 (+32d) |  |  | 114d → 90d |  | constraint none → start no earlier than 2007-07-09 |
| 1005 | Submit to BAH | 2007-06-11 → 2007-07-13 (+32d) | 2007-06-11 → 2007-07-13 (+32d) |  |  | 114d → 90d |  |  |
| 1006 | Review of Admin Guide | 2007-06-12 → 2007-07-16 (+34d) | 2007-06-25 → 2007-07-27 (+32d) |  |  | 114d → 90d |  |  |
| 1007 | **Release Notes** | 2007-06-25 → 2007-07-12 (+17d) | 2007-07-10 → 2007-07-27 (+17d) |  |  | 103d → 90d |  |  |
| 1008 | Update Release Notes | 2007-06-25 → 2007-07-12 (+17d) | 2007-06-26 → 2007-07-13 (+17d) |  |  | 103d → 90d |  | constraint start no earlier than 2007-06-25 → start no earlier than 2007-07-12 |
| 1009 | Submit to BAH | 2007-06-26 → 2007-07-13 (+17d) | 2007-06-26 → 2007-07-13 (+17d) |  |  | 103d → 90d |  |  |
| 1010 | Review of Release Notes | 2007-06-27 → 2007-07-16 (+19d) | 2007-07-10 → 2007-07-27 (+17d) |  |  | 103d → 90d |  |  |
| 1011 | **End User Guide Draft** |  | 2007-06-25 → 2007-07-09 (+14d) | 15d → 25d |  | 114d → 104d |  |  |
| 1012 | Create Draft of End User Guide |  | 2007-06-25 → 2007-07-09 (+14d) | 15d → 25d |  | 114d → 104d |  |  |
| 1025 | Submit prototype code (Task 3.5) | 2007-07-09 → 2007-07-13 (+4d) | 2007-07-09 → 2007-07-13 (+4d) |  |  | 104d → 101d |  | constraint none → start no earlier than 2007-07-13 |
| 1027 | Formal Review of Code by BAH |  |  |  |  |  | 987FS-5d, 1026 → 987FS-5d |  |
| 1029 | **Construction Phase Iteration 6** | 2007-07-05 → 2007-07-16 (+11d) | 2007-08-31 → 2007-09-13 (+13d) | 42d → 44d |  | 7d → 0d |  |  |

| ID | Task | Start | Finish | Duration | Total float | Predecessors | Other |
| --- | --- | --- | --- | --- | --- | --- | --- |
| 1035 | **Project Management (Iter-6)** | 2007-07-05 → 2007-07-16 (+11d) |  | 42d → 35d |  |  |  |
| 1051 | **Collaboration Management Activities** | 2007-07-05 → 2007-07-19 (+14d) | 2007-07-26 → 2007-08-23 (+28d) | 16d → 26d | 91d → 71d |  |  |
| 1137 | **Documentation (Iter-6)** |  | 2007-08-21 → 2007-09-10 (+20d) | 25d → 39d | 73d → 59d |  |  |
| 1138 | **Installation Guide** |  | 2007-08-07 → 2007-08-31 (+24d) | 15d → 33d | 83d → 65d |  |  |
| 1140 | Submit to BAH/Adopters | 2007-07-24 → 2007-08-20 (+27d) | 2007-07-24 → 2007-08-20 (+27d) |  | 83d → 65d |  | constraint none → start no earlier than 2007-08-20 |
| 1141 | Review of Installation Guide | 2007-07-25 → 2007-08-20 (+26d) | 2007-08-07 → 2007-08-31 (+24d) |  | 83d → 65d |  |  |
| 1142 | **Administrators Guide** |  | 2007-08-21 → 2007-08-31 (+10d) | 25d → 33d | 73d → 65d |  |  |
| 1144 | Submit to BAH | 2007-08-07 → 2007-08-20 (+13d) | 2007-08-07 → 2007-08-20 (+13d) |  | 73d → 65d |  | constraint none → start no earlier than 2007-08-20 |
| 1145 | Review of Admin Guide | 2007-08-08 → 2007-08-20 (+12d) | 2007-08-21 → 2007-08-31 (+10d) |  | 73d → 65d |  |  |
| 1146 | **Release Notes** | 2007-07-23 → 2007-08-24 (+32d) | 2007-08-07 → 2007-09-10 (+34d) |  | 83d → 59d |  |  |
| 1147 | Update Release Notes | 2007-07-23 → 2007-08-24 (+32d) | 2007-07-24 → 2007-08-27 (+34d) |  | 83d → 59d |  | constraint start no earlier than 2007-07-23 → start no earlier than 2007-08-24 |
| 1148 | Submit to BAH | 2007-07-24 → 2007-08-27 (+34d) | 2007-07-24 → 2007-08-27 (+34d) |  | 83d → 59d |  | constraint none → start no earlier than 2007-08-24 |
| 1149 | Review of Release Notes | 2007-07-25 → 2007-08-28 (+34d) | 2007-08-07 → 2007-09-10 (+34d) |  | 83d → 59d |  |  |
| 1150 | **End User Guide Draft** |  | 2007-08-21 → 2007-08-31 (+10d) | 25d → 33d | 73d → 65d |  |  |
| 1152 | Submit to BAH (Task 13.15.1) | 2007-08-07 → 2007-08-20 (+13d) | 2007-08-07 → 2007-08-20 (+13d) |  | 73d → 65d |  | constraint none → start no earlier than 2007-08-20 |
| 1153 | Review of End User Guide Draft | 2007-08-08 → 2007-08-20 (+12d) | 2007-08-21 → 2007-08-31 (+10d) |  | 73d → 65d |  |  |
| 1154 | **Testing (Iter-6)** |  | 2007-08-21 → 2007-09-04 (+14d) | 25d → 35d | 73d → 63d |  |  |
| 1159 | **RTM** | 2007-07-18 → 2007-07-20 (+2d) | 2007-07-24 → 2007-07-26 (+2d) |  | 93d → 91d |  |  |
| 1160 | Update RTM | 2007-07-18 → 2007-07-20 (+2d) | 2007-07-24 → 2007-07-26 (+2d) |  | 93d → 91d | none → 1156 |  |
| 1165 | **Testing** |  | 2007-08-21 → 2007-09-04 (+14d) | 25d → 35d | 73d → 63d |  |  |
| 1166 | Testing |  | 2007-08-07 → 2007-08-21 (+14d) | 15d → 25d | 73d → 63d |  |  |
| 1167 | Submit Test Results Report (Task 3.8) | 2007-08-07 → 2007-08-21 (+14d) | 2007-08-07 → 2007-08-21 (+14d) |  | 73d → 63d |  |  |
| 1168 | Formal Review of Test results Report | 2007-08-08 → 2007-08-22 (+14d) | 2007-08-21 → 2007-09-04 (+14d) |  | 73d → 63d |  |  |
| 1171 | Begin Harmonization with BRIDG Model |  |  |  |  | 1170, 1110 → 1170 | was named Begin Harmonization with BRIDG Model (Final Review) |
| 1172 | **Deployment (Iter-6)** | 2007-07-25 → 2007-08-31 (+37d) | 2007-08-07 → 2007-09-13 (+37d) |  | 83d → 56d |  |  |
| 1173 | Submit prototype code (Task 3.5) | 2007-07-25 → 2007-08-31 (+37d) | 2007-07-25 → 2007-08-31 (+37d) |  | 83d → 56d |  | constraint start no earlier than 2007-07-25 → start no earlier than 2007-08-31 |
| 1174 | Deploy Prototype for Iteration 1 at Mayo and WF | 2007-07-25 → 2007-08-31 (+37d) | 2007-07-25 → 2007-08-31 (+37d) |  | 83d → 56d |  |  |
| 1175 | Formal Review of Code by BAH | 2007-07-25 → 2007-08-31 (+37d) | 2007-08-07 → 2007-09-13 (+37d) |  | 83d → 56d |  |  |
| 1177 | **Construction Phase Iteration 7** |  | 2007-10-26 → 2007-10-29 (+3d) | 40d → 41d |  |  |  |
| 1231 | **Implement Use Cases** |  |  |  |  | 1179, 1181 → 1179 |  |
| 1246 | Update test data set (Task 3.7) |  |  |  |  | 1179, 1168 → 1179 |  |
| 1254 | Harmonization with BRIDG Model |  |  |  |  |  | was named Harmonization with BRIDG Model (Review) |
| 1260 | Update End Users Guide |  |  |  |  | 1179, 1153 → 1179 |  |
| 1262 | Update Final Versions of Other Project Documents |  |  |  |  | 1179, 1181 → 1179 |  |
| 1266 | **Deployment (Iter-7)** | 2007-10-02 → 2007-10-15 (+13d) | 2007-10-16 → 2007-10-29 (+13d) | 11d → 10d | 33d → 24d |  |  |
| 1268 | Formal Review of Code by BAH | 2007-10-02 → 2007-10-16 (+14d) | 2007-10-15 → 2007-10-29 (+14d) |  | 34d → 24d | 1267FS-10d → 1267 |  |

## Version 13 (saved 2007-07-03)

Note of the change: Updated with feedback

Last finish stays 2007-11-30.

Changed:

| ID | Task | Start | Finish | Duration | Complete | Total float | Predecessors | Other |
| --- | --- | --- | --- | --- | --- | --- | --- | --- |
| 915 | **Requirements (Iter-5)** |  | 2007-07-06 → 2007-07-26 (+20d) | 24d → 38d | 30% → 24% | 105d → 91d |  |  |
| 922 | **Updated Use Case Specification and Realization** |  | 2007-07-06 → 2007-07-20 (+14d) | 24d → 34d | 44% → 34% | 105d → 95d |  |  |
| 923 | Developer draft |  | 2007-06-08 → 2007-06-14 (+6d) | 4d → 8d | 75% → 38% | 112.5d → 105.5d | none → 884 |  |
| 924 | Adopters/Collobators Review |  | 2007-06-15 → 2007-06-18 (+3d) |  |  | 108.75d → 105.5d |  |  |
| 925 | Update Use Case Document |  | 2007-06-22 → 2007-06-27 (+5d) | 5d → 8d | 75% → 47% | 105d → 102d |  |  |
| 926 | Submit Updated Use Case Document to BAH (Task 3.1) | 2007-06-22 → 2007-07-09 (+17d) | 2007-06-22 → 2007-07-09 (+17d) |  |  | 105d → 95d |  | constraint none → start no earlier than 2007-07-09 |
| 927 | Formal Review of Updated Use Case Document | 2007-06-25 → 2007-07-09 (+14d) | 2007-07-06 → 2007-07-20 (+14d) |  |  | 105d → 95d |  |  |
| 928 | **Updated SRS Document** |  | 2007-07-06 → 2007-07-20 (+14d) | 24d → 34d | 44% → 36% | 105d → 95d |  |  |
| 929 | Developer draft |  | 2007-06-08 → 2007-06-13 (+5d) | 4d → 7d | 75% → 43% | 112.5d → 107.5d | none → 884 |  |
| 931 | Update SRS |  | 2007-06-22 → 2007-06-26 (+4d) | 5d → 7d | 75% → 54% | 105d → 103d |  |  |
| 932 | Submit Updated SRS Document to BAH (Task 3.2) | 2007-06-22 → 2007-07-09 (+17d) | 2007-06-22 → 2007-07-09 (+17d) |  |  | 105d → 95d |  | constraint none → start no earlier than 2007-07-09 |
| 933 | Formal Review of Updated SRS | 2007-06-25 → 2007-07-09 (+14d) | 2007-07-06 → 2007-07-20 (+14d) |  |  | 105d → 95d |  |  |
| 934 | **Updated UML Static Class Diagram Model** |  | 2007-07-04 → 2007-07-26 (+22d) | 22d → 38d |  | 107d → 91d |  |  |
| 937 | Update UML |  | 2007-06-20 → 2007-06-27 (+7d) | 5d → 10d |  | 107d → 102d |  |  |
| 938 | Submit UML to BAH (Task 3.3) | 2007-06-20 → 2007-07-13 (+23d) | 2007-06-20 → 2007-07-13 (+23d) |  |  | 107d → 91d |  | constraint none → start no earlier than 2007-07-13 |
| 939 | Formal Review of UML | 2007-06-21 → 2007-07-13 (+22d) | 2007-07-04 → 2007-07-26 (+22d) |  |  | 107d → 91d |  |  |
| 1013 | **Testing (Iter-5)** |  | 2007-07-16 → 2007-07-26 (+10d) | 30d → 38d |  | 99d → 91d |  |  |
| 1014 | **Test Plan** |  | 2007-06-25 → 2007-07-26 (+31d) | 15d → 38d |  | 114d → 91d |  |  |
| 1016 | Submit to BAH | 2007-06-11 → 2007-07-13 (+32d) | 2007-06-11 → 2007-07-13 (+32d) |  |  | 114d → 91d |  | constraint none → start no earlier than 2007-07-13 |
| 1017 | Formal Review by BAH | 2007-06-12 → 2007-07-13 (+31d) | 2007-06-25 → 2007-07-26 (+31d) |  |  | 114d → 91d |  |  |
| 1063 | **Requirements (Iter-6)** |  | 2007-08-08 → 2007-08-31 (+23d) | 18d → 35d |  | 82d → 65d |  |  |
| 1066 | **Updated Use Case Specification and Realization** |  | 2007-08-08 → 2007-08-31 (+23d) | 16d → 33d |  | 82d → 65d |  |  |
| 1067 | Developer draft |  | 2007-07-19 → 2007-07-23 (+4d) | 2d → 4d |  | 82d → 76d |  |  |
| 1068 | Adopters/Collobators Review | 2007-07-20 → 2007-07-24 (+4d) | 2007-07-24 → 2007-07-26 (+2d) |  |  | 82d → 76d |  |  |
| 1069 | Update Use Case Document | 2007-07-25 → 2007-07-27 (+2d) | 2007-07-25 → 2007-08-02 (+8d) | 1d → 5d |  | 82d → 76d |  |  |
| 1070 | Submit Updated Use Case Document to BAH (Task 3.1) | 2007-07-25 → 2007-08-20 (+26d) | 2007-07-25 → 2007-08-20 (+26d) |  |  | 82d → 65d |  | constraint none → start no earlier than 2007-08-20 |
| 1071 | Formal Review of Updated Use Case Document | 2007-07-26 → 2007-08-20 (+25d) | 2007-08-08 → 2007-08-31 (+23d) |  |  | 82d → 65d |  |  |
| 1072 | **Updated SRS Document** |  | 2007-08-08 → 2007-08-31 (+23d) | 16d → 33d |  | 82d → 65d |  |  |
| 1075 | Update SRS |  | 2007-07-25 → 2007-07-27 (+2d) | 1d → 3d |  | 82d → 80d |  |  |
| 1076 | Submit Updated SRS Document to BAH (Task 3.2) | 2007-07-25 → 2007-08-20 (+26d) | 2007-07-25 → 2007-08-20 (+26d) |  |  | 82d → 65d |  | constraint none → start no earlier than 2007-08-20 |
| 1077 | Formal Review of Updated SRS | 2007-07-26 → 2007-08-20 (+25d) | 2007-08-08 → 2007-08-31 (+23d) |  |  | 82d → 65d |  |  |
| 1078 | **Updated UML Static Class Diagram Model** |  | 2007-08-08 → 2007-08-31 (+23d) | 16d → 33d |  | 82d → 65d |  |  |
| 1082 | Submit UML to BAH (Task 3.3) | 2007-07-25 → 2007-08-20 (+26d) | 2007-07-25 → 2007-08-20 (+26d) |  |  | 82d → 65d |  | constraint none → start no earlier than 2007-08-20 |
| 1083 | Formal Review of UML | 2007-07-26 → 2007-08-20 (+25d) | 2007-08-08 → 2007-08-31 (+23d) |  |  | 82d → 65d |  |  |
| 1084 | **Analysis and Design (Iter-6)** |  | 2007-08-15 → 2007-08-31 (+16d) | 21d → 33d |  | 77d → 65d |  |  |
| 1085 | **Design Documents** |  | 2007-08-15 → 2007-08-31 (+16d) | 21d → 33d |  | 77d → 65d |  |  |
| 1108 | Deliver UML to BAH (Task 3.3) | 2007-08-01 → 2007-08-20 (+19d) | 2007-08-01 → 2007-08-20 (+19d) |  |  | 77d → 65d | 1096, 1101, 1106 → 1096, 1101, 1106, 1082 |  |
| 1109 | Formal Review by BAH | 2007-08-02 → 2007-08-20 (+18d) | 2007-08-15 → 2007-08-31 (+16d) |  |  | 77d → 65d |  |  |
| 1215 | **Requirements (Iter-7)** |  | 2007-09-14 → 2007-10-05 (+21d) | 8d → 22d |  | 25d → 30d |  |  |
| 1217 | Update UC and SRS Documents |  | 2007-09-14 → 2007-09-21 (+7d) | 5d → 10d |  | 55d → 50d |  |  |
| 1218 | Submit Final Versions of UC and SRS documents (3.1, 3.2, 3.3) | 2007-09-14 → 2007-10-05 (+21d) | 2007-09-14 → 2007-10-05 (+21d) |  |  | 55d → 41d |  | constraint none → start no earlier than 2007-10-05 |
| 1219 | **Analysis and Design (Iter-7)** |  | 2007-09-28 → 2007-10-12 (+14d) | 15d → 25d |  |  |  |  |
| 1220 | **Design Documents** |  | 2007-09-28 → 2007-10-12 (+14d) | 15d → 25d |  |  |  |  |
| 1221 | Update Design Documents |  | 2007-09-14 → 2007-09-21 (+7d) | 5d → 10d |  | 25d → 30d |  |  |
| 1222 | Deliver Final Design document to BAH (Task 3.4) | 2007-09-14 → 2007-10-01 (+17d) | 2007-09-14 → 2007-10-01 (+17d) |  |  |  |  | constraint none → start no earlier than 2007-10-01 |
| 1223 | Deliver Final UML to BAH (Task 3.3) | 2007-09-14 → 2007-10-01 (+17d) | 2007-09-14 → 2007-10-01 (+17d) |  |  |  |  | constraint none → start no earlier than 2007-10-01 |
| 1224 | Formal Review by BAH | 2007-09-17 → 2007-10-01 (+14d) | 2007-09-28 → 2007-10-12 (+14d) |  |  |  |  |  |
| 1239 | **Test Plan** |  | 2007-09-20 → 2007-10-12 (+22d) | 12d → 28d |  | 51d → 35d |  |  |
| 1240 | Update Test Plan Document (Task 3.6) |  | 2007-09-06 → 2007-09-11 (+5d) | 2d → 5d |  | 51d → 48d |  |  |
| 1241 | Submit to BAH | 2007-09-06 → 2007-10-01 (+25d) | 2007-09-06 → 2007-10-01 (+25d) |  |  | 51d → 35d |  | constraint none → start no earlier than 2007-10-01 |
| 1242 | Formal Review by BAH | 2007-09-07 → 2007-10-01 (+24d) | 2007-09-20 → 2007-10-12 (+22d) |  |  | 51d → 35d |  |  |
| 1245 | **Test Data** |  | 2007-10-02 → 2007-10-12 (+10d) | 20d → 28d |  | 43d → 35d |  |  |
| 1247 | Submit for Review | 2007-09-18 → 2007-10-01 (+13d) | 2007-09-18 → 2007-10-01 (+13d) |  |  | 43d → 35d |  | constraint none → start no earlier than 2007-10-01 |
| 1248 | Review | 2007-09-19 → 2007-10-01 (+12d) | 2007-10-02 → 2007-10-12 (+10d) |  |  | 43d → 35d |  |  |
| 1254 | Harmonization with BRIDG Model |  |  |  |  |  | 1219 → 1219FS-10d |  |
| 1269 | Files Ready for Deployment at Mayo and WF | 2007-10-16 → 2007-10-15 (-1d) | 2007-10-16 → 2007-10-15 (-1d) | 1d → 0d |  | 33d → -1d |  | was named Deploy Prototype for Iteration 1 at Mayo and WF |
| 1270 | Finish Iteration 7 |  |  |  |  | 0d → -11d | none → 1266 |  |

## Version 14 (saved 2007-07-09)

Note of the change: SVN-Revision: 2250

Last finish stays 2007-11-30. Complete tasks 631 → 632.

Changed:

| ID | Task | Start | Finish | Complete | Total float |
| --- | --- | --- | --- | --- | --- |
| 888 | **Project Management (Iter-5)** |  |  | 66% → 68% |  |
| 891 | **Status and Risk Reporting** |  |  | 36% → 45% |  |
| 896 | Bi-weekly Risk Update in caMP (Task 1.4) | 2007-07-04 A | 2007-07-04 A | 0% → 100% | 107d → none |

## Version 15 (saved 2007-07-27)

Note of the change: SVN-Revision: 2548

Last finish stays 2007-11-30. Complete tasks 632 → 722.

Changed:

| ID | Task | Start | Finish | Complete | Total float |
| --- | --- | --- | --- | --- | --- |
| 1 | **caAERS Application Development Project** |  |  | 62% → 71% |  |
| 303 | **Construction Phase** |  |  | 55% → 66% |  |
| 304 | **Construction Phase Iteration 1** |  | 2007-03-22 A | 99% → 100% | 181d → none |
| 309 | **Project Management (Iter-1)** |  | 2007-03-13 A | 98% → 100% | 188d → none |
| 316 | **Status and Risk Reporting** |  | 2007-03-13 A | 94% → 100% | 188d → none |
| 325 | Adopters Collaboration Report (Task 1.7) |  | 2007-03-13 A | 50% → 100% | 188d → none |
| 354 | **Analysis and Design (Iter-1)** |  | 2007-03-21 A | 97% → 100% | 182d → none |
| 355 | **Design Documents** |  | 2007-03-15 A | 95% → 100% | 186d → none |
| 373 | Formal Review by BAH |  | 2007-03-15 A | 75% → 100% | 186d → none |
| 419 | **Construction Phase Iteration 2** |  | 2007-04-20 A | 99% → 100% | 160d → none |
| 451 | **Requirements (Iter-2)** |  | 2007-04-11 A | 97% → 100% | 167d → none |
| 463 | **Updated SRS Document** |  | 2007-04-11 A | 88% → 100% | 167d → none |
| 464 | Developer draft |  | 2007-03-09 A | 75% → 100% | 188d → none |
| 465 | Adopters/Collobators Review |  | 2007-03-16 A | 75% → 100% | 184.25d → none |
| 466 | Update SRS |  | 2007-03-21 A | 75% → 100% | 182d → none |
| 511 | **Implementation (Iter-2)** |  | 2007-03-30 A | 99% → 100% | 175d → none |
| 514 | **Bug Fixes** |  | 2007-03-08 A | 79% → 100% | 191d → none |
| 516 | Bug Fixes |  | 2007-03-08 A | 75% → 100% | 191d → none |
| 580 | **Construction Phase Iteration 3** |  | 2007-05-24 A | 98% → 100% | 136d → none |
| 581 | Begin Iteration 3 | 2007-04-01 A | 2007-04-01 A | 0% → 100% | 0d → none |
| 680 | **Implementation (Iter-3)** |  | 2007-04-26 A | 93% → 100% | 156d → none |
| 686 | **Implement Use Cases** |  | 2007-04-26 A | 93% → 100% | 156d → none |
| 687 | **AE Data Collection (cont'd)** |  | 2007-04-26 A | 86% → 100% | 156d → none |
| 694 | Pre-existing conditions | 2007-04-24 A | 2007-04-25 A | 0% → 100% | 157d → none |
| 703 | Develop JUnit test cases | 2007-04-16 A | 2007-04-24 A | 0% → 100% | 158d → none |
| 882 | **Construction Phase Iteration 5** |  |  | 11% → 74% |  |
| 884 | **Iteration Planning (Iter-5)** |  | 2007-06-04 A | 99% → 100% | 109.5d → none |
| 887 | Create Iteration 5 Planning Workbook | 2007-06-04 A | 2007-06-04 A | 0% → 100% | 128.25d → none |
| 888 | **Project Management (Iter-5)** |  | 2007-07-16 A | 68% → 100% | 99d → none |
| 889 | Update Project Plan |  | 2007-06-07 A | 75% → 100% | 126d → none |
| 890 | Daily Scrum Meeting |  | 2007-07-12 A | 75% → 100% | 101d → none |
| 891 | **Status and Risk Reporting** |  | 2007-07-16 A | 45% → 100% | 99d → none |
| 897 | Bi-weekly Risk Matrix Update Meeting | 2007-07-06 A | 2007-07-06 A | 0% → 100% | 105d → none |
| 898 | Bi-weekly Status Update Meeting with BAH/NCI | 2007-06-15 A | 2007-06-15 A | 0% → 100% | 120d → none |
| 899 | Bi-weekly Status Update Meeting with BAH/NCI | 2007-06-29 A | 2007-06-29 A | 0% → 100% | 110d → none |
| 900 | Bi-weekly Status Update Meeting with BAH/NCI | 2007-07-13 A | 2007-07-13 A | 0% → 100% | 100d → none |
| 901 | Iteration Status Report (Task 1.3) | 2007-07-16 A | 2007-07-16 A | 0% → 100% | 99d → none |
| 902 | Iteration Risk Matrix Update (Task 1.3) | 2007-07-16 A | 2007-07-16 A | 0% → 100% | 99d → none |
| 903 | **Collaboration Management Activities** |  | 2007-07-12 A | 67% → 100% | 101d → none |
| 904 | **caAERS-Adopters Meetings** |  | 2007-07-12 A | 67% → 100% | 101d → none |
| 909 | caAERS-Adopters Meetings 5 | 2007-07-05 A | 2007-07-05 A | 0% → 100% | 106d → none |
| 910 | caAERS-Adopters Meetings 6 | 2007-07-12 A | 2007-07-12 A | 0% → 100% | 101d → none |
| 911 | **Environment (Iter-5)** |  | 2007-06-07 A | 50% → 100% | 126d → none |
| 912 | Update Environment |  | 2007-06-07 A | 50% → 100% | 126d → none |
| 913 | **SCM (Iter-5)** |  | 2007-06-11 A | 25% → 100% | 124d → none |
| 914 | Manage Repository |  | 2007-06-11 A | 25% → 100% | 124d → none |
| 915 | **Requirements (Iter-5)** |  |  | 24% → 51% |  |
| 916 | **Requirements Gathering and Elucidation** |  | 2007-06-12 A | 29% → 100% | 123d → none |
| 917 | DCP Reqts (Continued) |  | 2007-06-05 A | 50% → 100% | 124.25d → none |
| 918 | Roles | 2007-06-06 A | 2007-06-06 A | 0% → 100% | 124.25d → none |
| 919 | Solicited AE's |  | 2007-06-08 A | 25% → 100% | 123.75d → none |
| 920 | Multi-modality studies | 2007-06-11 A | 2007-06-11 A | 0% → 100% | 123.75d → none |
| 921 | CTEP Report Types (Required/Optional Sections) |  | 2007-06-12 A | 75% → 100% | 123d → none |
| 922 | **Updated Use Case Specification and Realization** |  | 2007-07-20 A | 34% → 100% | 95d → none |
| 923 | Developer draft |  | 2007-06-14 A | 38% → 100% | 105.5d → none |
| 924 | Adopters/Collobators Review |  | 2007-06-18 A | 75% → 100% | 105.5d → none |
| 925 | Update Use Case Document |  | 2007-06-27 A | 47% → 100% | 102d → none |
| 926 | Submit Updated Use Case Document to BAH (Task 3.1) | 2007-07-09 A | 2007-07-09 A | 0% → 100% | 95d → none |
| 927 | Formal Review of Updated Use Case Document | 2007-07-09 A | 2007-07-20 A | 0% → 100% | 95d → none |
| 940 | **Analysis and Design (Iter-5)** | 2007-06-05 A | 2007-07-04 A | 0% → 100% | 107d → none |
| 941 | **Design Documents** | 2007-06-05 A | 2007-07-04 A | 0% → 100% | 107d → none |
| 942 | Study Organizations (model refactoring) | 2007-06-05 A | 2007-06-06 A | 0% → 100% | 127d → none |
| 943 | Study Identifiers (model refactoring) | 2007-06-05 A | 2007-06-06 A | 0% → 100% | 127d → none |
| 944 | **Exporting Data** | 2007-06-05 A | 2007-06-15 A | 0% → 100% | 110d → none |
| 945 | Develop appropriate UML Artifacts | 2007-06-05 A | 2007-06-07 A | 0% → 100% | 110d → none |
| 946 | Create Design Document | 2007-06-08 A | 2007-06-11 A | 0% → 100% | 110d → none |
| 947 | Adopters/Collaborators Review | 2007-06-12 A | 2007-06-14 A | 0% → 100% | 110d → none |
| 948 | Developers Update | 2007-06-15 A | 2007-06-15 A | 0% → 100% | 110d → none |
| 949 | **Candidate AE** | 2007-06-05 A | 2007-06-26 A | 0% → 100% | 113d → none |
| 950 | Implement O/R mapping | 2007-06-05 A | 2007-06-11 A | 0% → 100% | 113d → none |

| ID | Task | Start | Finish | Complete | Total float |
| --- | --- | --- | --- | --- | --- |
| 951 | Develop DAO | 2007-06-07 A | 2007-06-20 A | 0% → 100% | 113d → none |
| 952 | Develop Service | 2007-06-11 A | 2007-06-22 A | 0% → 100% | 113d → none |
| 953 | Develop controller and command objects | 2007-06-13 A | 2007-06-26 A | 0% → 100% | 113d → none |
| 954 | Develop JUnit test cases | 2007-06-15 A | 2007-06-25 A | 0% → 100% | 114d → none |
| 955 | **Solicted AE** | 2007-06-05 A | 2007-06-26 A | 0% → 100% | 113d → none |
| 956 | Implement O/R mapping | 2007-06-05 A | 2007-06-11 A | 0% → 100% | 113d → none |
| 957 | Develop DAO | 2007-06-07 A | 2007-06-20 A | 0% → 100% | 113d → none |
| 958 | Develop Service | 2007-06-11 A | 2007-06-22 A | 0% → 100% | 113d → none |
| 959 | Develop controller and command objects | 2007-06-13 A | 2007-06-26 A | 0% → 100% | 113d → none |
| 960 | Develop JUnit test cases | 2007-06-15 A | 2007-06-25 A | 0% → 100% | 114d → none |
| 961 | **Reports (cont'd)** | 2007-06-05 A | 2007-06-15 A | 0% → 100% | 110d → none |
| 962 | Develop appropriate UML Artifacts | 2007-06-05 A | 2007-06-07 A | 0% → 100% | 110d → none |
| 963 | Create Design Document | 2007-06-08 A | 2007-06-11 A | 0% → 100% | 110d → none |
| 964 | Adopters/Collaborators Review | 2007-06-12 A | 2007-06-14 A | 0% → 100% | 110d → none |
| 965 | Developers Update | 2007-06-15 A | 2007-06-15 A | 0% → 100% | 110d → none |
| 966 | **Institution AE Notification Trigger** | 2007-06-05 A | 2007-06-20 A | 0% → 100% | 107d → none |
| 967 | Develop appropriate UML Artifacts | 2007-06-05 A | 2007-06-08 A | 0% → 100% | 107d → none |
| 968 | Create Design Document | 2007-06-11 A | 2007-06-12 A | 0% → 100% | 107d → none |
| 969 | Adopters/Collaborators Review | 2007-06-13 A | 2007-06-19 A | 0% → 100% | 107d → none |
| 970 | Developers Update | 2007-06-20 A | 2007-06-20 A | 0% → 100% | 107d → none |
| 971 | Deliver Design document to BAH (Task 3.4) | 2007-06-20 A | 2007-06-20 A | 0% → 100% | 117d → none |
| 972 | Deliver UML to BAH (Task 3.3) | 2007-06-20 A | 2007-06-20 A | 0% → 100% | 107d → none |
| 973 | Formal Review by BAH | 2007-06-21 A | 2007-07-04 A | 0% → 100% | 107d → none |
| 974 | **Modeling/BRIDG** | 2007-06-05 A | 2007-06-07 A | 0% → 100% | 126d → none |
| 975 | Update Implementation Model | 2007-06-05 A | 2007-06-06 A | 0% → 100% | 127d → none |
| 976 | Update Domain Analysis Model/BRIDG Harmonization | 2007-06-05 A | 2007-06-07 A | 0% → 100% | 126d → none |
| 977 | Update Dynamic Models (BRIDG) | 2007-06-05 A | 2007-06-07 A | 0% → 100% | 126d → none |
| 978 | **Semantic Integration** | 2007-06-05 A | 2007-06-12 A | 0% → 100% | 123d → none |
| 979 | CDE Gap Analysis/Report | 2007-06-05 A | 2007-06-11 A | 0% → 100% | 123d → none |
| 980 | Meeting with VCDE | 2007-06-12 A | 2007-06-12 A | 0% → 100% | 123d → none |
| 981 | **Implementation (Iter-5)** | 2007-06-05 A | 2007-07-09 A | 0% → 100% | 99d → none |
| 982 | **Web interface** | 2007-06-05 A | 2007-06-11 A | 0% → 100% | 124d → none |
| 983 | UI Refinement | 2007-06-05 A | 2007-06-11 A | 0% → 100% | 124d → none |
| 984 | **Bug Fixes** | 2007-06-05 A | 2007-06-12 A | 0% → 100% | 123d → none |
| 985 | Review and assignment of Bugs from prior iteration | 2007-06-05 A | 2007-06-05 A | 0% → 100% | 123d → none |
| 986 | Bug Fixes | 2007-06-06 A | 2007-06-12 A | 0% → 100% | 123d → none |
| 987 | **Implement Use Cases** | 2007-06-05 A | 2007-07-09 A | 0% → 100% | 99d → none |
| 988 | Study Model Refactoring | 2007-06-05 A | 2007-06-06 A | 0% → 100% | 117d → none |
| 989 | Study Identifiers Refactoring | 2007-06-07 A | 2007-06-08 A | 0% → 100% | 120d → none |
| 990 | Solicited AE's | 2007-06-28 A | 2007-07-04 A | 0% → 100% | 102d → none |
| 991 | Import (cont'd) | 2007-06-14 A | 2007-06-20 A | 0% → 100% | 112d → none |
| 992 | Export Data to Local CTMS | 2007-06-14 A | 2007-06-27 A | 0% → 100% | 102d → none |
| 993 | Pushing data to AdEERS (cont'd) | 2007-06-05 A | 2007-07-02 A | 0% → 100% | 104d → none |
| 994 | Complete AE Expedited Report Flow | 2007-06-05 A | 2007-07-02 A | 0% → 100% | 104d → none |
| 995 | Searching/Views/Analysis | 2007-06-05 A | 2007-06-13 A | 0% → 100% | 102d → none |
| 996 | Rules Engine Integration | 2007-06-05 A | 2007-06-29 A | 0% → 100% | 105d → none |
| 997 | Online Help | 2007-06-05 A | 2007-07-09 A | 0% → 100% | 99d → none |
| 1013 | **Testing (Iter-5)** | 2007-06-05 A |  | 0% → 57% |  |
| 1014 | **Test Plan** | 2007-06-05 A |  | 0% → 25% |  |
| 1015 | Update Test Plan Document (Task 3.6) | 2007-06-05 A |  | 0% → 75% | 114d → 23d |
| 1016 | Submit to BAH | 2007-07-13 A |  | 0% → 75% |  |
| 1018 | **RTM** | 2007-06-05 A | 2007-06-11 A | 0% → 100% | 124d → none |
| 1019 | Update RTM | 2007-06-05 A | 2007-06-11 A | 0% → 100% | 124d → none |
| 1020 | **Testing** | 2007-06-05 A |  | 0% → 67% |  |
| 1021 | Testing | 2007-06-05 A | 2007-07-02 A | 0% → 100% | 99d → none |
| 1024 | **Deployment (Iter-5)** | 2007-07-03 A |  |  |  |
| 1025 | Submit prototype code (Task 3.5) | 2007-07-13 A | 2007-07-13 A | 0% → 100% | 101d → none |
| 1026 | Deploy Prototype for Iteration 1 at Mayo and WF | 2007-07-16 A | 2007-07-16 A | 0% → 100% | 100d → none |
| 1028 | Finish Iteration 5 | 2007-07-15 A | 2007-07-15 A | 0% → 100% | 0d → none |
| 1029 | **Construction Phase Iteration 6** | 2007-07-16 A |  | 0% → 2% | 0d → 56d |
| 1030 | Begin Iteration 6 | 2007-07-16 A | 2007-07-16 A | 0% → 100% | 0d → none |
| 1031 | **Iteration Planning (Iter-6)** | 2007-07-16 A | 2007-07-17 A | 0% → 100% | 63d → none |
| 1032 | Review and finalize Ucases and Work List for Iteration | 2007-07-16 A | 2007-07-16 A | 0% → 100% | 63d → none |
| 1033 | Review and finalize assignments for Iteration | 2007-07-17 A | 2007-07-17 A | 0% → 100% | 63d → none |
| 1034 | Create Iteration 6 Planning and Management Workbook | 2007-07-17 A | 2007-07-17 A | 0% → 100% | 95d → none |
| 1035 | **Project Management (Iter-6)** | 2007-07-16 A |  | 0% → 12% |  |
| 1036 | Update Project Plan | 2007-07-18 A |  | 0% → 75% |  |
| 1038 | **Status and Risk Reporting** | 2007-07-18 A |  | 0% → 17% |  |
| 1039 | Bi-weekly Risk Update in caMP (Task 1.4) | 2007-07-18 A | 2007-07-18 A | 0% → 100% | 97d → none |
| 1040 | Bi-weekly Risk Matrix Update Meeting | 2007-07-20 A | 2007-07-20 A | 0% → 100% | 95d → none |

| ID | Task | Start | Finish | Complete | Total float |
| --- | --- | --- | --- | --- | --- |
| 1051 | **Collaboration Management Activities** | 2007-07-19 A |  | 0% → 33% |  |
| 1052 | **caAERs-Adopters Meetings** | 2007-07-19 A |  | 0% → 33% |  |
| 1053 | caAERs-Adopters Meetings 1 | 2007-07-19 A | 2007-07-19 A | 0% → 100% | 96d → none |
| 1054 | caAERs-Adopters Meetings 2 | 2007-07-26 A | 2007-07-26 A | 0% → 100% | 91d → none |
| 1059 | **Environment (Iter-6)** | 2007-07-17 A |  | 0% → 25% |  |
| 1060 | Update Environment | 2007-07-17 A |  | 0% → 25% |  |
| 1061 | **SCM (Iter-6)** | 2007-07-16 A |  | 0% → 25% |  |
| 1062 | Manage Repository | 2007-07-16 A |  | 0% → 25% |  |
| 1063 | **Requirements (Iter-6)** | 2007-07-16 A |  | 0% → 2% |  |
| 1064 | **Requirements Gathering and Elucidation** | 2007-07-16 A |  | 0% → 25% |  |
| 1065 | Requirements gathering/research for iteration | 2007-07-16 A |  | 0% → 25% |  |

## Version 16 (saved 2007-08-10)

Note of the change: Updated - Iteration 6

Last finish stays 2007-11-30. Complete tasks 722 → 758.

Added:

| ID | Task | Duration | Start | Finish | Predecessors | Constraint |
| --- | --- | --- | --- | --- | --- | --- |
| 1059 | caAERs-Adopters Meetings 6 | 1d | 2007-08-30 | 2007-08-30 |  | start no earlier than 2007-08-30 |
| 1060 | **Detailed Transition Phase Plan** | 29d | 2007-07-18 | 2007-08-27 |  |  |
| 1061 | Draft | 15d | 2007-07-18 | 2007-08-07 | 1031 |  |
| 1062 | Review by Adopters, CTEP, DCP, BAH | 5d | 2007-08-08 | 2007-08-14 | 1061 |  |
| 1063 | Updates | 5d | 2007-08-15 | 2007-08-21 | 1062 |  |
| 1064 | Formal Submission to BAH | 0d | 2007-08-27 | 2007-08-27 | 1063 | must finish on 2007-08-27 |
| 1107 | Managing Organizations | 3d | 2007-07-18 A | 2007-07-20 A |  |  |
| 1108 | Managing INDs | 5d | 2007-07-18 A | 2007-07-24 A |  |  |
| 1109 | AE/SAE Flow - Reordering AE's and Deleting | 3d | 2007-07-18 A | 2007-07-20 |  |  |
| 1110 | Rules Validation Feature - Show What caused Rules to Fire | 10d | 2007-07-18 A | 2007-07-31 A |  |  |
| 1113 | Save as PDF | 5d | 2007-07-18 A | 2007-07-24 |  |  |
| 1117 | Public APIs (Design and Abstraction) | 5d | 2007-07-18 | 2007-07-24 |  |  |
| 1118 | Audit Module | 5d | 2007-07-18 A | 2007-07-24 |  |  |
| 1121 | Online Help (cont'd) | 5d | 2007-07-18 A | 2007-07-24 |  |  |
| 1139 | **Final Architecture Guide** | 12d | 2007-08-10 | 2007-08-27 |  |  |
| 1140 | Update Arch Guide Draft | 5d | 2007-08-10 | 2007-08-16 |  | start no earlier than 2007-08-10 |
| 1141 | Submit to BAH | 0d | 2007-08-27 | 2007-08-27 | 1140 | must finish on 2007-08-27 |
| 1218 | Online Help (cont'd) | 10d | 2007-09-05 | 2007-09-18 |  |  |
| 1219 | Amended Reports | 10d | 2007-09-05 | 2007-09-18 |  |  |
| 1220 | PDF (5-day, DCP SAE Form, Medwatch 3500) | 5d | 2007-09-05 | 2007-09-11 |  |  |
| 1222 | User Provisioning (cont'd) | 5d | 2007-09-05 | 2007-09-11 |  |  |
| 1225 | Grid Services | 5d | 2007-09-05 | 2007-09-11 |  |  |
| 1227 | Candidate AE | 5d | 2007-09-05 | 2007-09-11 |  |  |
| 1228 | Solicited AE | 5d | 2007-09-05 | 2007-09-11 |  |  |

Removed: 1086 DCP AE Data Capture Workflow (cont'd); 1087 Implement O/R mapping; 1088 Develop DAO; 1089 Develop Service; 1090 Develop controller and command objects; 1091 Develop JUnit test cases; 1093 Develop appropriate UML Artifacts; 1094 Create Design Document; 1095 Adopters/Collaborators Review; 1096 Developers Update; 1098 Develop appropriate UML Artifacts; 1099 Create Design Document; 1100 Adopters/Collaborators Review; 1101 Developers Update; 1102 System Admin Module (cont'd); 1103 Develop appropriate UML Artifacts; 1104 Create Design Document; 1105 Adopters/Collaborators Review; 1106 Developers Update; 1107 Deliver Design document to BAH (Task 3.4); 1108 Deliver UML to BAH (Task 3.3); 1109 Formal Review by BAH; 1116 Meeting with VCDE; 1126 Report Definition Templates; 1127 Expedited Report States (Pending, Submitted, etc.); 1130 Duplicate Studies Checking/Validation; 1134 LOV Maintenance Screens/Functionality; 1135 System Admin (cont'd); 1136 Triggers/Notification (cont'd); 1226 Web interface; 1227 UI Refinement; 1234 New Version of Study; 1237 System Admin (cont'd)

Changed:

| ID | Task | Start | Finish | Duration | Complete | Total float |
| --- | --- | --- | --- | --- | --- | --- |
| 1 | **caAERS Application Development Project** |  |  |  | 71% → 76% |  |
| 303 | **Construction Phase** |  |  |  | 66% → 74% |  |
| 744 | **Construction Phase Iteration 4** |  | 2007-06-14 A |  | 88% → 100% | 121d → none |
| 749 | **Project Management (Iter-4)** |  | 2007-05-31 A |  | 95% → 100% | 0d → none |
| 751 | **CaAERS CCB (Task 2.10)** | 2007-05-07 A | 2007-05-07 A |  | 0% → 100% | 0d → none |
| 752 | CCB Meetings | 2007-05-07 A | 2007-05-07 A |  | 0% → 100% | 0d → none |
| 798 | **Analysis and Design (Iter-4)** |  | 2007-06-12 A |  | 84% → 100% | 123d → none |
| 799 | **Design Documents** |  | 2007-06-12 A |  | 84% → 100% | 123d → none |
| 816 | Deliver UML to BAH (Task 3.3) | 2007-05-29 A | 2007-05-29 A |  | 0% → 100% | 123d → none |
| 817 | Formal Review by BAH | 2007-05-30 A | 2007-06-12 A |  | 0% → 100% | 123d → none |
| 822 | **Semantic Interoperability** |  | 2007-05-14 A |  | 58% → 100% | 144d → none |
| 823 | CDE Gap Analysis/Report |  | 2007-05-11 A |  | 50% → 100% | 145d → none |
| 853 | **Documentation (Iter-4)** |  | 2007-06-08 A |  | 29% → 100% | 125d → none |
| 854 | **Installation Guide** |  | 2007-06-08 A |  | 33% → 100% | 125d → none |
| 857 | Review of Installation Guide | 2007-05-28 A | 2007-06-08 A |  | 0% → 100% | 125d → none |
| 858 | **Administrators Guide** |  | 2007-05-25 A |  | 33% → 100% | 135d → none |
| 861 | Review of Admin Guide | 2007-05-14 A | 2007-05-25 A |  | 0% → 100% | 135d → none |
| 862 | **Release Notes** |  | 2007-05-22 A |  | 17% → 100% | 138d → none |
| 865 | Review of Release Notes | 2007-05-09 A | 2007-05-22 A |  | 0% → 100% | 138d → none |
| 866 | **Testing (Iter-4)** |  | 2007-06-01 A |  | 97% → 100% | 130d → none |
| 871 | **RTM** |  | 2007-05-11 A |  | 75% → 100% | 145d → none |
| 872 | Create RTM |  | 2007-05-11 A |  | 75% → 100% | 145d → none |
| 877 | **Deployment (Iter-4)** |  | 2007-06-14 A |  | 9% → 100% | 121d → none |
| 879 | Formal Review of Code by BAH | 2007-06-01 A | 2007-06-14 A |  | 0% → 100% | 121d → none |
| 882 | **Construction Phase Iteration 5** |  |  |  | 74% → 86% |  |
| 915 | **Requirements (Iter-5)** |  |  |  | 51% → 78% |  |
| 928 | **Updated SRS Document** |  |  |  | 36% → 66% |  |
| 929 | Developer draft |  | 2007-06-13 A |  | 43% → 100% | 107.5d → none |
| 930 | Adopters/Collobators Review |  | 2007-06-15 A |  | 75% → 100% | 106.75d → none |
| 931 | Update SRS |  | 2007-06-26 A |  | 54% → 100% | 103d → none |
| 932 | Submit Updated SRS Document to BAH (Task 3.2) | 2007-07-09 A | 2007-07-09 A |  | 0% → 100% | 95d → none |
| 934 | **Updated UML Static Class Diagram Model** | 2007-06-05 A |  |  | 0% → 63% |  |
| 935 | Developer draft | 2007-06-05 A | 2007-06-06 A |  | 0% → 100% | 102d → none |
| 936 | Adopters/Collobators Review | 2007-06-07 A | 2007-06-13 A |  | 0% → 100% | 102d → none |
| 937 | Update UML | 2007-06-14 A | 2007-06-27 A |  | 0% → 100% | 102d → none |
| 938 | Submit UML to BAH (Task 3.3) | 2007-07-13 A | 2007-07-13 A |  | 0% → 100% | 91d → none |
| 998 | **Documentation (Iter-5)** | 2007-06-05 A |  |  | 0% → 63% |  |
| 999 | **Installation Guide** | 2007-07-09 A |  |  | 0% → 33% |  |
| 1000 | Update Installation Guide | 2007-07-09 A | 2007-07-13 A |  | 0% → 100% | 90d → none |
| 1001 | Submit to BAH/Adopters | 2007-07-13 A | 2007-07-13 A |  | 0% → 100% | 90d → none |
| 1007 | **Release Notes** | 2007-07-12 A | 2007-07-27 A |  | 0% → 100% | 90d → none |
| 1008 | Update Release Notes | 2007-07-12 A | 2007-07-13 A |  | 0% → 100% | 90d → none |
| 1009 | Submit to BAH | 2007-07-13 A | 2007-07-13 A |  | 0% → 100% | 90d → none |
| 1010 | Review of Release Notes | 2007-07-16 A | 2007-07-27 A |  | 0% → 100% | 90d → none |
| 1011 | **End User Guide Draft** | 2007-06-05 A | 2007-07-09 A |  | 0% → 100% | 104d → none |
| 1012 | Create Draft of End User Guide | 2007-06-05 A | 2007-07-09 A |  | 0% → 100% | 104d → none |
| 1013 | **Testing (Iter-5)** |  |  |  | 57% → 60% |  |
| 1014 | **Test Plan** |  |  |  | 25% → 33% |  |
| 1015 | Update Test Plan Document (Task 3.6) |  | 2007-06-11 A |  | 75% → 100% | 23d → none |
| 1016 | Submit to BAH |  | 2007-07-13 A |  | 75% → 100% | 91d → none |
| 1022 | Submit Test Results Report (Task 3.8) | 2007-07-02 A | 2007-07-02 A |  | 0% → 100% | 99d → none |
| 1029 | **Construction Phase Iteration 6** |  |  |  | 2% → 28% |  |
| 1030 | Begin Iteration 6 | 2007-07-16 A → 2007-07-23 A (+7d) | 2007-07-16 A → 2007-07-23 A (+7d) |  |  |  |
| 1035 | **Project Management (Iter-6)** |  |  |  | 12% → 32% |  |
| 1036 | Update Project Plan | 2007-07-18 A → 2007-07-23 A (+5d) | 2007-07-20 → 2007-08-02 A (+13d) | 3d → 9d | 75% → 100% | 95d → none |
| 1037 | Daily Scrum Meetings | 2007-07-16 A |  |  | 0% → 25% |  |
| 1038 | **Status and Risk Reporting** |  |  |  | 17% → 50% |  |
| 1041 | Bi-weekly Risk Update in caMP (Task 1.4) | 2007-08-01 A | 2007-08-01 A |  | 0% → 100% | 87d → none |
| 1042 | Bi-weekly Risk Matrix Update Meeting | 2007-08-03 A | 2007-08-03 A |  | 0% → 100% | 85d → none |
| 1045 | Bi-weekly Status Update Meeting with BAH/NCI | 2007-07-27 A | 2007-07-27 A |  | 0% → 100% | 90d → none |
| 1046 | Bi-weekly Status Update Meeting with BAH/NCI | 2007-08-10 A | 2007-08-10 A |  | 0% → 100% | 80d → none |
| 1051 | **Collaboration Management Activities** |  | 2007-08-23 → 2007-08-30 (+7d) | 26d → 31d | 33% → 57% | 71d → 66d |
| 1052 | **caAERs-Adopters Meetings** |  | 2007-08-23 → 2007-08-30 (+7d) | 26d → 31d | 33% → 57% | 71d → 66d |
| 1055 | caAERs-Adopters Meetings 3 | 2007-08-02 A | 2007-08-02 A |  | 0% → 100% | 86d → none |
| 1056 | caAERs-Adopters Meetings 4 | 2007-08-09 A | 2007-08-09 A |  | 0% → 100% | 81d → none |
| 1065 | **Environment (Iter-6)** |  |  |  | 25% → 50% |  |
| 1066 | Update Environment |  |  |  | 25% → 50% |  |
| 1067 | **SCM (Iter-6)** |  | 2007-07-20 → 2007-07-26 (+6d) | 5d → 8.75d |  | 95d → 91.25d |
| 1068 | Manage Repository |  | 2007-07-20 → 2007-07-26 (+6d) |  |  | 95d → 91.25d |
| 1069 | **Requirements (Iter-6)** |  | 2007-08-31 → 2007-09-10 (+10d) | 35d → 41d | 2% → 23% | 65d → 59d |

| ID | Task | Start | Finish | Duration | Complete | Total float | Other |
| --- | --- | --- | --- | --- | --- | --- | --- |
| 1070 | **Requirements Gathering and Elucidation** |  | 2007-07-20 → 2007-07-25 (+5d) | 5d → 7.5d | 25% → 50% | 95d → 92.5d |  |
| 1071 | Requirements gathering/research for iteration |  | 2007-07-20 → 2007-07-25 (+5d) |  | 25% → 50% | 95d → 92.5d |  |
| 1072 | **Updated Use Case Specification and Realization** | 2007-07-18 A | 2007-08-31 → 2007-09-10 (+10d) | 33d → 39d | 0% → 19% | 65d → 59d |  |
| 1073 | Developer draft | 2007-07-18 A |  |  | 0% → 35% | 76d → 19.8d |  |
| 1074 | Adopters/Collobators Review | 2007-07-24 A |  |  | 0% → 35% | 76d → 18.75d |  |
| 1075 | Update Use Case Document | 2007-07-27 A |  |  | 0% → 35% | 76d → 17d |  |
| 1076 | Submit Updated Use Case Document to BAH (Task 3.1) | 2007-08-20 → 2007-08-27 (+7d) | 2007-08-20 → 2007-08-27 (+7d) |  |  | 65d → 0d | constraint start no earlier than 2007-08-20 → must finish on 2007-08-27 |
| 1077 | Formal Review of Updated Use Case Document | 2007-08-20 → 2007-08-28 (+8d) | 2007-08-31 → 2007-09-10 (+10d) |  |  | 65d → 59d |  |
| 1078 | **Updated SRS Document** | 2007-07-18 A | 2007-08-31 → 2007-09-10 (+10d) | 33d → 39d | 0% → 16% | 65d → 59d |  |
| 1079 | Developer draft | 2007-07-18 A |  |  | 0% → 35% | 80d → 23.1d |  |
| 1080 | Adopters/Collobators Review | 2007-07-20 A |  |  | 0% → 35% | 80d → 22.05d |  |
| 1081 | Update SRS | 2007-07-25 A |  |  | 0% → 35% | 80d → 21d |  |
| 1082 | Submit Updated SRS Document to BAH (Task 3.2) | 2007-08-20 → 2007-08-27 (+7d) | 2007-08-20 → 2007-08-27 (+7d) |  |  | 65d → 0d | constraint start no earlier than 2007-08-20 → must finish on 2007-08-27 |
| 1083 | Formal Review of Updated SRS | 2007-08-20 → 2007-08-28 (+8d) | 2007-08-31 → 2007-09-10 (+10d) |  |  | 65d → 59d |  |
| 1084 | **Updated UML Static Class Diagram Model** | 2007-07-18 A |  |  | 0% → 28% |  |  |
| 1085 | Developer draft | 2007-07-18 A |  |  | 0% → 75% | 82d → 85d |  |
| 1086 | Adopters/Collobators Review | 2007-07-20 A |  |  | 0% → 75% | 82d → 82.75d |  |
| 1087 | Update UML | 2007-07-25 A |  |  | 0% → 75% |  |  |
| 1090 | **Analysis and Design (Iter-6)** | 2007-07-18 A | 2007-08-31 → 2007-08-09 (-22d) | 33d → 17d | 0% → 34% | 65d → 81d |  |
| 1091 | **Design Documents** | 2007-07-18 A | 2007-08-31 → 2007-08-09 (-22d) | 33d → 17d | 0% → 30% | 65d → 81d |  |
| 1092 | Export/Import (Con't) | 2007-07-18 A | 2007-08-01 → 2007-08-09 (+8d) | 11d → 17d | 0% → 30% | 77d → 81d |  |
| 1093 | Rules Engine/Triggers (cont'd) | 2007-07-18 A | 2007-08-01 → 2007-08-09 (+8d) | 11d → 17d | 0% → 30% | 77d → 81d |  |
| 1094 | **Modeling** | 2007-07-18 A |  |  | 0% → 50% | 83d → 88d |  |
| 1095 | Update Implementation Model | 2007-07-18 A |  |  | 0% → 50% | 86d → 91d |  |
| 1096 | Update Domain Analysis Model/BRIDG Harmonization | 2007-07-18 A |  |  | 0% → 50% | 83d → 88d |  |
| 1097 | Create/Update Dynamic Models (BRIDG) | 2007-07-18 A |  |  | 0% → 50% | 83d → 88d |  |
| 1098 | **Semantic Integration with caDSR** | 2007-07-18 A | 2007-07-25 → 2007-07-24 (-1d) | 6d → 5d | 0% → 25% | 92d → 93d |  |
| 1099 | CDE Use Report | 2007-07-18 A |  |  | 0% → 25% | 92d → 93d |  |
| 1100 | **Implementation (Iter-6)** | 2007-07-18 A | 2007-08-14 → 2007-08-15 (+1d) | 20d → 21d | 0% → 42% | 78d → 77d |  |
| 1101 | **Web interface** | 2007-07-18 A |  |  | 0% → 25% |  |  |
| 1102 | UI Refinement | 2007-07-18 A |  |  | 0% → 25% |  |  |
| 1103 | **Bug Fixes** | 2007-07-18 A | 2007-07-25 → 2007-08-15 (+21d) | 6d → 21d | 0% → 31% | 92d → 77d |  |
| 1104 | Review and assignment of Bugs from prior iteration | 2007-07-18 A |  |  | 0% → 50% | 92d → 83d |  |
| 1105 | Bug Fixes | 2007-07-19 A | 2007-07-25 → 2007-08-15 (+21d) | 5d → 20d | 0% → 30% | 92d → 77d |  |
| 1106 | **Impementation** | 2007-07-18 A | 2007-08-14 → 2007-08-07 (-7d) | 20d → 15d | 0% → 46% | 78d → 83d |  |
| 1111 | Report Definition: Specification of Data Collection Items for Report Types | 2007-07-18 A | 2007-07-20 → 2007-07-24 (+4d) | 3d → 5d | 0% → 25% | 95d → 93d | was named TAC Code (for Treatment Tab) |
| 1112 | Submission Mechanisms (cont'd) | 2007-07-18 A |  |  | 0% → 25% |  |  |
| 1114 | Implement DCP Expedited Report Data Capture flow | 2007-07-18 A |  |  | 0% → 50% |  |  |
| 1115 | Duplicate AE Checking |  |  |  |  |  | was named Duplicate AE Checking/Validation |
| 1116 | Import/Export (cont'd) | 2007-07-18 A |  |  | 0% → 50% |  | was named Export (cont'd) |
| 1119 | User Provisioning |  |  |  |  |  | was named Validations |
| 1120 | Study Versioning |  |  |  |  |  | was named Error Messages |
| 1122 | **Documentation (Iter-6)** | 2007-07-18 A |  |  | 0% → 8% |  |  |
| 1123 | **Installation Guide** | 2007-07-18 A | 2007-08-31 → 2007-09-10 (+10d) | 33d → 39d | 0% → 8% | 65d → 59d |  |
| 1124 | Update Installation Guide | 2007-07-18 A |  |  | 0% → 25% | 83d → 24d |  |
| 1125 | Submit to BAH/Adopters | 2007-08-20 → 2007-08-27 (+7d) | 2007-08-20 → 2007-08-27 (+7d) |  |  | 65d → 0d | constraint start no earlier than 2007-08-20 → must finish on 2007-08-27 |
| 1126 | Review of Installation Guide | 2007-08-20 → 2007-08-28 (+8d) | 2007-08-31 → 2007-09-10 (+10d) |  |  | 65d → 59d |  |
| 1133 | Submit to BAH |  |  |  |  | 59d → 0d | constraint start no earlier than 2007-08-24 → must finish on 2007-08-27 |
| 1135 | **End User Guide Draft** | 2007-07-18 A | 2007-08-31 → 2007-09-10 (+10d) | 33d → 39d | 0% → 21% | 65d → 59d |  |
| 1136 | Create Draft of End User Guide | 2007-07-18 A |  |  | 0% → 35% | 73d → 14d |  |
| 1137 | Submit to BAH (Task 13.15.1) | 2007-08-20 → 2007-08-27 (+7d) | 2007-08-20 → 2007-08-27 (+7d) |  |  | 65d → 0d | constraint start no earlier than 2007-08-20 → must finish on 2007-08-27 |
| 1138 | Review of End User Guide Draft | 2007-08-20 → 2007-08-28 (+8d) | 2007-08-31 → 2007-09-10 (+10d) |  |  | 65d → 59d |  |
| 1142 | **Testing (Iter-6)** | 2007-07-18 A | 2007-09-04 → 2007-09-10 (+6d) | 35d → 39d | 0% → 20% | 63d → 59d |  |
| 1143 | **Test Plan** | 2007-07-18 A | 2007-08-02 → 2007-09-10 (+39d) | 12d → 39d | 0% → 13% | 86d → 59d |  |
| 1144 | Update Test Plan Document (Task 3.6) | 2007-07-18 A |  |  | 0% → 75% | 86d → 27d |  |
| 1145 | Submit to BAH | 2007-07-19 → 2007-08-27 (+39d) | 2007-07-19 → 2007-08-27 (+39d) |  |  | 86d → 0d | constraint none → must finish on 2007-08-27 |
| 1146 | Formal Review by BAH | 2007-07-20 → 2007-08-28 (+39d) | 2007-08-02 → 2007-09-10 (+39d) |  |  | 86d → 59d |  |
| 1147 | **RTM** | 2007-07-20 A |  |  | 0% → 50% |  |  |
| 1148 | Update RTM | 2007-07-20 A |  |  | 0% → 50% |  |  |
| 1149 | **Test Data** | 2007-07-18 A | 2007-08-14 → 2007-08-28 (+14d) | 20d → 30d | 0% → 17% | 78d → 68d |  |
| 1150 | Create test data set (Task 3.7) | 2007-07-18 A | 2007-07-31 → 2007-08-14 (+14d) | 10d → 20d | 0% → 25% | 78d → 68d |  |
| 1151 | Submit for Review | 2007-07-31 → 2007-08-14 (+14d) | 2007-07-31 → 2007-08-14 (+14d) |  |  | 78d → 68d |  |
| 1152 | Review | 2007-08-01 → 2007-08-15 (+14d) | 2007-08-14 → 2007-08-28 (+14d) |  |  | 78d → 68d |  |
| 1153 | **Testing** | 2007-07-18 A | 2007-09-04 → 2007-09-10 (+6d) | 35d → 39d | 0% → 21% | 63d → 59d |  |
| 1154 | Testing | 2007-07-18 A |  |  | 0% → 30% | 63d → 4d |  |
| 1155 | Submit Test Results Report (Task 3.8) | 2007-08-21 → 2007-08-27 (+6d) | 2007-08-21 → 2007-08-27 (+6d) |  |  | 63d → 0d | constraint none → must finish on 2007-08-27 |
| 1156 | Formal Review of Test results Report | 2007-08-22 → 2007-08-28 (+6d) | 2007-09-04 → 2007-09-10 (+6d) |  |  | 63d → 59d |  |
| 1157 | **BRIDG Review** | 2007-07-25 A |  |  | 0% → 50% |  | was named BRIDG Review (Cont'd) |
| 1158 | Internal Review of BRIDG Harmonization Artifacts | 2007-07-25 A |  |  | 0% → 50% | 83d → 85.5d |  |
| 1159 | Begin Harmonization with BRIDG Model | 2007-08-01 A |  |  | 0% → 50% |  |  |

| ID | Task | Finish | Duration | Total float | Other |
| --- | --- | --- | --- | --- | --- |
| 1214 | **Bug Fixes** | 2007-09-12 → 2007-10-03 (+21d) | 6d → 21d | 47d → -3d |  |
| 1216 | Bug Fixes | 2007-09-12 → 2007-10-03 (+21d) | 5d → 20d | 47d → -3d |  |
| 1246 | **Silver Review** |  |  |  | was named Silver Review (Begin) |

## Version 17 (saved 2007-10-09)

Note of the change: SVN-Revision: 3224

Last finish stays 2007-11-30. Complete tasks 758 → 879.

Added:

| ID | Task | Duration | Start | Finish |
| --- | --- | --- | --- | --- |
| 1219 | Expedited AE Flow and Enhancements (TAC, manual selection of reports, etc.) | 23d | 2007-09-05 A | 2007-10-05 |
| 1220 | Manage AE's page enhancements | 7d | 2007-09-05 A | 2007-09-13 |
| 1229 | Enhanced Installer | 7d | 2007-09-05 A | 2007-09-13 A |
| 1230 | Rules import/export | 10d | 2007-09-05 A | 2007-09-18 A |
| 1231 | Mandatory Sections Rules | 5d | 2007-09-05 A | 2007-09-11 A |
| 1232 | Register Subject (CCTS - Sprint 2) | 15d | 2007-09-05 A | 2007-09-25 A |

Removed: 1227 Candidate AE; 1228 Solicited AE

Changed:

| ID | Task | Start | Finish | Complete | Total float |
| --- | --- | --- | --- | --- | --- |
| 1 | **caAERS Application Development Project** |  |  | 76% → 92% |  |
| 303 | **Construction Phase** |  |  | 74% → 94% |  |
| 882 | **Construction Phase Iteration 5** |  | 2007-07-27 A | 86% → 100% | 90d → none |
| 915 | **Requirements (Iter-5)** |  | 2007-07-26 A | 78% → 100% | 91d → none |
| 928 | **Updated SRS Document** |  | 2007-07-20 A | 66% → 100% | 95d → none |
| 933 | Formal Review of Updated SRS | 2007-07-09 A | 2007-07-20 A | 0% → 100% | 95d → none |
| 934 | **Updated UML Static Class Diagram Model** |  | 2007-07-26 A | 63% → 100% | 91d → none |
| 939 | Formal Review of UML | 2007-07-13 A | 2007-07-26 A | 0% → 100% | 91d → none |
| 998 | **Documentation (Iter-5)** |  | 2007-07-27 A | 63% → 100% | 90d → none |
| 999 | **Installation Guide** |  | 2007-07-27 A | 33% → 100% | 90d → none |
| 1002 | Review of Installation Guide | 2007-07-16 A | 2007-07-27 A | 0% → 100% | 90d → none |
| 1003 | **Administrators Guide** | 2007-07-09 A | 2007-07-27 A | 0% → 100% | 90d → none |
| 1004 | Update Administrators Guide | 2007-07-09 A | 2007-07-13 A | 0% → 100% | 90d → none |
| 1005 | Submit to BAH | 2007-07-13 A | 2007-07-13 A | 0% → 100% | 90d → none |
| 1006 | Review of Admin Guide | 2007-07-16 A | 2007-07-27 A | 0% → 100% | 90d → none |
| 1013 | **Testing (Iter-5)** |  | 2007-07-26 A | 60% → 100% | 91d → none |
| 1014 | **Test Plan** |  | 2007-07-26 A | 33% → 100% | 91d → none |
| 1017 | Formal Review by BAH | 2007-07-13 A | 2007-07-26 A | 0% → 100% | 91d → none |
| 1020 | **Testing** |  | 2007-07-16 A | 67% → 100% | 99d → none |
| 1023 | Formal Review of Test results Report | 2007-07-03 A | 2007-07-16 A | 0% → 100% | 99d → none |
| 1024 | **Deployment (Iter-5)** |  | 2007-07-16 A | 0% → 100% | 99d → none |
| 1027 | Formal Review of Code by BAH | 2007-07-03 A | 2007-07-16 A | 0% → 100% | 99d → none |
| 1029 | **Construction Phase Iteration 6** |  |  | 28% → 94% |  |
| 1035 | **Project Management (Iter-6)** |  | 2007-08-31 A | 32% → 100% | 65d → none |
| 1037 | Daily Scrum Meetings |  | 2007-08-24 A | 25% → 100% | 70d → none |
| 1038 | **Status and Risk Reporting** |  | 2007-08-31 A | 50% → 100% | 65d → none |
| 1043 | Bi-weekly Risk Update in caMP (Task 1.4) | 2007-08-15 A | 2007-08-15 A | 0% → 100% | 77d → none |
| 1044 | Bi-weekly Risk Matrix Update Meeting | 2007-08-17 A | 2007-08-17 A | 0% → 100% | 75d → none |
| 1047 | Bi-weekly Status Update Meeting with BAH/NCI | 2007-08-24 A | 2007-08-24 A | 0% → 100% | 70d → none |
| 1048 | Bi-weekly Status Update Meeting with BAH/NCI | 2007-08-31 A | 2007-08-31 A | 0% → 100% | 65d → none |
| 1049 | Iteration Status Report (Task 1.3) | 2007-08-31 A | 2007-08-31 A | 0% → 100% | 65d → none |
| 1050 | Iteration Risk Matrix Update (Task 1.3) | 2007-08-31 A | 2007-08-31 A | 0% → 100% | 65d → none |
| 1051 | **Collaboration Management Activities** |  | 2007-08-30 A | 57% → 100% | 66d → none |
| 1052 | **caAERs-Adopters Meetings** |  | 2007-08-30 A | 57% → 100% | 66d → none |
| 1057 | caAERs-Adopters Meetings 5 | 2007-08-16 A | 2007-08-16 A | 0% → 100% | 76d → none |
| 1058 | caAERs-Adopters Meetings 6 | 2007-08-23 A | 2007-08-23 A | 0% → 100% | 71d → none |
| 1059 | caAERs-Adopters Meetings 6 | 2007-08-30 A | 2007-08-30 A | 0% → 100% | 66d → none |
| 1060 | **Detailed Transition Phase Plan** | 2007-07-18 A | 2007-08-27 A | 0% → 100% | 0d → none |
| 1061 | Draft | 2007-07-18 A | 2007-08-07 A | 0% → 100% | 4d → none |
| 1062 | Review by Adopters, CTEP, DCP, BAH | 2007-08-08 A | 2007-08-14 A | 0% → 100% | 4d → none |
| 1063 | Updates | 2007-08-15 A | 2007-08-21 A | 0% → 100% | 4d → none |
| 1064 | Formal Submission to BAH | 2007-08-27 A | 2007-08-27 A | 0% → 100% | 0d → none |
| 1065 | **Environment (Iter-6)** |  | 2007-07-19 A | 50% → 100% | 96d → none |
| 1066 | Update Environment |  | 2007-07-19 A | 50% → 100% | 96d → none |
| 1067 | **SCM (Iter-6)** |  | 2007-07-26 A | 25% → 100% | 91.25d → none |
| 1068 | Manage Repository |  | 2007-07-26 A | 25% → 100% | 91.25d → none |
| 1069 | **Requirements (Iter-6)** |  | 2007-09-10 A | 23% → 100% | 59d → none |
| 1070 | **Requirements Gathering and Elucidation** |  | 2007-07-25 A | 50% → 100% | 92.5d → none |
| 1071 | Requirements gathering/research for iteration |  | 2007-07-25 A | 50% → 100% | 92.5d → none |
| 1072 | **Updated Use Case Specification and Realization** |  | 2007-09-10 A | 19% → 100% | 59d → none |
| 1073 | Developer draft |  | 2007-07-23 A | 35% → 100% | 19.8d → none |
| 1074 | Adopters/Collobators Review |  | 2007-07-26 A | 35% → 100% | 18.75d → none |
| 1075 | Update Use Case Document |  | 2007-08-02 A | 35% → 100% | 17d → none |
| 1076 | Submit Updated Use Case Document to BAH (Task 3.1) | 2007-08-27 A | 2007-08-27 A | 0% → 100% | 0d → none |
| 1077 | Formal Review of Updated Use Case Document | 2007-08-28 A | 2007-09-10 A | 0% → 100% | 59d → none |
| 1078 | **Updated SRS Document** |  | 2007-09-10 A | 16% → 100% | 59d → none |
| 1079 | Developer draft |  | 2007-07-19 A | 35% → 100% | 23.1d → none |
| 1080 | Adopters/Collobators Review |  | 2007-07-24 A | 35% → 100% | 22.05d → none |
| 1081 | Update SRS |  | 2007-07-27 A | 35% → 100% | 21d → none |
| 1082 | Submit Updated SRS Document to BAH (Task 3.2) | 2007-08-27 A | 2007-08-27 A | 0% → 100% | 0d → none |
| 1083 | Formal Review of Updated SRS | 2007-08-28 A | 2007-09-10 A | 0% → 100% | 59d → none |
| 1084 | **Updated UML Static Class Diagram Model** |  | 2007-08-31 A | 28% → 100% | 65d → none |
| 1085 | Developer draft |  | 2007-07-19 A | 75% → 100% | 85d → none |
| 1086 | Adopters/Collobators Review |  | 2007-07-24 A | 75% → 100% | 82.75d → none |
| 1087 | Update UML |  | 2007-07-25 A | 75% → 100% | 82d → none |
| 1088 | Submit UML to BAH (Task 3.3) | 2007-08-20 A | 2007-08-20 A | 0% → 100% | 65d → none |
| 1089 | Formal Review of UML | 2007-08-20 A | 2007-08-31 A | 0% → 100% | 65d → none |
| 1090 | **Analysis and Design (Iter-6)** |  |  | 34% → 90% |  |
| 1091 | **Design Documents** |  | 2007-08-09 A | 30% → 100% | 81d → none |
| 1092 | Export/Import (Con't) |  | 2007-08-09 A | 30% → 100% | 81d → none |

| ID | Task | Start | Finish | Complete | Total float | Other |
| --- | --- | --- | --- | --- | --- | --- |
| 1093 | Rules Engine/Triggers (cont'd) |  | 2007-08-09 A | 30% → 100% | 81d → none |  |
| 1094 | **Modeling** |  |  | 50% → 90% | 88d → 93d |  |
| 1095 | Update Implementation Model |  | 2007-07-19 A | 50% → 100% | 91d → none |  |
| 1096 | Update Domain Analysis Model/BRIDG Harmonization |  |  | 50% → 75% | 88d → 93d |  |
| 1097 | Create/Update Dynamic Models (BRIDG) |  | 2007-07-24 A | 50% → 100% | 88d → none |  |
| 1100 | **Implementation (Iter-6)** |  | 2007-08-15 A | 42% → 100% | 77d → none |  |
| 1101 | **Web interface** |  | 2007-07-24 A | 25% → 100% | 93d → none |  |
| 1102 | UI Refinement |  | 2007-07-24 A | 25% → 100% | 93d → none |  |
| 1103 | **Bug Fixes** |  | 2007-08-15 A | 31% → 100% | 77d → none |  |
| 1104 | Review and assignment of Bugs from prior iteration |  | 2007-07-18 A | 50% → 100% | 83d → none |  |
| 1105 | Bug Fixes |  | 2007-08-15 A | 30% → 100% | 77d → none |  |
| 1106 | **Impementation** |  | 2007-08-07 A | 46% → 100% | 83d → none |  |
| 1109 | AE/SAE Flow - Reordering AE's and Deleting |  | 2007-07-20 A | 50% → 100% | 95d → none |  |
| 1111 | Report Definition: Specification of Data Collection Items for Report Types |  | 2007-07-24 A | 25% → 100% | 93d → none |  |
| 1112 | Submission Mechanisms (cont'd) |  | 2007-08-07 A | 25% → 100% | 83d → none |  |
| 1113 | Save as PDF |  | 2007-07-24 A | 50% → 100% | 93d → none |  |
| 1114 | Implement DCP Expedited Report Data Capture flow |  | 2007-08-07 A | 50% → 100% | 83d → none |  |
| 1115 | Duplicate AE Checking | 2007-07-18 A | 2007-07-20 A | 0% → 100% | 95d → none |  |
| 1116 | Import/Export (cont'd) |  | 2007-07-24 A | 50% → 100% | 93d → none |  |
| 1117 | Public APIs (Design and Abstraction) | 2007-07-18 A | 2007-07-24 A | 0% → 100% | 93d → none |  |
| 1118 | Audit Module |  | 2007-07-24 A | 75% → 100% | 93d → none |  |
| 1119 | User Provisioning | 2007-07-18 A | 2007-07-24 A | 0% → 100% | 93d → none |  |
| 1120 | Study Versioning | 2007-07-18 A | 2007-07-20 A | 0% → 100% | 95d → none |  |
| 1121 | Online Help (cont'd) |  | 2007-07-24 A | 25% → 100% | 93d → none |  |
| 1122 | **Documentation (Iter-6)** |  |  | 8% → 70% |  |  |
| 1123 | **Installation Guide** |  | 2007-09-10 A | 8% → 100% | 59d → none |  |
| 1124 | Update Installation Guide |  | 2007-07-24 A | 25% → 100% | 24d → none |  |
| 1125 | Submit to BAH/Adopters | 2007-08-27 A | 2007-08-27 A | 0% → 100% | 0d → none |  |
| 1126 | Review of Installation Guide | 2007-08-28 A | 2007-09-10 A | 0% → 100% | 59d → none |  |
| 1131 | **Release Notes** | 2007-08-24 A | 2007-09-10 A | 0% → 100% | 0d → none |  |
| 1132 | Update Release Notes | 2007-08-24 A | 2007-08-27 A | 0% → 100% | 0d → none |  |
| 1133 | Submit to BAH | 2007-08-27 A | 2007-08-27 A | 0% → 100% | 0d → none |  |
| 1134 | Review of Release Notes | 2007-08-28 A | 2007-09-10 A | 0% → 100% | 59d → none |  |
| 1135 | **End User Guide Draft** |  | 2007-09-10 A | 21% → 100% | 59d → none |  |
| 1136 | Create Draft of End User Guide |  | 2007-08-07 A | 35% → 100% | 14d → none |  |
| 1137 | Submit to BAH (Task 13.15.1) | 2007-08-27 A | 2007-08-27 A | 0% → 100% | 0d → none |  |
| 1138 | Review of End User Guide Draft | 2007-08-28 A | 2007-09-10 A | 0% → 100% | 59d → none |  |
| 1139 | **Final Architecture Guide** | 2007-08-10 A | 2007-08-27 A | 0% → 100% | 0d → none |  |
| 1140 | Update Arch Guide Draft | 2007-08-10 A | 2007-08-16 A | 0% → 100% | 7d → none |  |
| 1141 | Submit to BAH | 2007-08-27 A | 2007-08-27 A | 0% → 100% | 0d → none |  |
| 1142 | **Testing (Iter-6)** |  | 2007-09-10 A | 20% → 100% | 59d → none |  |
| 1143 | **Test Plan** |  | 2007-09-10 A | 13% → 100% | 59d → none |  |
| 1144 | Update Test Plan Document (Task 3.6) |  | 2007-07-19 A | 75% → 100% | 27d → none |  |
| 1145 | Submit to BAH | 2007-08-27 A | 2007-08-27 A | 0% → 100% | 0d → none |  |
| 1146 | Formal Review by BAH | 2007-08-28 A | 2007-09-10 A | 0% → 100% | 59d → none |  |
| 1147 | **RTM** |  | 2007-07-26 A | 50% → 100% | 91d → none |  |
| 1148 | Update RTM |  | 2007-07-26 A | 50% → 100% | 91d → none |  |
| 1149 | **Test Data** |  | 2007-08-28 A | 17% → 100% | 68d → none |  |
| 1150 | Create test data set (Task 3.7) |  | 2007-08-14 A | 25% → 100% | 68d → none |  |
| 1151 | Submit for Review | 2007-08-14 A | 2007-08-14 A | 0% → 100% | 68d → none |  |
| 1152 | Review | 2007-08-15 A | 2007-08-28 A | 0% → 100% | 68d → none |  |
| 1153 | **Testing** |  | 2007-09-10 A | 21% → 100% | 59d → none |  |
| 1154 | Testing |  | 2007-08-21 A | 30% → 100% | 4d → none |  |
| 1155 | Submit Test Results Report (Task 3.8) | 2007-08-27 A | 2007-08-27 A | 0% → 100% | 0d → none |  |
| 1156 | Formal Review of Test results Report | 2007-08-28 A | 2007-09-10 A | 0% → 100% | 59d → none |  |
| 1157 | **BRIDG Review** |  | 2007-08-07 A | 50% → 100% | 83d → none |  |
| 1158 | Internal Review of BRIDG Harmonization Artifacts (as part of AE Domain Modeling Group) |  | 2007-07-31 A | 50% → 100% | 85.5d → none | was named Internal Review of BRIDG Harmonization Artifacts |
| 1159 | Begin Harmonization with BRIDG Model (via harmonization with AE Domain Model) |  | 2007-08-07 A | 50% → 100% | 83d → none | was named Begin Harmonization with BRIDG Model |
| 1160 | **Deployment (Iter-6)** | 2007-08-31 A | 2007-09-13 A | 0% → 100% | 56d → none |  |
| 1161 | Submit prototype code (Task 3.5) | 2007-08-31 A | 2007-08-31 A | 0% → 100% | 56d → none |  |
| 1162 | Deploy Prototype for Iteration 1 at Mayo and WF | 2007-08-31 A | 2007-08-31 A | 0% → 100% | 56d → none |  |
| 1163 | Formal Review of Code by BAH | 2007-08-31 A | 2007-09-13 A | 0% → 100% | 56d → none |  |
| 1164 | Finish Iteration 6 | 2007-08-31 A | 2007-08-31 A | 0% → 100% | 0d → none |  |
| 1165 | **Construction Phase Iteration 7** | 2007-09-03 A |  | 0% → 61% | -10d → 24d |  |
| 1166 | Begin Iteration 7 | 2007-09-03 A | 2007-09-03 A | 0% → 100% | 0d → none |  |
| 1167 | **Iteration Planning (Iter-7)** | 2007-09-03 A | 2007-09-04 A | 0% → 100% | -10d → none |  |
| 1168 | Review and finalize Ucases and Work List for Iteration | 2007-09-03 A | 2007-09-03 A | 0% → 100% | -10d → none |  |
| 1169 | Review and finalize assignments for Iteration | 2007-09-04 A | 2007-09-04 A | 0% → 100% | -10d → none |  |
| 1170 | Create Iteration 7 Planning and Management Workbook | 2007-09-04 A | 2007-09-04 A | 0% → 100% | -10d → none |  |
| 1171 | **Project Management (Iter-7)** | 2007-09-03 A |  | 0% → 90% |  |  |

| ID | Task | Start | Finish | Duration | Complete | Total float | Other |
| --- | --- | --- | --- | --- | --- | --- | --- |
| 1172 | Update Project Plan | 2007-09-05 A | 2007-09-07 A |  | 0% → 100% | 60d → none |  |
| 1173 | **Detailed Transition Phase Plan (Task 3.16)** | 2007-09-03 A |  |  | 0% → 94% |  |  |
| 1174 | Draft Final Transition Phase Plan (3.16) | 2007-09-05 A | 2007-09-11 A |  | 0% → 100% | 43d → none |  |
| 1175 | Review | 2007-09-12 A | 2007-09-25 A |  | 0% → 100% | 43d → none |  |
| 1176 | Update | 2007-09-26 A | 2007-10-02 A |  | 0% → 100% | 43d → none |  |
| 1177 | Submit Final Version of Transition Phase Plan | 2007-10-02 A | 2007-10-02 A |  | 0% → 100% | 43d → none |  |
| 1178 | Daily Scrum Meetings | 2007-09-03 A |  |  | 0% → 90% |  |  |
| 1179 | **Status and Risk Reporting** | 2007-09-05 A |  |  | 0% → 73% |  |  |
| 1180 | Bi-weekly Risk Update in caMP (Task 1.4) | 2007-09-05 A | 2007-09-05 A |  | 0% → 100% | 62d → none |  |
| 1181 | Bi-weekly Risk Matrix Update Meeting | 2007-09-07 A | 2007-09-07 A |  | 0% → 100% | 60d → none |  |
| 1182 | Bi-weekly Risk Update in caMP (Task 1.4) | 2007-09-19 A | 2007-09-19 A |  | 0% → 100% | 52d → none |  |
| 1183 | Bi-weekly Risk Matrix Update Meeting | 2007-09-21 A | 2007-09-21 A |  | 0% → 100% | 50d → none |  |
| 1184 | Bi-weekly Risk Update in caMP (Task 1.4) | 2007-10-03 A | 2007-10-03 A |  | 0% → 100% | 42d → none |  |
| 1185 | Bi-weekly Risk Matrix Update Meeting | 2007-10-05 A | 2007-10-05 A |  | 0% → 100% | 40d → none |  |
| 1186 | Bi-weekly Status Update Meeting with BAH/NCI | 2007-09-14 A | 2007-09-14 A |  | 0% → 100% | 55d → none |  |
| 1187 | Bi-weekly Status Update Meeting with BAH/NCI | 2007-09-28 A | 2007-09-28 A |  | 0% → 100% | 45d → none |  |
| 1191 | **Collaboration Management Activities** | 2007-09-06 A |  |  | 0% → 83% |  |  |
| 1192 | **caAERS-Adopters Weekly Meeting** | 2007-09-06 A |  |  | 0% → 83% |  |  |
| 1193 | caAERS-Adopters Weekly Meeting 1 | 2007-09-06 A | 2007-09-06 A |  | 0% → 100% | 61d → none |  |
| 1194 | caAERS-Adopters Weekly Meeting 2 | 2007-09-13 A | 2007-09-13 A |  | 0% → 100% | 56d → none |  |
| 1195 | caAERS-Adopters Weekly Meeting 3 | 2007-09-20 A | 2007-09-20 A |  | 0% → 100% | 51d → none |  |
| 1196 | caAERS-Adopters Weekly Meeting 4 | 2007-09-27 A | 2007-09-27 A |  | 0% → 100% | 46d → none |  |
| 1197 | caAERS-Adopters Weekly Meeting 5 | 2007-10-04 A | 2007-10-04 A |  | 0% → 100% | 41d → none |  |
| 1199 | **Environment (Iter-7)** | 2007-09-05 A | 2007-09-07 A |  | 0% → 100% | 60d → none |  |
| 1200 | Update Environment | 2007-09-05 A | 2007-09-07 A |  | 0% → 100% | 60d → none |  |
| 1201 | **SCM (Iter-7)** | 2007-09-05 A | 2007-09-11 A |  | 0% → 100% | 58d → none |  |
| 1202 | Manage Repository | 2007-09-05 A | 2007-09-11 A |  | 0% → 100% | 58d → none |  |
| 1203 | **Requirements (Iter-7)** | 2007-09-05 A | 2007-10-05 → 2007-10-08 A (+3d) | 22d → 23d | 0% → 100% | 30d → none |  |
| 1204 | Req'ts Gathering for Iteration | 2007-09-05 A | 2007-09-07 A |  | 0% → 100% | 30d → none |  |
| 1205 | Update UC and SRS Documents | 2007-09-10 A | 2007-09-21 A |  | 0% → 100% | 50d → none |  |
| 1206 | Submit Final Versions of UC and SRS documents (3.1, 3.2, 3.3) | 2007-10-05 → 2007-10-08 A (+3d) | 2007-10-05 → 2007-10-08 A (+3d) |  | 0% → 100% | 41d → none |  |
| 1207 | **Analysis and Design (Iter-7)** | 2007-09-10 A |  |  | 0% → 38% | 25d → 0d |  |
| 1208 | **Design Documents** | 2007-09-10 A |  |  | 0% → 38% | 25d → 0d |  |
| 1209 | Update Design Documents | 2007-09-10 A |  |  | 0% → 75% | 30d → 5d |  |
| 1210 | Deliver Final Design document to BAH (Task 3.4) | 2007-10-01 A |  |  | 0% → 50% | 35d → 10d |  |
| 1211 | Deliver Final UML to BAH (Task 3.3) | 2007-10-01 A |  |  | 0% → 50% | 25d → 0d |  |
| 1213 | **Implementation (Iter-7)** | 2007-09-05 A |  |  | 0% → 64% | -10d → 0d |  |
| 1214 | **Bug Fixes** | 2007-09-05 A |  |  | 0% → 75% | -3d → 0d |  |
| 1215 | Review and assignment of Bugs from prior iteration | 2007-09-05 A | 2007-09-05 A |  | 0% → 100% | -3d → none |  |
| 1216 | Bug Fixes | 2007-09-06 A |  |  | 0% → 74% |  |  |
| 1217 | **Implement Use Cases** | 2007-09-05 A |  |  | 0% → 63% | -10d → 0d |  |
| 1218 | Online Help (cont'd) | 2007-09-05 A |  |  | 0% → 50% |  |  |
| 1221 | Amended Reports | 2007-09-05 A | 2007-09-18 A |  | 0% → 100% | 8d → none |  |
| 1222 | PDF | 2007-09-05 A |  |  | 0% → 75% |  | was named PDF (5-day, DCP SAE Form, Medwatch 3500) |
| 1223 | System Admin (cont'd) | 2007-09-05 A |  |  | 0% → 75% |  |  |
| 1224 | User Provisioning (cont'd) | 2007-09-05 A | 2007-09-11 → 2007-09-18 (+7d) | 5d → 10d | 0% → 38% | 13d → 8d |  |
| 1225 | Validations | 2007-09-05 A |  |  | 0% → 75% |  |  |
| 1226 | Error Messages | 2007-09-05 A |  |  | 0% → 75% |  |  |
| 1227 | Grid Services | 2007-09-05 A | 2007-09-11 A |  | 0% → 100% | 13d → none |  |
| 1228 | Data Push to AdEERS (cont'd) | 2007-09-05 A |  |  | 0% → 10% |  |  |
| 1233 | **Testing (Iter-7)** | 2007-09-05 A |  |  | 0% → 40% |  |  |
| 1234 | **Test Plan** | 2007-09-05 A |  |  | 0% → 25% |  |  |
| 1235 | Update Test Plan Document (Task 3.6) | 2007-09-05 A |  |  | 0% → 75% |  |  |
| 1238 | **RTM** | 2007-09-05 A |  |  | 0% → 75% |  |  |
| 1239 | Update RTM | 2007-09-05 A |  |  | 0% → 75% |  |  |
| 1240 | **Test Data** | 2007-09-05 A |  |  | 0% → 13% |  |  |
| 1241 | Update test data set (Task 3.7) | 2007-09-05 A |  |  | 0% → 25% |  |  |
| 1244 | **Run Tests** | 2007-09-05 A |  |  | 0% → 55% |  |  |
| 1245 | Testing | 2007-09-05 A |  |  | 0% → 75% |  |  |
| 1250 | **Silver Review** | 2007-10-12 A |  |  |  |  |  |
| 1251 | Submit Draft Semantically annotated XMI file (Task 3.11.1) | 2007-10-12 A |  |  | 0% → 50% |  |  |
| 1254 | **Documentation (Iter-7)** | 2007-09-05 A |  |  | 0% → 50% | 14d → 34d |  |
| 1255 | Update End Users Guide | 2007-09-05 A |  |  | 0% → 50% |  |  |
| 1257 | Update Final Versions of Other Project Documents | 2007-09-05 A |  |  | 0% → 50% |  |  |
| 1258 | Submit Final Administrators Guide (Task 3.13) | 2007-10-15 A |  |  | 0% → 50% |  |  |

## Version 18 (saved 2007-10-19)

Note of the change: Includes iterations 8 and 9.

Last finish 2007-11-30 → 2008-02-29 (+91d). Complete tasks 879 → 909.

Added:

| ID | Task | Duration | Start | Finish | Predecessors | Constraint | Resources |
| --- | --- | --- | --- | --- | --- | --- | --- |
| 1249 | Update Versions of Other Project Documents | 15d | 2007-09-05 A | 2007-09-25 A | 1167 |  |  |
| 1250 | Submit Administrators Guide (Task 3.13) | 0d | 2007-10-15 A | 2007-10-15 A | 1249 | must finish on 2007-10-15 |  |
| 1251 | Submit Installation Guide (Task 3.10) | 0d | 2007-10-15 A | 2007-10-15 A | 1249 | must finish on 2007-10-15 |  |
| 1252 | Submit Release Notes (Task 3.14) | 0d | 2007-10-15 A | 2007-10-15 A | 1249 | must finish on 2007-10-15 |  |
| 1258 | **Construction Phase Iteration 8** | 269d | 2006-12-01 | 2007-12-14 |  |  |  |
| 1259 | Begin Iteration 8 | 0d | 2007-10-15 | 2007-10-15 |  | must start on 2007-10-15 |  |
| 1260 | **Iteration Planning (Iter-8)** | 5d | 2007-10-15 | 2007-10-19 |  |  |  |
| 1261 | Review and finalize Ucases and Work List for Iteration | 4d | 2007-10-15 | 2007-10-18 | 1259 |  | Edmond; Ram; Vinay |
| 1262 | Review and finalize assignments for Iteration | 1d | 2007-10-19 | 2007-10-19 | 1261 |  | Edmond; Ram; Vinay |
| 1263 | Create Iteration 8 Planning and Management Workbook | 0d | 2007-10-19 | 2007-10-19 | 1262 |  | Edmond |
| 1264 | **Project Management (Iter-8)** | 35d | 2007-10-15 | 2007-11-30 |  |  |  |
| 1265 | Update Project Plan | 1d | 2007-10-22 | 2007-10-22 | 1260 |  | Edmond |
| 1266 | Daily Scrums | 35d | 2007-10-15 | 2007-11-30 | 1259 |  | Team |
| 1267 | **Status and Risk Reporting** | 31d | 2007-10-19 | 2007-11-30 |  |  |  |
| 1268 | Bi-weekly Risk Update in caMP (Task 1.4) | 1d | 2007-10-19 | 2007-10-19 |  | start no earlier than 2007-10-19 | Edmond |
| 1269 | Bi-weekly Risk Update in caMP (Task 1.4) | 1d | 2007-11-02 | 2007-11-02 |  | start no earlier than 2007-11-02 | Edmond |
| 1270 | Bi-weekly Risk Update in caMP (Task 1.4) | 1d | 2007-11-16 | 2007-11-16 |  | start no earlier than 2007-11-16 |  |
| 1271 | Weekly Status Update Meeting with BAH/NCI | 1d | 2007-10-19 | 2007-10-19 |  | start no earlier than 2007-10-19 |  |
| 1272 | Weekly Status Update Meeting with BAH/NCI | 1d | 2007-10-26 | 2007-10-26 |  | start no earlier than 2007-10-26 | Edmond |
| 1273 | Weekly Status Update Meeting with BAH/NCI | 1d | 2007-11-02 | 2007-11-02 |  | start no earlier than 2007-11-02 | Edmond |
| 1274 | Weekly Status Update Meeting with BAH/NCI | 1d | 2007-11-09 | 2007-11-09 |  | start no earlier than 2007-11-09 |  |
| 1275 | Weekly Status Update Meeting with BAH/NCI | 1d | 2007-11-16 | 2007-11-16 |  | start no earlier than 2007-11-16 |  |
| 1276 | Weekly Status Update Meeting with BAH/NCI | 1d | 2007-11-23 | 2007-11-23 |  | start no earlier than 2007-11-23 |  |
| 1277 | Iteration Status Report (Task 1.3) | 1d | 2007-11-30 | 2007-11-30 |  | start no earlier than 2007-11-30 | Edmond |
| 1278 | Iteration Risk Matrix Update (Task 1.3) | 1d | 2007-11-30 | 2007-11-30 | 1277SS |  | Edmond |
| 1279 | **Collaboration Management Activities** | 26d | 2007-10-18 | 2007-11-22 |  |  |  |
| 1280 | **caAERS-Adopters Weekly Meeting** | 26d | 2007-10-18 | 2007-11-22 |  |  |  |
| 1281 | caAERS-Adopters Weekly Meeting 1 | 1d | 2007-10-18 | 2007-10-18 |  | start no earlier than 2007-10-18 |  |
| 1282 | caAERS-Adopters Weekly Meeting 2 | 1d | 2007-10-25 | 2007-10-25 |  | start no earlier than 2007-10-25 |  |
| 1283 | caAERS-Adopters Weekly Meeting 3 | 1d | 2007-11-01 | 2007-11-01 |  | start no earlier than 2007-11-01 |  |
| 1284 | caAERS-Adopters Weekly Meeting 4 | 1d | 2007-11-08 | 2007-11-08 |  | start no earlier than 2007-11-08 |  |
| 1285 | caAERS-Adopters Weekly Meeting 5 | 1d | 2007-11-15 | 2007-11-15 |  | start no earlier than 2007-11-15 |  |
| 1286 | caAERS-Adopters Weekly Meeting 6 | 1d | 2007-11-22 | 2007-11-22 |  | start no earlier than 2007-11-22 |  |
| 1287 | **Environment (Iter-8)** | 3d | 2007-10-22 | 2007-10-24 |  |  |  |
| 1288 | Update Environment | 3d | 2007-10-22 | 2007-10-24 | 1262 |  | Vinay |
| 1289 | **SCM (Iter-8)** | 5d | 2007-10-22 | 2007-10-26 |  |  |  |
| 1290 | Manage Repository | 5d | 2007-10-22 | 2007-10-26 | 1262 |  | Rhett |
| 1291 | **Requirements (Iter-8)** | 34d | 2007-10-15 | 2007-11-29 |  |  |  |
| 1292 | **Req'ts Gathering for Iteration** | 24d | 2007-10-15 | 2007-11-15 | 1259 |  | Sean |
| 1293 | **Import AE** | 7d | 2007-10-25 | 2007-11-02 |  |  |  |
| 1294 | Elaboration Meeting 1 | 1d | 2007-10-25 | 2007-10-25 |  | start no earlier than 2007-10-25 | Sean |
| 1295 | Elaboration Meeting 2 | 1d | 2007-11-01 | 2007-11-01 |  | start no earlier than 2007-11-01 | Sean |
| 1296 | Add UC and req'ts to UC Doc and SRS | 1d | 2007-11-02 | 2007-11-02 | 1294, 1295 |  | Sean |
| 1297 | **caAERS-AdEERS** | 24d | 2007-10-15 | 2007-11-15 |  |  |  |
| 1298 | Elaboration Meeting 1 (SRS and XML schema review) | 1d | 2007-10-15 | 2007-10-15 |  |  |  |
| 1299 | Elaboration Meeting 2 (review of XSD and WSDL) | 1d | 2007-10-25 | 2007-10-25 |  | start no earlier than 2007-10-25 |  |
| 1300 | Elaboration Meeting 3 (review final input xml schema) | 1d | 2007-11-15 | 2007-11-15 |  | start no earlier than 2007-11-15 |  |
| 1301 | CCTS - caAERS to PSC AE triggered Schedule Change | 10d | 2007-10-15 | 2007-10-26 |  |  |  |
| 1302 | CCTS-Review Reliable Messaging Interface Specs | 5d | 2007-10-15 | 2007-10-19 |  |  |  |
| 1303 | CCTS-Review CAM ITS Specs | 5d | 2007-10-15 | 2007-10-19 |  |  |  |
| 1304 | Update UC and SRS Documents | 10d | 2007-11-16 | 2007-11-29 | 1292 |  | Sean |
| 1305 | Submit Final Versions of UC and SRS documents (3.1, 3.2, 3.3) | 0d | 2007-11-29 | 2007-11-29 | 1304 | start no earlier than 2007-11-26 | Edmond |
| 1306 | **Analysis and Design (Iter-8)** | 20d | 2007-11-16 | 2007-12-13 |  |  |  |
| 1307 | **Design Documents** | 20d | 2007-11-16 | 2007-12-13 |  |  |  |
| 1308 | Create Import AE Design Document | 10d | 2007-11-16 | 2007-11-29 | 1292 |  | Krikor |
| 1309 | Create caAERS-AdEERS design document | 10d | 2007-11-30 | 2007-12-13 | 1308 |  | Ram; Srini |
| 1310 | Deliver Final Design document to BAH (Task 3.4) | 0d | 2007-12-13 | 2007-12-13 | 1309 | start no earlier than 2007-10-01 | Edmond |
| 1311 | Deliver Final UML to BAH (Task 3.3) | 0d | 2007-11-29 | 2007-11-29 | 1308 | start no earlier than 2007-10-01 | Edmond |
| 1312 | Formal Review by BAH | 10d | 2007-11-30 | 2007-12-13 | 1311 |  | BAH |
| 1313 | **Implementation (Iter-8)** | 28d | 2007-10-22 | 2007-11-28 |  |  |  |
| 1314 | **Bug Fixes** | 25d | 2007-10-22 | 2007-11-23 |  |  |  |
| 1315 | Bug Fixes | 25d | 2007-10-22 | 2007-11-23 | 1260 |  |  |
| 1316 | **Implement Use Cases** | 28d | 2007-10-22 | 2007-11-28 | 1260 |  |  |
| 1317 | **caAERS-AdEERS electronic submission using AdEERS web service** | 10d | 2007-11-15 | 2007-11-28 | 1299 |  |  |
| 1318 | Get finalized XML schema from CTIS | 0d | 2007-11-15 | 2007-11-15 |  | start no earlier than 2007-11-15 |  |
| 1319 | Update caAERS based on finalized input XML schema and Design from CTIS | 10d | 2007-11-15 | 2007-11-28 | 1318 |  |  |
| 1320 | Import AE data | 15d | 2007-11-05 | 2007-11-23 | 1293 |  |  |
| 1321 | Password reset & user provisioning enhancements | 8d | 2007-10-22 | 2007-10-31 |  |  |  |
| 1322 | DCP non-CCOPs Expedited Report Triggers | 15d | 2007-10-22 | 2007-11-09 |  |  |  |
| 1323 | Online Help (cont'd) | 25d | 2007-10-22 | 2007-11-23 |  |  |  |
| 1324 | AE Triggered Schedule Changet (CCTS - Sprint 3) | 15d | 2007-10-22 | 2007-11-09 |  |  |  |
| 1325 | Implement new schemas from CAM ITS (CCTS - Sprint 3 and 4) | 15d | 2007-11-05 | 2007-11-23 |  | start no earlier than 2007-11-05 |  |
| 1326 | Implement new reliable messaging interface (CCTS Sprint 3 and 4) | 15d | 2007-11-05 | 2007-11-23 |  | start no earlier than 2007-11-05 |  |
| 1327 | **Testing (Iter-8)** | 38d | 2007-10-22 | 2007-12-12 |  |  |  |
| 1328 | **Test Plan** | 20d | 2007-10-22 | 2007-11-16 |  |  |  |
| 1329 | Update Test Plan Document (Task 3.6) | 10d | 2007-10-22 | 2007-11-02 | 1262 |  | Ram |
| 1330 | Submit to BAH | 0d | 2007-11-02 | 2007-11-02 | 1329 | start no earlier than 2007-10-01 | Edmond |
| 1331 | Formal Review by BAH | 10d | 2007-11-05 | 2007-11-16 | 1330 |  | BAH |
| 1332 | **RTM** | 10d | 2007-10-22 | 2007-11-02 |  |  |  |
| 1333 | Update RTM | 10d | 2007-10-22 | 2007-11-02 | 1262 |  | Sean |
| 1334 | **Test Data** | 10d | 2007-10-22 | 2007-11-02 |  |  |  |
| 1335 | Update test data set | 10d | 2007-10-22 | 2007-11-02 | 1260 |  | Renee; David |
| 1336 | **Run Tests** | 38d | 2007-10-22 | 2007-12-12 |  |  |  |
| 1337 | Testing | 28d | 2007-10-22 | 2007-11-28 | 1262 |  |  |
| 1338 | Submit Final Test Results Report (Task 3.8) | 0d | 2007-11-28 | 2007-11-28 | 1337 |  | Edmond |
| 1339 | Formal Review of Test results Report | 10d | 2007-11-29 | 2007-12-12 | 1338 |  | BAH |
| 1340 | **BRIDG Review (Cont'd)** | 15d | 2007-10-19 | 2007-11-08 |  |  |  |
| 1341 | Harmonization with BRIDG Model | 15d | 2007-10-19 | 2007-11-08 |  | start no earlier than 2007-10-19 | Sean |
| 1342 | **Documentation (Iter-8)** | 30d | 2007-10-22 | 2007-11-30 |  |  |  |
| 1343 | Update End Users Guide | 25d | 2007-10-22 | 2007-11-23 | 1260 |  |  |
| 1344 | Update Versions of Other Project Documents | 25d | 2007-10-22 | 2007-11-23 | 1260 |  |  |
| 1345 | Submit Administrators Guide (Task 3.13) | 0d | 2007-11-30 | 2007-11-30 | 1344 | must finish on 2007-11-30 |  |
| 1346 | Submit Installation Guide (Task 3.10) | 0d | 2007-11-30 | 2007-11-30 | 1344 | must finish on 2007-11-30 |  |
| 1347 | Submit Release Notes (Task 3.14) | 0d | 2007-11-30 | 2007-11-30 | 1344 | must finish on 2007-11-30 |  |
| 1348 | **Deployment (Iter-8)** | 10d | 2007-11-30 | 2007-12-14 |  |  |  |
| 1349 | Submit Code Base (Task 3.5) | 0d | 2007-11-30 | 2007-11-30 | 1313 | finish no earlier than 2007-11-30 | Ram |
| 1350 | Formal Review of Code by BAH | 10d | 2007-12-03 | 2007-12-14 | 1349 |  | BAH |
| 1351 | Files Ready for Deployment at Mayo and WF | 0d | 2007-11-30 | 2007-11-30 | 1349 |  | Vinay; Mayo; WF |
| 1352 | Finish Iteration 8 | 0d | 2007-11-30 | 2007-11-30 | 1348 | must finish on 2007-11-30 |  |
| 1353 | CCTS - Code Freeze Target Date | 0d | 2006-12-01 | 2006-12-01 |  |  |  |
| 1354 | **Construction Phase Iteration 9** | 294d? | 2006-12-01 | 2008-01-18 |  |  |  |
| 1355 | Begin Iteration 9 | 0d | 2007-12-03 | 2007-12-03 |  | must start on 2007-12-03 |  |
| 1356 | **Iteration Planning (Iter-9)** | 4d | 2007-12-03 | 2007-12-06 |  |  |  |
| 1357 | Review and finalize Ucases and Work List for Iteration | 3d | 2007-12-03 | 2007-12-05 | 1355 |  | Edmond; Ram; Vinay |
| 1358 | Review and finalize assignments for Iteration | 1d | 2007-12-06 | 2007-12-06 | 1357 |  | Edmond; Ram; Vinay |
| 1359 | Create Iteration 9 Planning and Management Workbook | 0d | 2007-12-06 | 2007-12-06 | 1358 |  | Edmond |
| 1360 | **Project Management (Iter-9)** | 25d | 2007-12-03 | 2008-01-04 |  |  |  |
| 1361 | Update Project Plan | 3d | 2007-12-07 | 2007-12-11 | 1356 |  | Edmond |
| 1362 | Update Final Transition Phase Plan (3.16) | 10d | 2007-12-07 | 2007-12-20 | 1358 |  | Edmond |
| 1363 | Daily Scrum Meetings | 25d | 2007-12-03 | 2008-01-04 | 1355 |  | Edmond |
| 1364 | **Status and Risk Reporting** | 21d | 2007-12-07 | 2008-01-04 |  |  |  |
| 1365 | Bi-weekly Risk Update in caMP (Task 1.4) | 1d | 2007-12-07 | 2007-12-07 |  | start no earlier than 2007-12-07 | Edmond |
| 1366 | Bi-weekly Risk Update in caMP (Task 1.4) | 1d | 2007-12-21 | 2007-12-21 |  | start no earlier than 2007-12-21 | Edmond |
| 1367 | Weekly Status Update Meeting with BAH/NCI | 1d | 2007-12-07 | 2007-12-07 |  | start no earlier than 2007-12-07 | Edmond |
| 1368 | Weekly Status Update Meeting with BAH/NCI | 1d | 2007-12-14 | 2007-12-14 |  | start no earlier than 2007-12-14 | Edmond |
| 1369 | Weekly Status Update Meeting with BAH/NCI | 1d | 2007-12-21 | 2007-12-21 |  | start no earlier than 2007-12-21 | Edmond |
| 1370 | Weekly Status Update Meeting with BAH/NCI | 1d | 2007-12-28 | 2007-12-28 |  | start no earlier than 2007-12-28 | Edmond |
| 1371 | Weekly Status Update Meeting with BAH/NCI | 1d | 2008-01-04 | 2008-01-04 |  | start no earlier than 2008-01-04 | Edmond |
| 1372 | Iteration Status Report (Task 1.3) | 1d | 2008-01-04 | 2008-01-04 |  | start no earlier than 2008-01-04 | Edmond |
| 1373 | Iteration Risk Matrix Update (Task 1.3) | 1d | 2008-01-04 | 2008-01-04 | 1372SS |  | Edmond |
| 1374 | **Collaboration Management Activities** | 21d | 2007-12-06 | 2008-01-03 |  |  |  |
| 1375 | **caAERS-Adopters Weekly Meeting** | 21d | 2007-12-06 | 2008-01-03 |  |  |  |
| 1376 | caAERS-Adopters Weekly Meeting 1 | 1d | 2007-12-06 | 2007-12-06 |  | start no earlier than 2007-12-06 |  |
| 1377 | caAERS-Adopters Weekly Meeting 2 | 1d | 2007-12-13 | 2007-12-13 |  | start no earlier than 2007-12-13 |  |
| 1378 | caAERS-Adopters Weekly Meeting 3 | 1d | 2007-12-20 | 2007-12-20 |  | start no earlier than 2007-12-20 |  |
| 1379 | caAERS-Adopters Weekly Meeting 4 | 1d | 2007-12-27 | 2007-12-27 |  | start no earlier than 2007-12-27 |  |
| 1380 | caAERS-Adopters Weekly Meeting 5 | 1d | 2008-01-03 | 2008-01-03 |  | start no earlier than 2008-01-03 |  |
| 1381 | **Environment (Iter-9)** | 3d | 2007-12-07 | 2007-12-11 |  |  |  |
| 1382 | Update Environment | 3d | 2007-12-07 | 2007-12-11 | 1358 |  | Vinay |
| 1383 | **SCM (Iter-9)** | 5d | 2007-12-07 | 2007-12-13 |  |  |  |
| 1384 | Manage Repository | 5d | 2007-12-07 | 2007-12-13 | 1358 |  | Biju |
| 1385 | **Requirements (Iter-9)** | 13d | 2007-12-06 | 2007-12-25 |  |  |  |
| 1386 | **Req'ts Gathering for Iteration** | 6d | 2007-12-06 | 2007-12-17 | 1358 |  |  |
| 1387 | Review Import AE requirements and update if needed | 5d | 2007-12-07 | 2007-12-13 |  |  | Sean |
| 1388 | **caAERS-AdEERS** | 6d | 2007-12-06 | 2007-12-17 |  |  | Srini |
| 1389 | Web service specifications review (CTIS) | 0d | 2007-12-17 | 2007-12-17 |  | start no earlier than 2007-12-17 |  |
| 1390 | Dev instance of AdEERS Web Service available (CTIS) | 0d | 2007-12-06 | 2007-12-06 |  |  |  |
| 1391 | CCTS - Sprint 5 Planning meeting | 1d | 2007-12-07 | 2007-12-07 |  | start no earlier than 2007-12-03 |  |
| 1392 | Update UC and SRS Documents | 7d | 2007-12-17 | 2007-12-25 | 1388 |  | Sean |
| 1393 | Submit Final Versions of UC and SRS documents (3.1, 3.2, 3.3) | 0d | 2007-12-25 | 2007-12-25 | 1392 | start no earlier than 2007-10-05 | Edmond |
| 1394 | **Analysis and Design (Iter-9)** | 15d | 2007-12-17 | 2008-01-04 |  |  |  |
| 1395 | **Design Documents** | 15d | 2007-12-17 | 2008-01-04 |  |  |  |
| 1396 | Update Import AE Design Document (if needed) | 5d | 2007-12-17 | 2007-12-21 | 1386 |  | Krikor |
| 1397 | Deliver Final Design document to BAH (Task 3.4) | 0d | 2007-12-21 | 2007-12-21 | 1396 | start no earlier than 2007-10-01 | Edmond |
| 1398 | Deliver Final UML to BAH (Task 3.3) | 0d | 2007-12-21 | 2007-12-21 | 1396 | start no earlier than 2007-10-01 | Edmond |
| 1399 | Formal Review by BAH | 10d | 2007-12-24 | 2008-01-04 | 1398 |  | BAH |
| 1400 | **Implementation (Iter-9)** | 286d? | 2006-12-01 | 2008-01-08 |  |  |  |
| 1401 | **Bug Fixes** | 20d | 2006-12-01 | 2006-12-29 |  |  |  |
| 1402 | Bug Fixes | 20d | 2006-12-01 | 2006-12-29 |  |  |  |
| 1403 | **Implement Use Cases** | 23d? | 2007-12-07 | 2008-01-08 | 1356 |  |  |
| 1404 | Online Help (cont'd) | 10d | 2007-12-07 | 2007-12-20 |  |  |  |
| 1405 | Import AE data (cont'd) | 23d | 2007-12-07 | 2008-01-08 |  |  |  |
| 1406 | caAERS-AdEERS electronic submission (cont'd) | 7d | 2007-12-07 | 2007-12-17 |  |  |  |
| 1407 | CCTS - Implement caGrid SSO and Delegation | 1d? | 2007-12-07 | 2007-12-07 |  |  |  |
| 1408 | **Testing (Iter-9)** | 30d | 2007-12-07 | 2008-01-17 |  |  |  |
| 1409 | **Test Plan** | 15d | 2007-12-07 | 2007-12-27 |  |  |  |
| 1410 | Update Test Plan Document (Task 3.6) | 5d | 2007-12-07 | 2007-12-13 | 1358 |  | Ram |
| 1411 | Submit to BAH | 0d | 2007-12-13 | 2007-12-13 | 1410 | start no earlier than 2007-10-01 | Edmond |
| 1412 | Formal Review by BAH | 10d | 2007-12-14 | 2007-12-27 | 1411 |  | BAH |
| 1413 | **RTM** | 5d | 2007-12-07 | 2007-12-13 |  |  |  |
| 1414 | Update RTM | 5d | 2007-12-07 | 2007-12-13 | 1358 |  | Sean |
| 1415 | **Test Data** | 10d | 2007-12-07 | 2007-12-20 |  |  |  |
| 1416 | Update test data set (Task 3.7) | 10d | 2007-12-07 | 2007-12-20 | 1356 |  | Renee; David |
| 1417 | **Run Tests** | 30d | 2007-12-07 | 2008-01-17 |  |  |  |
| 1418 | Testing | 20d | 2007-12-07 | 2008-01-03 | 1358 |  | Renee; David; Natasha |
| 1419 | Submit Final Test Results Report (Task 3.8) | 0d | 2008-01-03 | 2008-01-03 | 1418 |  | Edmond |
| 1420 | Formal Review of Test results Report | 10d | 2008-01-04 | 2008-01-17 | 1419 |  | BAH |
| 1426 | Update | 5d | 2006-12-29 | 2007-01-05 | 1425 |  |  |
| 1427 | Submit Semantically annotated XMI file (Task 3.11.1) | 0d | 2007-01-05 | 2007-01-05 | 1426 |  |  |
| 1428 | Submit Full CDE Use Report (Task 3.11.2) | 0d | 2007-01-05 | 2007-01-05 | 1427 |  |  |
| 1429 | Compatibility Review Submission Package (Task 3.12) | 0d | 2007-01-05 | 2007-01-05 | 1428 |  |  |
| 1430 | **Documentation (Iter-9)** | 15d | 2007-12-07 | 2007-12-27 |  |  |  |
| 1431 | Update End Users Guide | 15d | 2007-12-07 | 2007-12-27 | 1356 |  |  |
| 1437 | **Deployment (Iter-9)** | 10d | 2008-01-04 | 2008-01-18 |  |  |  |
| 1438 | Submit Final Code Base (Task 3.5) | 0d | 2008-01-04 | 2008-01-04 | 1400 | must finish on 2008-01-04 | Ram |
| 1439 | Formal Review of Code by BAH | 10d | 2008-01-07 | 2008-01-18 | 1438 |  | BAH |
| 1440 | Files Ready for Deployment at Mayo and WF | 0d | 2008-01-04 | 2008-01-04 | 1438 |  | Vinay; Mayo; WF |
| 1441 | Finish Iteration 9 | 0d | 2008-01-04 | 2008-01-04 | 1437 | must finish on 2008-01-04 |  |
| 1442 | caAERS Code Freeze | 0d | 2008-01-04 | 2008-01-04 | 1441 |  |  |
| 1445 | Begin Transition Phase | 0d | 2008-01-07 | 2008-01-07 |  | must start on 2008-01-07 |  |
| 1446 | **CCTS Related Activities** | 20d | 2008-01-07 | 2008-02-01 |  |  |  |
| 1447 | **Deployment support** | 20d | 2008-01-07 | 2008-02-01 |  |  |  |
| 1448 | caAERS-CCTS deployment support in preparation for CCTS 1.0 release | 15d | 2008-01-07 | 2008-01-25 |  |  |  |
| 1449 | Assist with Packaging of CCTS | 15d | 2008-01-07 | 2008-01-25 |  |  |  |
| 1450 | Submit CCTS Deployment Report | 0d | 2008-02-01 | 2008-02-01 | 1449 | must finish on 2008-02-01 |  |
| 1451 | **Testing Support** | 20d | 2008-01-07 | 2008-02-01 |  |  |  |
| 1452 | CCTS-caAERS Testing | 20d | 2008-01-07 | 2008-02-01 |  |  |  |
| 1453 | Submit caAERS portion of CCTS Testing Report | 0d | 2008-02-01 | 2008-02-01 | 1452 |  |  |
| 1454 | **Documentation Support** | 20d | 2008-01-07 | 2008-02-01 |  |  |  |
| 1455 | Complete caAERS-CCTS Documents for CCTS 1.0 | 10d | 2008-01-07 | 2008-01-18 |  |  |  |
| 1456 | Submit Final caAERS portion of CCTS Documentation | 0d | 2008-02-01 | 2008-02-01 | 1455 | must finish on 2008-02-01 |  |
| 1457 | CCTS 1.0 Official Release | 0d | 2008-02-01 | 2008-02-01 |  | start no earlier than 2008-02-01 |  |
| 1458 | **caAERS Transition at Adopter Sites (see detailed Transition Phase Plan)** | 37d | 2008-01-07 | 2008-02-26 |  |  |  |

Removed: 1228 Data Push to AdEERS (cont'd); 1242 Submit for Review; 1273 Silver Review (Final); 1274 Complete Semantically annotated XMI file (Task 3.11.1); 1275 Full CDE Use Report (Task 3.11.2); 1276 Compatibility Review Submission Packaged (Task 3.12)

Changed:

| ID | Task | Start | Finish | Duration | Complete | Total float | Predecessors | Other |
| --- | --- | --- | --- | --- | --- | --- | --- | --- |
| 1 | **caAERS Application Development Project** |  | 2007-11-30 → 2008-02-29 (+91d) | 259d → 324d? | 92% → 81% |  |  |  |
| 303 | **Construction Phase** | 2007-02-01 A → 2006-12-01 A (-62d) | 2007-10-29 → 2008-01-18 (+81d) | 193d → 294d? | 94% → 81% | 24d → 30d |  |  |
| 1165 | **Construction Phase Iteration 7** |  |  |  | 61% → 94% | 24d → 89d |  |  |
| 1171 | **Project Management (Iter-7)** |  | 2007-10-19 A |  | 90% → 100% | 30d → none |  |  |
| 1173 | **Detailed Transition Phase Plan (Task 3.16)** |  | 2007-10-19 A |  | 94% → 100% | 30d → none |  |  |
| 1178 | Daily Scrum Meetings |  | 2007-10-19 A |  | 90% → 100% | 30d → none |  |  |
| 1179 | **Status and Risk Reporting** |  | 2007-10-15 A |  | 73% → 100% | 34d → none |  |  |
| 1188 | Bi-weekly Status Update Meeting with BAH/NCI | 2007-10-12 A | 2007-10-12 A |  | 0% → 100% | 35d → none |  |  |
| 1189 | Iteration Status Report (Task 1.3) | 2007-10-15 A | 2007-10-15 A |  | 0% → 100% | 34d → none |  |  |
| 1190 | Iteration Risk Matrix Update (Task 1.3) | 2007-10-15 A | 2007-10-15 A |  | 0% → 100% | 34d → none |  |  |
| 1191 | **Collaboration Management Activities** |  | 2007-10-11 A |  | 83% → 100% | 36d → none |  |  |
| 1192 | **caAERS-Adopters Weekly Meeting** |  | 2007-10-11 A |  | 83% → 100% | 36d → none |  |  |
| 1198 | caAERS-Adopters Weekly Meeting 6 | 2007-10-11 A | 2007-10-11 A |  | 0% → 100% | 36d → none |  |  |
| 1207 | **Analysis and Design (Iter-7)** |  |  |  | 38% → 63% | 0d → 100d |  |  |
| 1208 | **Design Documents** |  |  |  | 38% → 63% | 0d → 100d |  |  |
| 1211 | Deliver Final UML to BAH (Task 3.3) |  | 2007-10-01 A |  | 50% → 100% | 0d → none |  |  |
| 1212 | Formal Review by BAH | 2007-10-01 A |  |  | 0% → 50% | 0d → 100d |  |  |
| 1213 | **Implementation (Iter-7)** |  |  |  | 64% → 97% | 0d → 100d |  |  |
| 1214 | **Bug Fixes** |  | 2007-10-03 A |  | 75% → 100% | 0d → none |  |  |
| 1216 | Bug Fixes |  | 2007-10-03 A |  | 74% → 100% | -3d → none |  |  |
| 1217 | **Implement Use Cases** |  |  |  | 63% → 97% | 0d → 100d |  |  |
| 1219 | Expedited AE Flow and Enhancements (TAC, manual selection of reports, etc.) |  | 2007-10-05 A |  | 3% → 100% | -5d → none |  |  |
| 1220 | Manage AE's page enhancements |  | 2007-09-13 A |  | 11% → 100% | 11d → none |  |  |
| 1222 | PDF |  | 2007-09-11 A |  | 75% → 100% | 13d → none |  |  |
| 1223 | System Admin (cont'd) |  | 2007-09-25 A |  | 75% → 100% | 3d → none |  |  |
| 1224 | User Provisioning (cont'd) |  | 2007-09-18 A |  | 38% → 100% | 8d → none |  |  |
| 1225 | Validations |  | 2007-10-12 A |  | 75% → 100% | -10d → none |  |  |
| 1226 | Error Messages |  | 2007-10-12 A |  | 75% → 100% | -10d → none |  |  |
| 1232 | **Testing (Iter-7)** |  |  |  | 40% → 96% | 25d → 90d |  |  |
| 1233 | **Test Plan** |  |  |  | 25% → 83% | 35d → 100d |  |  |
| 1234 | Update Test Plan Document (Task 3.6) |  | 2007-09-11 A |  | 75% → 100% | 48d → none |  |  |
| 1235 | Submit to BAH | 2007-10-01 A | 2007-10-01 A |  | 0% → 100% | 35d → none |  |  |
| 1236 | Formal Review by BAH | 2007-10-01 A |  |  | 0% → 75% | 35d → 100d |  |  |
| 1237 | **RTM** |  | 2007-09-11 A |  | 75% → 100% | 58d → none |  |  |
| 1238 | Update RTM |  | 2007-09-11 A |  | 75% → 100% | 58d → none |  |  |
| 1239 | **Test Data** |  | 2007-10-12 → 2007-09-18 A (-24d) | 28d → 10d | 13% → 100% | 35d → none |  |  |
| 1240 | Update test data set (Task 3.7) |  | 2007-09-18 A |  | 25% → 100% | 43d → none |  |  |
| 1241 | **Run Tests** |  | 2007-10-26 A |  | 55% → 100% | 25d → none |  |  |
| 1242 | Testing |  | 2007-10-12 A |  | 75% → 100% | 25d → none |  |  |
| 1243 | Submit Final Test Results Report (Task 3.8) | 2007-10-12 A | 2007-10-12 A |  | 0% → 100% | 25d → none |  |  |
| 1244 | Formal Review of Test results Report | 2007-10-15 A | 2007-10-26 A |  | 0% → 100% | 25d → none |  |  |
| 1245 | **BRIDG Review (Cont'd)** | 2007-10-01 A | 2007-10-12 A |  | 0% → 100% | 0d → none |  | was named BRIDG Review (Final) |
| 1246 | Harmonization with BRIDG Model | 2007-10-01 A | 2007-10-12 A |  | 0% → 100% | 0d → none |  |  |
| 1247 | **Documentation (Iter-7)** |  | 2007-10-15 A |  | 50% → 100% | 34d → none |  |  |
| 1248 | Update End Users Guide |  | 2007-09-25 A |  | 50% → 100% | 48d → none |  |  |
| 1253 | **Deployment (Iter-7)** | 2007-10-15 A |  |  |  | -11d → 89d |  |  |
| 1254 | Submit Final Code Base (Task 3.5) | 2007-10-15 A | 2007-10-15 A |  | 0% → 100% | -11d → none |  |  |
| 1256 | Files Ready for Deployment at Mayo and WF | 2007-10-15 A | 2007-10-15 A |  | 0% → 100% | -1d → none |  |  |
| 1257 | Finish Iteration 7 | 2007-10-12 A | 2007-10-12 A |  | 0% → 100% | -11d → none |  |  |
| 1421 | **Silver Review** | 2007-10-12 A → 2006-12-08 (-308d) | 2007-10-12 → 2007-01-05 (-280d) | 0d → 19d |  | 25d → 300d |  |  |
| 1422 | Submit Draft Semantically annotated XMI file (Task 3.11.1) | 2007-10-12 A → 2006-12-08 (-308d) | 2007-10-12 → 2006-12-08 (-308d) |  | 50% → 0% | 25d → 300d | 1245 → none | constraint start no earlier than 2007-07-16 → start no earlier than 2006-12-08 |
| 1423 | Submit Draft Full CDE Use Report (Task 3.11.2) | 2007-10-12 → 2006-12-08 (-308d) | 2007-10-12 → 2006-12-08 (-308d) |  |  | 25d → 300d |  |  |
| 1424 | Submit Draft Compatibility Review Submission Packaged (Task 3.12) | 2007-10-12 → 2006-12-08 (-308d) | 2007-10-12 → 2006-12-08 (-308d) |  |  | 25d → 300d |  |  |
| 1425 | Review | 2007-10-01 → 2006-12-08 (-297d) | 2007-10-12 → 2006-12-28 (-288d) | 10d → 14d |  | 35d → 300d | Submit for Review → 1424 | resources BAH; Mayo; WF → none |
| 1432 | Submit Final End Users Guide (Task 3.15.2) | 2007-09-25 → 2007-12-27 (+93d) | 2007-09-25 → 2007-12-27 (+93d) |  |  | 48d → 46d | 1248 → 1431 |  |
| 1433 | Update Final Versions of Other Project Documents | 2007-09-05 A → 2007-12-07 (+93d) | 2007-09-25 → 2007-12-27 (+93d) |  | 50% → 0% | 14d → 46d | 1167 → 1356 |  |
| 1434 | Submit Final Administrators Guide (Task 3.13) | 2007-10-15 A → 2007-12-27 (+73d) | 2007-10-15 → 2007-12-27 (+73d) |  | 50% → 0% | 0d → 46d |  | constraint must finish on 2007-10-15 → none |
| 1435 | Submit Final Installation Guide (Task 3.10) | 2007-10-15 → 2007-12-27 (+73d) | 2007-10-15 → 2007-12-27 (+73d) |  |  | 0d → 46d |  | constraint must finish on 2007-10-15 → none |
| 1436 | Submit Final Release Notes (Task 3.14) | 2007-10-15 → 2007-12-27 (+73d) | 2007-10-15 → 2007-12-27 (+73d) |  |  | 0d → 46d |  | constraint must finish on 2007-10-15 → none |
| 1443 | Finish Construction Phase | 2007-10-15 → 2008-01-04 (+81d) | 2007-10-15 → 2008-01-04 (+81d) |  |  |  |  | constraint must finish on 2007-10-15 → must finish on 2008-01-04 |
| 1444 | **Transition Phase** | 2007-10-16 → 2008-01-07 (+83d) | 2007-11-30 → 2008-02-29 (+91d) | 34d → 40d |  |  |  |  |
| 1459 | Deployment Plan (Task 4.1) | 2007-10-16 → 2008-01-07 (+83d) | 2007-10-17 → 2008-01-08 (+83d) |  |  | 2d → 3d |  |  |
| 1460 | Deployment | 2007-10-18 → 2008-01-09 (+83d) | 2007-10-31 → 2008-01-29 (+90d) | 10d → 15d |  | 2d → 3d |  |  |
| 1461 | Deployment Report (Task 4.2) | 2007-10-16 → 2008-01-07 (+83d) | 2007-10-16 → 2008-01-07 (+83d) |  |  | 33d → 39d |  |  |
| 1462 | Code Release Updates (if needed) (Task 4.3) | 2007-11-01 → 2008-01-30 (+90d) | 2007-11-28 → 2008-02-26 (+90d) |  |  | 2d → 3d |  |  |
| 1463 | Guide Updates (if needed) | 2007-10-16 → 2008-01-07 (+83d) | 2007-11-05 → 2008-01-25 (+81d) |  |  | 19d → 25d |  |  |
| 1464 | **Project Closing Activities** | 2007-11-19 → 2008-02-18 (+91d) | 2007-11-30 → 2008-02-29 (+91d) |  |  |  |  |  |
| 1465 | Lessons Learned (Task 1.6) | 2007-11-19 → 2008-02-28 (+101d) | 2007-11-30 → 2008-02-28 (+90d) | 10d → 1d |  | 0d → 1d |  | constraint none → start no earlier than 2008-02-28 |
| 1466 | Archiving | 2007-11-19 → 2008-02-18 (+91d) | 2007-11-30 → 2008-02-29 (+91d) |  |  |  |  | constraint none → start no earlier than 2008-02-18 |
| 1467 | Contract Closeout | 2007-11-19 → 2008-02-25 (+98d) | 2007-11-30 → 2008-02-29 (+91d) | 10d → 5d |  |  |  | constraint none → start no earlier than 2008-02-25 |

| ID | Task | Start | Finish | Predecessors | Other |
| --- | --- | --- | --- | --- | --- |
| 1468 | Finish Transition Phase | 2007-11-30 → 2008-02-29 (+91d) | 2007-11-30 → 2008-02-29 (+91d) | Silver Review (Final), 1464, 1462, 1463 → 1464, 1462, 1463 | constraint finish no later than 2007-12-01 → must finish on 2008-02-29 |

## Version 19 (saved 2007-10-24)

Note of the change: Updated to address feedback from BAH

Last finish stays 2008-02-29.

Changed:

| ID | Task | Start | Finish | Duration | Total float | Predecessors | Other |
| --- | --- | --- | --- | --- | --- | --- | --- |
| 1 | **caAERS Application Development Project** |  |  | 324d? → 324d |  |  |  |
| 303 | **Construction Phase** | 2006-12-01 A → 2007-02-01 A (+62d) |  | 294d? → 252d |  |  |  |
| 1258 | **Construction Phase Iteration 8** | 2006-12-01 → 2007-10-15 (+318d) |  | 269d → 45d | 55d → -5d |  |  |
| 1291 | **Requirements (Iter-8)** |  | 2007-11-29 → 2007-11-15 (-14d) | 34d → 24d | 0d → 8d |  |  |
| 1301 | CCTS - caAERS to PSC AE triggered Schedule Change |  | 2007-10-26 → 2007-10-19 (-7d) | 10d → 5d | 10d → 75d |  |  |
| 1304 | Update UC and SRS Documents | 2007-11-16 → 2007-11-02 (-14d) | 2007-11-29 → 2007-11-08 (-21d) | 10d → 5d | 0d → 8d | 1292 → 1295, 1292 |  |
| 1305 | Submit Final Versions of UC and SRS documents (3.1, 3.2, 3.3) | 2007-11-29 → 2007-11-08 (-21d) | 2007-11-29 → 2007-11-08 (-21d) |  | 0d → 8d |  | constraint start no earlier than 2007-11-26 → none |
| 1309 | Create caAERS-AdEERS design document (if needed) | 2007-11-30 → 2007-11-16 (-14d) | 2007-12-13 → 2007-11-29 (-14d) |  | 56d → 66d | 1308 → 1292, 1308 | was named Create caAERS-AdEERS design document |
| 1310 | Deliver Final Design document to BAH (Task 3.4) | 2007-12-13 → 2007-11-29 (-14d) | 2007-12-13 → 2007-11-29 (-14d) |  | 56d → 66d |  |  |
| 1353 | CCTS - Code Freeze Target Date | 2006-12-01 → 2007-12-03 (+367d) | 2006-12-01 → 2007-12-03 (+367d) |  | 324d → 0d |  | constraint none → must finish on 2007-12-03 |
| 1354 | **Construction Phase Iteration 9** | 2006-12-01 → 2007-12-03 (+367d) |  | 294d? → 35d | 30d → -2d |  |  |
| 1400 | **Implementation (Iter-9)** | 2006-12-01 → 2007-12-03 (+367d) |  | 286d? → 27d |  |  |  |
| 1401 | **Bug Fixes** | 2006-12-01 → 2007-12-03 (+367d) | 2006-12-29 → 2007-12-28 (+364d) |  | 264d → 5d |  |  |
| 1402 | Bug Fixes | 2006-12-01 → 2007-12-03 (+367d) | 2006-12-29 → 2007-12-28 (+364d) |  | 264d → 5d | none → 1355 |  |
| 1403 | **Implement Use Cases** |  |  | 23d? → 23d |  |  |  |
| 1407 | CCTS - Implement caGrid SSO and Delegation |  | 2007-12-07 → 2007-12-17 (+10d) | 1d? → 7d | 20d → 14d |  |  |
| 1421 | **Silver Review** | 2006-12-08 → 2007-12-08 (+365d) | 2007-01-05 → 2008-01-03 (+363d) |  | 300d → 41d |  |  |
| 1422 | Submit Draft Semantically annotated XMI file (Task 3.11.1) | 2006-12-08 → 2007-12-08 (+365d) | 2006-12-08 → 2007-12-08 (+365d) |  | 300d → 41d |  | constraint start no earlier than 2006-12-08 → start no earlier than 2007-12-08 |
| 1423 | Submit Draft Full CDE Use Report (Task 3.11.2) | 2006-12-08 → 2007-12-08 (+365d) | 2006-12-08 → 2007-12-08 (+365d) |  | 300d → 41d |  |  |
| 1424 | Submit Draft Compatibility Review Submission Packaged (Task 3.12) | 2006-12-08 → 2007-12-08 (+365d) | 2006-12-08 → 2007-12-08 (+365d) |  | 300d → 41d |  |  |
| 1425 | Review | 2006-12-08 → 2007-12-10 (+367d) | 2006-12-28 → 2007-12-27 (+364d) |  | 300d → 41d |  |  |
| 1426 | Update | 2006-12-29 → 2007-12-28 (+364d) | 2007-01-05 → 2008-01-03 (+363d) |  | 300d → 41d |  |  |
| 1427 | Submit Semantically annotated XMI file (Task 3.11.1) | 2007-01-05 → 2008-01-03 (+363d) | 2007-01-05 → 2008-01-03 (+363d) |  | 300d → 41d |  |  |
| 1428 | Submit Full CDE Use Report (Task 3.11.2) | 2007-01-05 → 2008-01-03 (+363d) | 2007-01-05 → 2008-01-03 (+363d) |  | 300d → 41d |  |  |
| 1429 | Compatibility Review Submission Package (Task 3.12) | 2007-01-05 → 2008-01-03 (+363d) | 2007-01-05 → 2008-01-03 (+363d) |  | 300d → 41d |  |  |

## Version 20 (saved 2007-11-07)

Note of the change: Updated Iteration 9 SRS and UC doc submission date.

Last finish stays 2008-02-29.

Changed:

| ID | Task | Start | Finish | Duration | Total float | Other |
| --- | --- | --- | --- | --- | --- | --- |
| 1385 | **Requirements (Iter-9)** |  | 2007-12-25 → 2007-12-21 (-4d) | 13d → 11d | 6d → 8d |  |
| 1392 | Update UC and SRS Documents |  | 2007-12-25 → 2007-12-21 (-4d) | 7d → 5d | 0d → 2d |  |
| 1393 | Submit Final Versions of UC and SRS documents (3.1, 3.2, 3.3) | 2007-12-25 → 2007-12-21 (-4d) | 2007-12-25 → 2007-12-21 (-4d) |  | 0d → 2d | constraint start no earlier than 2007-10-05 → finish no earlier than 2007-12-21 |

## Version 21 (saved 2007-12-03)

Note of the change: SVN-Revision: 3680

Last finish stays 2008-02-29. Complete tasks 909 → 964.

Changed:

| ID | Task | Start | Finish | Complete | Total float |
| --- | --- | --- | --- | --- | --- |
| 1 | **caAERS Application Development Project** |  |  | 81% → 88% |  |
| 303 | **Construction Phase** |  |  | 81% → 90% |  |
| 1210 | Deliver Final Design document to BAH (Task 3.4) |  | 2007-10-01 A | 50% → 100% | 110d → none |
| 1258 | **Construction Phase Iteration 8** | 2007-10-15 A |  | 0% → 81% | -5d → 55d |
| 1259 | Begin Iteration 8 | 2007-10-15 A | 2007-10-15 A | 0% → 100% | 0d → none |
| 1260 | **Iteration Planning (Iter-8)** | 2007-10-15 A | 2007-10-19 A | 0% → 100% | -5d → none |
| 1261 | Review and finalize Ucases and Work List for Iteration | 2007-10-15 A | 2007-10-18 A | 0% → 100% | -5d → none |
| 1262 | Review and finalize assignments for Iteration | 2007-10-19 A | 2007-10-19 A | 0% → 100% | -5d → none |
| 1263 | Create Iteration 8 Planning and Management Workbook | 2007-10-19 A | 2007-10-19 A | 0% → 100% | -5d → none |
| 1264 | **Project Management (Iter-8)** | 2007-10-15 A | 2007-11-30 A | 0% → 100% | 65d → none |
| 1265 | Update Project Plan | 2007-10-22 A | 2007-10-22 A | 0% → 100% | 94d → none |
| 1266 | Daily Scrums | 2007-10-15 A | 2007-11-30 A | 0% → 100% | 65d → none |
| 1267 | **Status and Risk Reporting** | 2007-10-19 A | 2007-11-30 A | 0% → 100% | 65d → none |
| 1268 | Bi-weekly Risk Update in caMP (Task 1.4) | 2007-10-19 A | 2007-10-19 A | 0% → 100% | 95d → none |
| 1269 | Bi-weekly Risk Update in caMP (Task 1.4) | 2007-11-02 A | 2007-11-02 A | 0% → 100% | 85d → none |
| 1270 | Bi-weekly Risk Update in caMP (Task 1.4) | 2007-11-16 A | 2007-11-16 A | 0% → 100% | 75d → none |
| 1271 | Weekly Status Update Meeting with BAH/NCI | 2007-10-19 A | 2007-10-19 A | 0% → 100% | 95d → none |
| 1272 | Weekly Status Update Meeting with BAH/NCI | 2007-10-26 A | 2007-10-26 A | 0% → 100% | 90d → none |
| 1273 | Weekly Status Update Meeting with BAH/NCI | 2007-11-02 A | 2007-11-02 A | 0% → 100% | 85d → none |
| 1274 | Weekly Status Update Meeting with BAH/NCI | 2007-11-09 A | 2007-11-09 A | 0% → 100% | 80d → none |
| 1275 | Weekly Status Update Meeting with BAH/NCI | 2007-11-16 A | 2007-11-16 A | 0% → 100% | 75d → none |
| 1276 | Weekly Status Update Meeting with BAH/NCI | 2007-11-23 A | 2007-11-23 A | 0% → 100% | 70d → none |
| 1277 | Iteration Status Report (Task 1.3) | 2007-11-30 A | 2007-11-30 A | 0% → 100% | 65d → none |
| 1278 | Iteration Risk Matrix Update (Task 1.3) | 2007-11-30 A | 2007-11-30 A | 0% → 100% | 65d → none |
| 1279 | **Collaboration Management Activities** | 2007-10-18 A | 2007-11-22 A | 0% → 100% | 71d → none |
| 1280 | **caAERS-Adopters Weekly Meeting** | 2007-10-18 A | 2007-11-22 A | 0% → 100% | 71d → none |
| 1281 | caAERS-Adopters Weekly Meeting 1 | 2007-10-18 A | 2007-10-18 A | 0% → 100% | 96d → none |
| 1282 | caAERS-Adopters Weekly Meeting 2 | 2007-10-25 A | 2007-10-25 A | 0% → 100% | 91d → none |
| 1283 | caAERS-Adopters Weekly Meeting 3 | 2007-11-01 A | 2007-11-01 A | 0% → 100% | 86d → none |
| 1284 | caAERS-Adopters Weekly Meeting 4 | 2007-11-08 A | 2007-11-08 A | 0% → 100% | 81d → none |
| 1285 | caAERS-Adopters Weekly Meeting 5 | 2007-11-15 A | 2007-11-15 A | 0% → 100% | 76d → none |
| 1286 | caAERS-Adopters Weekly Meeting 6 | 2007-11-22 A | 2007-11-22 A | 0% → 100% | 71d → none |
| 1287 | **Environment (Iter-8)** | 2007-10-22 A | 2007-10-24 A | 0% → 100% | 92d → none |
| 1288 | Update Environment | 2007-10-22 A | 2007-10-24 A | 0% → 100% | 92d → none |
| 1289 | **SCM (Iter-8)** | 2007-10-22 A |  | 0% → 75% |  |
| 1290 | Manage Repository | 2007-10-22 A |  | 0% → 75% |  |
| 1291 | **Requirements (Iter-8)** | 2007-10-15 A |  | 0% → 19% | 8d → 76d |
| 1304 | Update UC and SRS Documents | 2007-11-02 A | 2007-11-08 A | 0% → 100% | 8d → none |
| 1305 | Submit Final Versions of UC and SRS documents (3.1, 3.2, 3.3) | 2007-11-08 A | 2007-11-08 A | 0% → 100% | 8d → none |
| 1306 | **Analysis and Design (Iter-8)** | 2007-11-16 A |  | 0% → 67% |  |
| 1307 | **Design Documents** | 2007-11-16 A |  | 0% → 67% |  |
| 1308 | Create Import AE Design Document | 2007-11-16 A | 2007-11-29 A | 0% → 100% | 56d → none |
| 1309 | Create caAERS-AdEERS design document (if needed) | 2007-11-16 A | 2007-11-29 A | 0% → 100% | 66d → none |
| 1310 | Deliver Final Design document to BAH (Task 3.4) | 2007-11-29 A | 2007-11-29 A | 0% → 100% | 66d → none |
| 1311 | Deliver Final UML to BAH (Task 3.3) | 2007-11-29 A | 2007-11-29 A | 0% → 100% | 56d → none |
| 1313 | **Implementation (Iter-8)** | 2007-10-22 A |  | 0% → 75% | -8d → 67d |
| 1314 | **Bug Fixes** | 2007-10-22 A | 2007-11-23 A | 0% → 100% | -5d → none |
| 1315 | Bug Fixes | 2007-10-22 A | 2007-11-23 A | 0% → 100% | -5d → none |
| 1316 | **Implement Use Cases** | 2007-10-22 A |  | 0% → 70% | -8d → 67d |
| 1317 | **caAERS-AdEERS electronic submission using AdEERS web service** | 2007-11-15 A | 2007-11-28 A | 0% → 100% | -8d → none |
| 1318 | Get finalized XML schema from CTIS | 2007-11-15 A | 2007-11-15 A | 0% → 100% | -8d → none |
| 1319 | Update caAERS based on finalized input XML schema and Design from CTIS | 2007-11-15 A | 2007-11-28 A | 0% → 100% | -8d → none |
| 1320 | Import AE data | 2007-11-05 A | 2007-11-23 A | 0% → 100% | -5d → none |
| 1321 | Password reset & user provisioning enhancements | 2007-10-22 A |  | 0% → 75% | 12d → 87d |
| 1322 | DCP non-CCOPs Expedited Report Triggers | 2007-10-22 A |  | 0% → 75% | 5d → 80d |
| 1323 | Online Help (cont'd) | 2007-10-22 A | 2007-11-23 A | 0% → 100% | -5d → none |
| 1324 | AE Triggered Schedule Changet (CCTS - Sprint 3) | 2007-10-22 A | 2007-11-09 A | 0% → 100% | 5d → none |
| 1327 | **Testing (Iter-8)** | 2007-10-22 A | 2007-12-12 A | 0% → 100% | 57d → none |
| 1328 | **Test Plan** | 2007-10-22 A | 2007-11-16 A | 0% → 100% | 75d → none |
| 1329 | Update Test Plan Document (Task 3.6) | 2007-10-22 A | 2007-11-02 A | 0% → 100% | 75d → none |
| 1330 | Submit to BAH | 2007-11-02 A | 2007-11-02 A | 0% → 100% | 75d → none |
| 1331 | Formal Review by BAH | 2007-11-05 A | 2007-11-16 A | 0% → 100% | 75d → none |
| 1332 | **RTM** | 2007-10-22 A | 2007-11-02 A | 0% → 100% | 85d → none |
| 1333 | Update RTM | 2007-10-22 A | 2007-11-02 A | 0% → 100% | 85d → none |
| 1334 | **Test Data** | 2007-10-22 A | 2007-11-02 A | 0% → 100% | 85d → none |
| 1335 | Update test data set | 2007-10-22 A | 2007-11-02 A | 0% → 100% | 85d → none |
| 1336 | **Run Tests** | 2007-10-22 A | 2007-12-12 A | 0% → 100% | 57d → none |
| 1337 | Testing | 2007-10-22 A | 2007-11-28 A | 0% → 100% | 57d → none |
| 1338 | Submit Final Test Results Report (Task 3.8) | 2007-11-28 A | 2007-11-28 A | 0% → 100% | 57d → none |
| 1339 | Formal Review of Test results Report | 2007-11-29 A | 2007-12-12 A | 0% → 100% | 57d → none |

| ID | Task | Start | Finish | Complete | Total float |
| --- | --- | --- | --- | --- | --- |
| 1340 | **BRIDG Review (Cont'd)** | 2007-10-19 A | 2007-11-08 A | 0% → 100% | 81d → none |
| 1341 | Harmonization with BRIDG Model | 2007-10-19 A | 2007-11-08 A | 0% → 100% | 81d → none |
| 1342 | **Documentation (Iter-8)** | 2007-10-22 A | 2007-11-30 A | 0% → 100% | 5d → none |
| 1343 | Update End Users Guide | 2007-10-22 A | 2007-11-23 A | 0% → 100% | 70d → none |
| 1344 | Update Versions of Other Project Documents | 2007-10-22 A | 2007-11-23 A | 0% → 100% | 5d → none |
| 1345 | Submit Administrators Guide (Task 3.13) | 2007-11-30 A | 2007-11-30 A | 0% → 100% | 0d → none |
| 1346 | Submit Installation Guide (Task 3.10) | 2007-11-30 A | 2007-11-30 A | 0% → 100% | 0d → none |
| 1347 | Submit Release Notes (Task 3.14) | 2007-11-30 A | 2007-11-30 A | 0% → 100% | 0d → none |
| 1348 | **Deployment (Iter-8)** | 2007-11-30 A |  |  | -10d → 55d |
| 1349 | Submit Code Base (Task 3.5) | 2007-11-30 A | 2007-11-30 A | 0% → 100% | -10d → none |
| 1351 | Files Ready for Deployment at Mayo and WF | 2007-11-30 A | 2007-11-30 A | 0% → 100% | 0d → none |
| 1352 | Finish Iteration 8 | 2007-11-30 A | 2007-11-30 A | 0% → 100% | -10d → none |
| 1353 | CCTS - Code Freeze Target Date | 2007-12-03 A |  | 0% → 50% |  |
| 1354 | **Construction Phase Iteration 9** | 2007-12-03 A |  |  | -2d → 30d |
| 1355 | Begin Iteration 9 | 2007-12-03 A | 2007-12-03 A | 0% → 100% | 0d → none |
