# caAERS-ProjectSchedule-DRAFT-Version2

How a schedule from MS Project changed from version to version. A marks actual dates.

## Version 1 (saved 2006-12-15, file caAERS-ProjectSchedule-DRAFT-Version2.mpp)

Note of the change: SVN-Revision: 16

| ID | WBS | Task | Duration | Start | Finish | Predecessors | Total float | Constraint |
| --- | --- | --- | --- | --- | --- | --- | --- | --- |
| 1 | 1 | **caAERS Application Development Project** | 212d | 2006-12-01 | 2007-09-26 |  | 0d |  |
| 2 | 1.1 | **Elaboration Phase** | 43d | 2006-12-01 | 2007-02-01 |  | 14d |  |
| 3 | 1.1.1 | **Iteration 1** | 22d | 2006-12-01 | 2007-01-03 |  | 14d |  |
| 4 | 1.1.1.1 | **Project Management** | 22d | 2006-12-01 | 2007-01-03 |  | 20d |  |
| 5 | 1.1.1.1.1 | **Inception and Kickoff Planning** | 6d | 2006-12-01 | 2006-12-08 |  | 198d |  |
| 6 |  | Draft Project Management Plan | 3d | 2006-12-01 | 2006-12-05 |  | 209d |  |
| 7 |  | High-Level Schedule and Assignments | 3d | 2006-12-01 | 2006-12-05 |  | 209d |  |
| 8 |  | Crosscutting WS Project Kickoff Meeting | 1d | 2006-12-06 | 2006-12-06 |  | 195d | start no earlier than 2006-12-06 |
| 9 |  | Kickoff Meeting Notes (Task 1.5) | 1d | 2006-12-08 | 2006-12-08 | 8FS+1d | 195d |  |
| 10 | 1.1.1.1.2 | **Project Management Plan Baseline (Task 1.1)** | 11d | 2006-12-11 | 2006-12-26 |  | 195d |  |
| 11 |  | Add Details for Elaboration Phase to Project Plan | 3d | 2006-12-11 | 2006-12-13 | 9 | 195d |  |
| 12 |  | Resource Load and Level Project Schedule for Elaboration Phase | 1d | 2006-12-14 | 2006-12-14 | 11 | 195d |  |
| 13 |  | Adopters/Collaborators Review | 5d | 2006-12-15 | 2006-12-21 | 12 | 195d |  |
| 14 |  | Updates | 2d | 2006-12-22 | 2006-12-26 | 13 | 195d |  |
| 15 |  | Submit to BAH | 0d | 2006-12-26 | 2006-12-26 | 14 | 195d |  |
| 16 | 1.1.1.1.3 | **Communications Plan (Task 1.2)** | 11d | 2006-12-01 | 2006-12-15 |  | 201d |  |
| 17 |  | Developers Draft | 5d | 2006-12-01 | 2006-12-07 |  | 201d |  |
| 18 |  | Adopters/Collaborators Review | 5d | 2006-12-08 | 2006-12-14 | 17 | 201d |  |
| 19 |  | Developers Update | 1d | 2006-12-15 | 2006-12-15 | 18 | 201d |  |
| 20 |  | Submit to BAH | 0d | 2006-12-15 | 2006-12-15 | 19 | 201d |  |
| 21 | 1.1.1.1.4 | **Adopters Collaboration Plan** | 11d | 2006-12-01 | 2006-12-15 |  | 201d |  |
| 22 |  | Developers Draft | 5d | 2006-12-01 | 2006-12-07 |  | 201d |  |
| 23 |  | Adopters/Collaborators Review | 5d | 2006-12-08 | 2006-12-14 | 22 | 201d |  |
| 24 |  | Developers Update | 1d | 2006-12-15 | 2006-12-15 | 23 | 201d |  |
| 25 |  | Submit to BAH | 0d | 2006-12-15 | 2006-12-15 | 24 | 201d |  |
| 26 | 1.1.1.1.5 | **Risk and Issue Management Plan** | 11d | 2006-12-01 | 2006-12-15 |  | 201d |  |
| 27 |  | Developers Draft | 5d | 2006-12-01 | 2006-12-07 |  | 201d |  |
| 28 |  | Adopters/Collaborators Review | 5d | 2006-12-08 | 2006-12-14 | 27 | 201d |  |
| 29 |  | Developers Update | 1d | 2006-12-15 | 2006-12-15 | 28 | 201d |  |
| 30 |  | Submit to BAH | 0d | 2006-12-15 | 2006-12-15 | 29 | 201d |  |
| 31 | 1.1.1.1.6 | **caAERS Vision and Scope Document (Task 1.8)** | 11d | 2006-12-06 | 2006-12-20 |  | 198d |  |
| 32 |  | Developers Draft | 5d | 2006-12-06 | 2006-12-12 |  | 198d | start no earlier than 2006-12-06 |
| 33 |  | Adopters/Collaborators Review | 5d | 2006-12-13 | 2006-12-19 | 32 | 198d |  |
| 34 |  | Developers Update | 1d | 2006-12-20 | 2006-12-20 | 33 | 198d |  |
| 35 |  | Submit to BAH | 0d | 2006-12-20 | 2006-12-20 | 34 | 198d |  |
| 36 | 1.1.1.1.7 | **Test and QA Mgmt Plan Document (Task 2.6)** | 9d | 2006-12-18 | 2006-12-29 |  | 192d |  |
| 37 |  | Developer Draft | 3d | 2006-12-18 | 2006-12-20 |  | 192d | start no earlier than 2006-12-18 |
| 38 |  | Adopters/Collobators Review | 5d | 2006-12-21 | 2006-12-28 | 37 | 192d |  |
| 39 |  | Developer Update | 1d | 2006-12-29 | 2006-12-29 | 38 | 192d |  |
| 40 |  | Submit to BAH | 0d | 2006-12-29 | 2006-12-29 | 39 | 192d |  |
| 41 | 1.1.1.1.8 | **Change Control Board Plan and Charter (Task 2.10)** | 11d | 2006-12-18 | 2007-01-03 |  | 190d |  |
| 42 |  | Developer Draft | 5d | 2006-12-18 | 2006-12-22 |  | 190d | start no earlier than 2006-12-18 |
| 43 |  | Adopters/Collobators Review | 5d | 2006-12-26 | 2007-01-02 | 42 | 190d |  |
| 44 |  | Developer Update | 1d | 2007-01-03 | 2007-01-03 | 43 | 190d |  |
| 45 |  | Submit to BAH | 0d | 2007-01-03 | 2007-01-03 | 44 | 190d |  |
| 46 | 1.1.1.1.9 | **caAERS Face-to-Face Meeting Planning** | 4d | 2006-12-01 | 2006-12-06 |  | 208d |  |
| 47 |  | Set Date | 1d | 2006-12-01 | 2006-12-01 |  | 208d |  |
| 48 |  | Draft Agenda | 1d | 2006-12-04 | 2006-12-04 | 47 | 208d |  |
| 49 |  | Review by Adopters/Collaborators | 2d | 2006-12-05 | 2006-12-06 | 48 | 208d |  |
| 50 |  | Finalize F2F Meeting Agenda and Details | 0d | 2006-12-06 | 2006-12-06 | 49 | 208d |  |
| 51 | 1.1.1.1.10 | **Weekly Team/Developers Meeting** | 11d | 2006-12-11 | 2006-12-26 |  | 195d |  |
| 52 |  | Weekly Team Meeting 1 | 1d | 2006-12-11 | 2006-12-11 |  | 205d | start no earlier than 2006-12-11 |
| 53 |  | Weekly Team Meeting 2 | 1d | 2006-12-18 | 2006-12-18 |  | 200d | start no earlier than 2006-12-18 |
| 54 |  | Weekly Team Meeting 3 | 1d | 2006-12-26 | 2006-12-26 |  | 195d | start no earlier than 2006-12-25 |
| 55 | 1.1.1.1.11 | **Status and Risk Reporting** | 10d | 2006-12-15 | 2006-12-29 |  | 10d |  |
| 56 |  | Bi-weekly Risk Update in caMP (Task 1.4) | 0d | 2006-12-15 | 2006-12-15 |  | 202d | start no earlier than 2006-12-15 |
| 57 |  | Bi-weekly Risk Matrix Update Meeting | 1d | 2006-12-22 | 2006-12-22 |  | 196d | start no earlier than 2006-12-22 |
| 58 |  | Bi-weekly Risk Update in caMP (Task 1.4) | 0d | 2006-12-29 | 2006-12-29 |  | 193d | start no earlier than 2006-12-29 |
| 59 |  | Bi-weekly Status Update Meeting with BAH/NCI | 1d | 2006-12-29 | 2006-12-29 |  | 192d | start no earlier than 2006-12-29 |
| 60 |  | Monthly Status Report (Task 1.3) | 0d | 2006-12-29 | 2006-12-29 |  | 193d | start no earlier than 2006-12-29 |
| 61 |  | Monthly Risk Matrix Update (Task 1.3) | 0d | 2006-12-29 | 2006-12-29 |  | 0d | must finish on 2006-12-29 |
| 62 |  | Adopters Collaboration Report (Task 1.7) | 0d | 2006-12-29 | 2006-12-29 |  | 193d | start no earlier than 2006-12-29 |
| 63 | 1.1.1.1.12 | **Collaboration Management Activities** | 10d | 2006-12-14 | 2006-12-28 |  | 193d |  |
| 64 |  | Bi-Weekly AE SIG Meeting | 1d | 2006-12-14 | 2006-12-14 |  | 202d | start no earlier than 2006-12-14 |
| 65 |  | Bi-Weekly AE SIG Meeting | 1d | 2006-12-28 | 2006-12-28 |  | 193d | start no earlier than 2006-12-28 |
| 66 | 1.1.1.2 | **Set up Development Environment** | 7d | 2006-12-01 | 2006-12-11 |  | 205d |  |
| 67 |  | Set up SCM (Subversion) | 2d | 2006-12-01 | 2006-12-04 |  | 207d |  |
| 68 |  | Create Build Scripts (using Ant) | 3d | 2006-12-05 | 2006-12-07 | 67 | 207d |  |
| 69 |  | Decide on Tech Stack | 2d | 2006-12-01 | 2006-12-04 |  | 205d |  |
| 70 |  | Prepare Development Server | 5d | 2006-12-05 | 2006-12-11 | 69 | 205d |  |

| ID | WBS | Task | Duration | Start | Finish | Predecessors | Total float |
| --- | --- | --- | --- | --- | --- | --- | --- |
| 71 | 1.1.1.3 | **Requirements** | 20d | 2006-12-01 | 2006-12-29 |  | 191d |
| 72 |  | Review Existing R1 Prototype and Requirements | 5d | 2006-12-01 | 2006-12-07 |  | 191d |
| 73 |  | Select Use Cases | 1d | 2006-12-08 | 2006-12-08 | 72 | 191d |
| 74 |  | Assign Use Cases | 1d | 2006-12-11 | 2006-12-11 | 73 | 191d |
| 75 | 1.1.1.3.4 | **Review and Update Use Case Documents (Task 2.1)** | 8d | 2006-12-12 | 2006-12-21 | 74 | 197d |
| 76 | 1.1.1.3.4.1 | **Create Study/Protocol** | 8d | 2006-12-12 | 2006-12-21 |  | 197d |
| 77 |  | Developer draft | 5d | 2006-12-12 | 2006-12-18 |  | 197d |
| 78 |  | Adopters/Collaborators Review | 2d | 2006-12-19 | 2006-12-20 | 77 | 197d |
| 79 |  | Developers Update | 1d | 2006-12-21 | 2006-12-21 | 78 | 197d |
| 80 |  | Submit to BAH (Task 2.1) | 0d | 2006-12-21 | 2006-12-21 | 79 | 197d |
| 81 | 1.1.1.3.4.2 | **Create Participant** | 8d | 2006-12-12 | 2006-12-21 |  | 197d |
| 82 |  | Developer draft | 5d | 2006-12-12 | 2006-12-18 |  | 197d |
| 83 |  | Adopters/Collaborators Review | 2d | 2006-12-19 | 2006-12-20 | 82 | 197d |
| 84 |  | Developers Update | 1d | 2006-12-21 | 2006-12-21 | 83 | 197d |
| 85 |  | Submit to BAH (Task 2.1) | 0d | 2006-12-21 | 2006-12-21 | 84 | 197d |
| 86 | 1.1.1.3.4.3 | **Create AE** | 8d | 2006-12-12 | 2006-12-21 |  | 197d |
| 87 |  | Developer draft | 5d | 2006-12-12 | 2006-12-18 |  | 197d |
| 88 |  | Adopters/Collaborators Review | 2d | 2006-12-19 | 2006-12-20 | 87 | 197d |
| 89 |  | Developers Update | 1d | 2006-12-21 | 2006-12-21 | 88 | 197d |
| 90 |  | Submit to BAH (Task 2.1) | 0d | 2006-12-21 | 2006-12-21 | 89 | 197d |
| 91 | 1.1.1.3.4.4 | **Login** | 7d | 2006-12-12 | 2006-12-20 |  | 198d |
| 92 |  | Developer draft | 5d | 2006-12-12 | 2006-12-18 |  | 198d |
| 93 |  | Adopters/Collaborators Review | 1d | 2006-12-19 | 2006-12-19 | 92 | 198d |
| 94 |  | Developers Update | 1d | 2006-12-20 | 2006-12-20 | 93 | 198d |
| 95 |  | Submit to BAH (Task 2.1) | 0d | 2006-12-20 | 2006-12-20 | 94 | 198d |
| 96 | 1.1.1.3.5 | **SRS document (Task 2.2)** | 11d | 2006-12-14 | 2006-12-29 | 75SS+2d | 192d |
| 97 |  | Developer draft | 5d | 2006-12-14 | 2006-12-20 |  | 192d |
| 98 |  | Adopter review | 5d | 2006-12-21 | 2006-12-28 | 97 | 192d |
| 99 |  | Developer update | 1d | 2006-12-29 | 2006-12-29 | 98 | 192d |
| 100 |  | Deliver SRS document to BAH (Task 2.2) | 0d | 2006-12-29 | 2006-12-29 | 99 | 192d |
| 101 | 1.1.1.4 | **Analysis and Design** | 10d | 2006-12-18 | 2007-01-02 | 74SS+5d | 191d |
| 102 | 1.1.1.4.1 | **Design Documents (Task 2.4)** | 8d | 2006-12-18 | 2006-12-28 |  | 193d |
| 103 | 1.1.1.4.1.1 | **Create Study/Protocol Design Documents** | 8d | 2006-12-18 | 2006-12-28 |  | 193d |
| 104 |  | Develop appropriate UML Artifacts | 5d | 2006-12-18 | 2006-12-22 |  | 196d |
| 105 |  | Developer draft | 5d | 2006-12-18 | 2006-12-22 |  | 193d |
| 106 |  | Adopters/Collaborators Review | 2d | 2006-12-26 | 2006-12-27 | 105 | 193d |
| 107 |  | Developers Update | 1d | 2006-12-28 | 2006-12-28 | 106 | 193d |
| 108 |  | Submit to BAH (Task 2.3 and 2.4) | 0d | 2006-12-28 | 2006-12-28 | 107 | 193d |
| 109 | 1.1.1.4.1.2 | **Create Participant Design Documents** | 8d | 2006-12-18 | 2006-12-28 |  | 193d |
| 110 |  | Develop appropriate UML Artifacts | 5d | 2006-12-18 | 2006-12-22 |  | 196d |
| 111 |  | Developer draft | 5d | 2006-12-18 | 2006-12-22 |  | 193d |
| 112 |  | Adopters/Collaborators Review | 2d | 2006-12-26 | 2006-12-27 | 111 | 193d |
| 113 |  | Developers Update | 1d | 2006-12-28 | 2006-12-28 | 112 | 193d |
| 114 |  | Submit to BAH (Task 2.3 and 2.4) | 0d | 2006-12-28 | 2006-12-28 | 113 | 193d |
| 115 | 1.1.1.4.1.3 | **Create AE Design Documents** | 8d | 2006-12-18 | 2006-12-28 |  | 193d |
| 116 |  | Develop appropriate UML Artifacts | 5d | 2006-12-18 | 2006-12-22 |  | 196d |
| 117 |  | Developer draft | 5d | 2006-12-18 | 2006-12-22 |  | 193d |
| 118 |  | Adopters/Collaborators Review | 2d | 2006-12-26 | 2006-12-27 | 117 | 193d |
| 119 |  | Developers Update | 1d | 2006-12-28 | 2006-12-28 | 118 | 193d |
| 120 |  | Submit to BAH (Task 2.3 and 2.4) | 0d | 2006-12-28 | 2006-12-28 | 119 | 193d |
| 121 | 1.1.1.4.1.4 | **Login Design Documents** | 8d | 2006-12-18 | 2006-12-28 |  | 193d |
| 122 |  | Develop appropriate UML Artifacts | 5d | 2006-12-18 | 2006-12-22 |  | 196d |
| 123 |  | Developer draft | 5d | 2006-12-18 | 2006-12-22 |  | 193d |
| 124 |  | Adopters/Collaborators Review | 2d | 2006-12-26 | 2006-12-27 | 123 | 193d |
| 125 |  | Developers Update | 1d | 2006-12-28 | 2006-12-28 | 124 | 193d |
| 126 |  | Submit to BAH (Task 2.3 and 2.4) | 0d | 2006-12-28 | 2006-12-28 | 125 | 193d |
| 127 | 1.1.1.4.1.5 | **UI/Mockups Design Documents** | 8d | 2006-12-18 | 2006-12-28 |  | 193d |
| 128 |  | Developer Draft | 5d | 2006-12-18 | 2006-12-22 |  | 193d |
| 129 |  | Adopters/Collaborators Review | 2d | 2006-12-26 | 2006-12-27 | 128 | 193d |
| 130 |  | Developers Update | 1d | 2006-12-28 | 2006-12-28 | 129 | 193d |
| 131 |  | Submit to BAH (Task 2.4) | 0d | 2006-12-28 | 2006-12-28 | 130 | 193d |
| 132 | 1.1.1.4.2 | **ESB** | 7d | 2006-12-18 | 2006-12-27 |  | 194d |
| 133 |  | Evalutate technologies by prototyping | 7d | 2006-12-18 | 2006-12-27 |  | 194d |
| 134 | 1.1.1.4.3 | **Grid service** | 7d | 2006-12-18 | 2006-12-27 |  | 194d |
| 135 |  | Evaluate caGrid 1.0 service infrastructure | 7d | 2006-12-18 | 2006-12-27 |  | 194d |
| 136 | 1.1.1.4.4 | **Database** | 3d | 2006-12-18 | 2006-12-20 |  | 198d |
| 137 |  | First draft of database structure | 3d | 2006-12-18 | 2006-12-20 |  | 198d |
| 138 | 1.1.1.4.5 | **Domain model** | 9d | 2006-12-18 | 2006-12-29 |  | 192d |
| 139 |  | Create model harmonized with BRIDG | 5d | 2006-12-18 | 2006-12-22 |  | 192d |
| 140 |  | Create first draft of model | 4d | 2006-12-26 | 2006-12-29 | 139 | 192d |

| ID | WBS | Task | Duration | Start | Finish | Predecessors | Total float | Constraint |
| --- | --- | --- | --- | --- | --- | --- | --- | --- |
| 141 | 1.1.1.4.6 | **Security** | 10d | 2006-12-18 | 2007-01-02 |  | 191d |  |
| 142 |  | Evaluate caGrid 1.0 security infrastructure | 10d | 2006-12-18 | 2007-01-02 | 74 | 191d |  |
| 143 | 1.1.1.5 | **Implementation** | 5d | 2006-12-19 | 2006-12-26 | 101SS+1d | 2d |  |
| 144 | 1.1.1.5.1 | **Enterprise Service Bus** | 5d | 2006-12-19 | 2006-12-26 |  | 2d |  |
| 145 |  | Setup initial project | 5d | 2006-12-19 | 2006-12-26 |  | 2d |  |
| 146 | 1.1.1.5.2 | **Grid service** | 5d | 2006-12-19 | 2006-12-26 |  | 2d |  |
| 147 |  | Create grid service skeleton | 5d | 2006-12-19 | 2006-12-26 |  | 2d |  |
| 148 | 1.1.1.5.3 | **Create Study/Protocol** | 5d | 2006-12-19 | 2006-12-26 |  | 2d |  |
| 149 |  | Implement O/R mapping | 5d | 2006-12-19 | 2006-12-26 |  | 2d |  |
| 150 |  | Develop StudyDAO | 5d | 2006-12-19 | 2006-12-26 |  | 2d |  |
| 151 |  | Develop StudyService | 5d | 2006-12-19 | 2006-12-26 |  | 2d |  |
| 152 |  | Develop controller and command objects | 5d | 2006-12-19 | 2006-12-26 |  | 2d |  |
| 153 |  | Develop UI | 5d | 2006-12-19 | 2006-12-26 |  | 2d |  |
| 154 |  | Develop JUnit test cases | 5d | 2006-12-19 | 2006-12-26 |  | 2d |  |
| 155 |  | Develop | 5d | 2006-12-19 | 2006-12-26 |  | 2d |  |
| 156 |  | Login | 5d | 2006-12-19 | 2006-12-26 |  | 2d |  |
| 157 | 1.1.1.5.4 | **Create Participant** | 5d | 2006-12-19 | 2006-12-26 |  | 2d |  |
| 158 |  | Implement O/R mapping | 5d | 2006-12-19 | 2006-12-26 |  | 2d |  |
| 159 |  | Develop ParticipantDAO | 5d | 2006-12-19 | 2006-12-26 |  | 2d |  |
| 160 |  | Develop ParticipantService | 5d | 2006-12-19 | 2006-12-26 |  | 2d |  |
| 161 |  | Develop controller and command objects | 5d | 2006-12-19 | 2006-12-26 |  | 2d |  |
| 162 |  | Develop UI | 5d | 2006-12-19 | 2006-12-26 |  | 2d |  |
| 163 |  | Develop JUnit test cases | 5d | 2006-12-19 | 2006-12-26 |  | 2d |  |
| 164 | 1.1.1.5.5 | **Create AE** | 5d | 2006-12-19 | 2006-12-26 |  | 2d |  |
| 165 |  | Implement O/R mapping | 5d | 2006-12-19 | 2006-12-26 |  | 2d |  |
| 166 |  | Develop AdverseEventDAO | 5d | 2006-12-19 | 2006-12-26 |  | 2d |  |
| 167 |  | Develop AdverseEventService | 5d | 2006-12-19 | 2006-12-26 |  | 2d |  |
| 168 |  | Develop controller and command objects | 5d | 2006-12-19 | 2006-12-26 |  | 2d |  |
| 169 |  | Develop UI | 5d | 2006-12-19 | 2006-12-26 |  | 2d |  |
| 170 |  | Develop JUnit test cases | 5d | 2006-12-19 | 2006-12-26 |  | 2d |  |
| 171 | 1.1.1.6 | **Testing** | 8d | 2006-12-19 | 2006-12-29 |  | 7d |  |
| 172 | 1.1.1.6.1 | **Create Functional Tests** | 6d | 2006-12-19 | 2006-12-27 | 75SS+5d | 194d |  |
| 173 |  | Create Study | 5d | 2006-12-19 | 2006-12-26 |  | 195d |  |
| 174 |  | Create Participant | 5d | 2006-12-19 | 2006-12-26 |  | 195d |  |
| 175 |  | Login | 5d | 2006-12-19 | 2006-12-26 |  | 195d |  |
| 176 |  | Create AE | 5d | 2006-12-19 | 2006-12-26 |  | 194d |  |
| 177 |  | RTM | 1d | 2006-12-27 | 2006-12-27 | 176, 97 | 194d |  |
| 178 | 1.1.1.6.2 | **Final Tests of Iteration** | 3d | 2006-12-27 | 2006-12-29 |  | 2d |  |
| 179 |  | Deploy Prototype (Task 2.5) | 1d | 2006-12-27 | 2006-12-27 | 143 | 2d |  |
| 180 |  | Validation and Acceptance Testing | 2d | 2006-12-28 | 2006-12-29 | 179 | 2d |  |
| 181 |  | Submit Test Results Report (Task 2.7) | 0d | 2006-12-29 | 2006-12-29 | 180 | 2d |  |
| 182 | 1.1.2 | **Iteration 2** | 23d | 2007-01-02 | 2007-02-01 | 181 | 2d | start no earlier than 2007-01-01 |
| 183 | 1.1.2.1 | **Project Management** | 23d | 2007-01-02 | 2007-02-01 |  | 169d |  |
| 184 |  | Update Project Plan | 5d | 2007-01-02 | 2007-01-08 |  | 187d |  |
| 185 |  | Update Test Plan Document (Task 2.6) | 5d | 2007-01-08 | 2007-01-12 |  | 183d | start no earlier than 2007-01-08 |
| 186 | 1.1.2.1.3 | **Detailed Construction and Transition Plan** | 9d | 2007-01-22 | 2007-02-01 |  | 169d |  |
| 187 |  | Update Construction and Transition Phases | 5d | 2007-01-22 | 2007-01-26 |  | 169d | start no earlier than 2007-01-22 |
| 188 |  | Adopter review | 3d | 2007-01-29 | 2007-01-31 | 187 | 169d |  |
| 189 |  | Revisions | 1d | 2007-02-01 | 2007-02-01 | 188 | 169d |  |
| 190 |  | Deliver Design document to BAH (Task 2.9) | 0d | 2007-02-01 | 2007-02-01 | 189 | 169d |  |
| 191 | 1.1.2.1.4 | **CaAERS CCB (Task 2.10)** | 11d | 2007-01-10 | 2007-01-24 |  | 175d |  |
| 192 |  | CCB Meetings | 1d | 2007-01-10 | 2007-01-10 |  | 185d | start no earlier than 2007-01-10 |
| 193 |  | CCB Meetings | 1d | 2007-01-24 | 2007-01-24 |  | 175d | start no earlier than 2007-01-24 |
| 194 | 1.1.2.1.5 | **Weekly Team/Developers Meeting** | 16d | 2007-01-08 | 2007-01-29 |  | 172d |  |
| 195 |  | Weekly Team Meeting 1 | 1d | 2007-01-08 | 2007-01-08 |  | 187d | start no earlier than 2007-01-08 |
| 196 |  | Weekly Team Meeting 2 | 1d | 2007-01-15 | 2007-01-15 |  | 182d | start no earlier than 2007-01-15 |
| 197 |  | Weekly Team Meeting 3 | 1d | 2007-01-22 | 2007-01-22 |  | 177d | start no earlier than 2007-01-22 |
| 198 |  | Weekly Team Meeting 4 | 1d | 2007-01-29 | 2007-01-29 |  | 172d | start no earlier than 2007-01-29 |
| 199 | 1.1.2.1.6 | **Status and Risk Reporting** | 14d | 2007-01-12 | 2007-01-31 |  | 170d |  |
| 200 |  | Bi-weekly Risk Update in caMP (Task 1.4) | 1d | 2007-01-12 | 2007-01-12 |  | 183d | start no earlier than 2007-01-12 |
| 201 |  | Bi-weekly Risk Matrix Update Meeting | 1d | 2007-01-12 | 2007-01-12 |  | 183d | start no earlier than 2007-01-12 |
| 202 |  | Bi-weekly Risk Update in caMP (Task 1.4) | 1d | 2007-01-26 | 2007-01-26 |  | 173d | start no earlier than 2007-01-26 |
| 203 |  | Bi-weekly Status Update Meeting with BAH/NCI | 1d | 2007-01-26 | 2007-01-26 |  | 173d | start no earlier than 2007-01-26 |
| 204 |  | Monthly Status Report (Task 1.3) | 1d | 2007-01-31 | 2007-01-31 |  | 170d | start no earlier than 2007-01-31 |
| 205 |  | Monthly Risk Matrix Update (Task 1.3) | 1d | 2007-01-31 | 2007-01-31 |  | 170d | start no earlier than 2007-01-31 |
| 206 |  | Adopters Collaboration Report (Task 1.7) | 1d | 2007-01-31 | 2007-01-31 |  | 170d | start no earlier than 2007-01-31 |
| 207 | 1.1.2.1.7 | **Collaboration Management Activities** | 11d | 2007-01-11 | 2007-01-25 |  | 174d |  |
| 208 |  | Bi-Weekly AE SIG Meeting | 1d | 2007-01-11 | 2007-01-11 |  | 184d | start no earlier than 2007-01-11 |
| 209 |  | Bi-Weekly AE SIG Meeting | 1d | 2007-01-25 | 2007-01-25 |  | 174d | start no earlier than 2007-01-25 |
| 210 | 1.1.2.2 | **Requirements** | 16d | 2007-01-02 | 2007-01-23 |  | 2d |  |

| ID | WBS | Task | Duration | Start | Finish | Predecessors | Total float | Constraint |
| --- | --- | --- | --- | --- | --- | --- | --- | --- |
| 211 |  | Face-to-Face Meeting | 2d | 2007-01-04 | 2007-01-05 |  | 0d | must start on 2007-01-04 |
| 212 |  | Use Case Selection | 2d | 2007-01-02 | 2007-01-03 |  | 183d |  |
| 213 |  | Use Case Assignments for Iteration 2 | 1d | 2007-01-04 | 2007-01-04 | 212 | 183d |  |
| 214 | 1.1.2.2.4 | **Use Case Specification and Realization (Task 2.1)** | 6d | 2007-01-05 | 2007-01-12 |  | 183d |  |
| 215 |  | Developer draft | 3d | 2007-01-05 | 2007-01-09 | 213 | 183d |  |
| 216 |  | Adopter review | 2d | 2007-01-10 | 2007-01-11 | 215 | 183d |  |
| 217 |  | Developer update | 1d | 2007-01-12 | 2007-01-12 | 216 | 183d |  |
| 218 |  | Deliver to BAH (Task 2.1) | 0d | 2007-01-12 | 2007-01-12 | 217 | 183d |  |
| 219 | 1.1.2.2.5 | **SRS document (Task 2.2)** | 11d | 2007-01-09 | 2007-01-23 | 214SS+2d | 175d |  |
| 220 |  | Developer draft | 5d | 2007-01-09 | 2007-01-15 |  | 175d |  |
| 221 |  | Adopter review | 5d | 2007-01-16 | 2007-01-22 | 220 | 175d |  |
| 222 |  | Developer update | 1d | 2007-01-23 | 2007-01-23 | 221 | 175d |  |
| 223 |  | Deliver SRS document to BAH (Task 2.2) | 0d | 2007-01-23 | 2007-01-23 | 222 | 175d |  |
| 224 | 1.1.2.3 | **Analysis and Design** | 11d | 2007-01-12 | 2007-01-26 |  | 173d |  |
| 225 | 1.1.2.3.1 | **Design Documents** | 8d | 2007-01-12 | 2007-01-23 | 214SS+5d | 176d |  |
| 226 |  | Developer draft | 5d | 2007-01-12 | 2007-01-18 |  | 176d |  |
| 227 |  | Adopter review | 2d | 2007-01-19 | 2007-01-22 | 226 | 176d |  |
| 228 |  | Developer update | 1d | 2007-01-23 | 2007-01-23 | 227 | 176d |  |
| 229 |  | Deliver Design document to BAH (Task 2.2) | 0d | 2007-01-23 | 2007-01-23 | 228 | 176d |  |
| 230 | 1.1.2.3.2 | **UML Diagrams (Task 2.3)** | 8d | 2007-01-12 | 2007-01-23 |  | 176d |  |
| 231 |  | Developer draft | 5d | 2007-01-12 | 2007-01-18 | 214SS+5d | 176d |  |
| 232 |  | Adopter review | 2d | 2007-01-19 | 2007-01-22 | 231 | 176d |  |
| 233 |  | Developer update | 1d | 2007-01-23 | 2007-01-23 | 232 | 176d |  |
| 234 |  | Deliver to BAH (Task 2.3) | 0d | 2007-01-23 | 2007-01-23 | 233 | 176d |  |
| 235 | 1.1.2.3.3 | **Technical/Architecture Guide** | 11d | 2007-01-12 | 2007-01-26 |  | 173d |  |
| 236 |  | Developer draft | 5d | 2007-01-12 | 2007-01-18 | 214SS+5d | 173d |  |
| 237 |  | Adopter review | 5d | 2007-01-19 | 2007-01-25 | 236 | 173d |  |
| 238 |  | Developer update | 1d | 2007-01-26 | 2007-01-26 | 237 | 173d |  |
| 239 |  | Deliver to BAH (Task 2.8) | 0d | 2007-01-26 | 2007-01-26 | 238 | 173d |  |
| 240 | 1.1.2.4 | **Implementation** | 13d | 2007-01-08 | 2007-01-24 | 214SS+1d | 173d |  |
| 241 | 1.1.2.4.1 | **Web interface** | 10d | 2007-01-08 | 2007-01-19 |  | 176d |  |
| 242 |  | Second web interface iteration | 10d | 2007-01-08 | 2007-01-19 |  | 176d |  |
| 243 | 1.1.2.4.2 | **Enterprise Service Bus** | 10d | 2007-01-08 | 2007-01-19 |  | 176d |  |
| 244 |  | Second ESB Iteration | 10d | 2007-01-08 | 2007-01-19 |  | 176d |  |
| 245 | 1.1.2.4.3 | **Grid service** | 13d | 2007-01-08 | 2007-01-24 |  | 173d |  |
| 246 |  | Implement Grid Service | 13d | 2007-01-08 | 2007-01-24 |  | 173d |  |
| 247 | 1.1.2.4.4 | **Implement Use Cases** | 12d | 2007-01-08 | 2007-01-23 |  | 174d |  |
| 248 |  | Implement O/R mapping | 10d | 2007-01-08 | 2007-01-19 |  | 174d |  |
| 249 |  | Develop DAO | 10d | 2007-01-10 | 2007-01-23 | 248SS+2d | 174d |  |
| 250 |  | Develop Service | 10d | 2007-01-10 | 2007-01-23 | 248SS+2d | 174d |  |
| 251 |  | Develop controller and command objects | 10d | 2007-01-10 | 2007-01-23 | 248SS+2d | 174d |  |
| 252 |  | Develop JUnit test cases | 7d | 2007-01-10 | 2007-01-18 | 248SS+2d | 177d |  |
| 253 | 1.1.2.5 | **Testing** | 11d | 2007-01-12 | 2007-01-26 |  | 173d |  |
| 254 | 1.1.2.5.1 | **Create Functional Tests** | 9d | 2007-01-12 | 2007-01-24 | 214SS+5d | 175d |  |
| 255 |  | Create Functional Tests for Use Cases | 5d | 2007-01-12 | 2007-01-18 |  | 178d |  |
| 256 |  | RTM | 1d | 2007-01-24 | 2007-01-24 | 255, 219 | 175d |  |
| 257 | 1.1.2.5.2 | **Final Tests of Iteration** | 2d | 2007-01-24 | 2007-01-26 |  | 173d |  |
| 258 |  | Deploy Prototype for Iteration 2 (Task 2.5) | 0d | 2007-01-24 | 2007-01-24 | 240 | 173d |  |
| 259 |  | Validation and Acceptance Testing | 2d | 2007-01-25 | 2007-01-26 | 258 | 173d |  |
| 260 |  | Submit Test Results Report (Task 2.7) | 0d | 2007-01-26 | 2007-01-26 | 259 | 173d |  |
| 261 | 1.2 | **Construction Phase** | 160d | 2007-02-01 | 2007-09-12 |  | 0d |  |
| 262 | 1.2.1 | **Construction Phase Iteration 1** | 22d | 2007-02-01 | 2007-03-02 |  | 0d | start no earlier than 2007-02-01 |
| 263 |  | Begin Iteration 1 | 0d | 2007-02-01 | 2007-02-01 |  | 0d |  |
| 264 |  | Environment Updates | 15d | 2007-02-01 | 2007-02-21 |  | 155d |  |
| 265 |  | Updates to Requirements, Use Case, UML, and Design Document | 20d | 2007-02-01 | 2007-02-28 |  | 150d |  |
| 266 |  | Test Plan and RTM Updates | 15d | 2007-02-01 | 2007-02-21 |  | 150d |  |
| 267 |  | Develop Code | 20d | 2007-02-01 | 2007-02-28 |  | 150d |  |
| 268 |  | Testing | 20d | 2007-02-01 | 2007-02-28 |  | 150d |  |
| 269 |  | Installation Guide Draft | 5d | 2007-02-22 | 2007-02-28 | 271FS-5d | 150d |  |
| 270 |  | Testing Results | 5d | 2007-02-22 | 2007-02-28 | 266 | 150d |  |
| 271 |  | Finish Iteration 1 | 0d | 2007-02-28 | 2007-02-28 | 263FS+20d | 0d |  |
| 272 |  | Iteration 1 Review and Feedback | 5d | 2007-02-26 | 2007-03-02 | 271FS-3d | 0d |  |
| 273 | 1.2.2 | **Construction Phase Iteration 2** | 23d | 2007-03-02 | 2007-04-04 | 272 | 0d |  |
| 274 |  | Begin Iteration 2 | 0d | 2007-03-02 | 2007-03-02 |  | 0d |  |
| 275 |  | Environment Updates | 10d | 2007-03-05 | 2007-03-16 |  | 138d |  |
| 276 |  | Updates to Requirements, Use Case, UML, and Design Document | 20d | 2007-03-05 | 2007-03-30 |  | 128d |  |
| 277 |  | Test Plan and RTM Updates | 15d | 2007-03-05 | 2007-03-23 |  | 133d |  |
| 278 |  | Develop Code | 20d | 2007-03-05 | 2007-03-30 |  | 128d |  |
| 279 |  | Testing | 20d | 2007-03-05 | 2007-03-30 |  | 128d |  |
| 280 |  | Testing Results | 5d | 2007-03-26 | 2007-03-30 | 279FS-5d | 128d |  |

| ID | WBS | Task | Duration | Start | Finish | Predecessors | Total float |
| --- | --- | --- | --- | --- | --- | --- | --- |
| 281 |  | Installation Guide Drafts | 5d | 2007-03-26 | 2007-03-30 | 282FS-5d | 128d |
| 282 |  | Finish Iteration 2 | 0d | 2007-03-30 | 2007-03-30 | 274FS+20d | 0d |
| 283 |  | Iteration 2 Review and Feedback | 5d | 2007-03-29 | 2007-04-04 | 282FS-2d | 0d |
| 284 | 1.2.3 | **Construction Phase Iteration 3** | 23d | 2007-04-04 | 2007-05-07 | 283 | 0d |
| 285 |  | Begin Iteration 3 | 0d | 2007-04-04 | 2007-04-04 |  | 0d |
| 286 |  | Environment Updates | 10d | 2007-04-05 | 2007-04-18 |  | 115d |
| 287 |  | Updates to Requirements, Use Case, UML, and Design Document | 20d | 2007-04-05 | 2007-05-02 |  | 105d |
| 288 |  | Test Plan and RTM Updates | 15d | 2007-04-05 | 2007-04-25 |  | 110d |
| 289 |  | Develop Code | 20d | 2007-04-05 | 2007-05-02 |  | 105d |
| 290 |  | Testing | 20d | 2007-04-05 | 2007-05-02 |  | 105d |
| 291 |  | Installation Guide Drafts | 5d | 2007-04-26 | 2007-05-02 | 292FS-5d | 105d |
| 292 |  | Finish Iteration 3 | 0d | 2007-05-02 | 2007-05-02 | 285FS+20d | 0d |
| 293 |  | Iteration 3 Review and Feedback | 5d | 2007-05-01 | 2007-05-07 | 292FS-2d | 0d |
| 294 | 1.2.4 | **Construction Phase Iteration 4** | 23d | 2007-05-07 | 2007-06-07 | 293 | 0d |
| 295 |  | Begin Iteration 4 | 0d | 2007-05-07 | 2007-05-07 |  | 0d |
| 296 |  | Environment Updates | 10d | 2007-05-08 | 2007-05-21 |  | 92d |
| 297 |  | Updates to Requirements, Use Case, UML, and Design Document | 20d | 2007-05-08 | 2007-06-04 |  | 82d |
| 298 |  | Test Plan and RTM Updates | 15d | 2007-05-08 | 2007-05-28 |  | 87d |
| 299 |  | Develop Code | 20d | 2007-05-08 | 2007-06-04 |  | 82d |
| 300 |  | Testing | 20d | 2007-05-08 | 2007-06-04 |  | 82d |
| 301 |  | Installation Guide Draft | 5d | 2007-05-29 | 2007-06-04 | 304FS-5d | 82d |
| 302 |  | Administrators Guide Draft | 5d | 2007-05-29 | 2007-06-04 | 304FS-5d | 82d |
| 303 |  | End User Guide Draft | 5d | 2007-05-29 | 2007-06-04 | 304FS-5d | 82d |
| 304 |  | Finish Iteration 4 | 0d | 2007-06-04 | 2007-06-04 | 295FS+20d | 0d |
| 305 |  | Iteration 4 Review and Feedback | 5d | 2007-06-01 | 2007-06-07 | 304FS-2d | 0d |
| 306 | 1.2.5 | **Construction Phase Iteration 5** | 23d | 2007-06-07 | 2007-07-10 | 305 | 0d |
| 307 |  | Begin Iteration 5 | 0d | 2007-06-07 | 2007-06-07 |  | 0d |
| 308 |  | Environment Updates | 10d | 2007-06-08 | 2007-06-21 |  | 69d |
| 309 |  | Updates to Requirements, Use Case, UML, and Design Document | 20d | 2007-06-08 | 2007-07-05 |  | 59d |
| 310 |  | Test Plan and RTM Updates | 15d | 2007-06-08 | 2007-06-28 |  | 64d |
| 311 |  | Develop Code | 20d | 2007-06-08 | 2007-07-05 |  | 59d |
| 312 |  | Testing | 20d | 2007-06-08 | 2007-07-05 |  | 59d |
| 313 |  | Testing Results | 5d | 2007-06-29 | 2007-07-05 | 317FS-5d | 59d |
| 314 |  | Installation Guide Draft | 5d | 2007-06-29 | 2007-07-05 | 317FS-5d | 59d |
| 315 |  | Administrators Guide Draft | 5d | 2007-06-29 | 2007-07-05 | 317FS-5d | 59d |
| 316 |  | End User Guide Draft | 5d | 2007-06-08 | 2007-06-14 |  | 74d |
| 317 |  | Finish Iteration 5 | 0d | 2007-07-05 | 2007-07-05 | 307FS+20d | 0d |
| 318 |  | Iteration 5 Review and Feedback | 5d | 2007-07-04 | 2007-07-10 | 317FS-2d | 0d |
| 319 | 1.2.6 | **Construction Phase Iteration 6** | 23d | 2007-07-10 | 2007-08-10 | 318 | 0d |
| 320 |  | Begin Iteration 6 | 0d | 2007-07-10 | 2007-07-10 |  | 0d |
| 321 |  | Environment Updates | 10d | 2007-07-11 | 2007-07-24 |  | 46d |
| 322 |  | Updates to Requirements, Use Case, UML, and Design Document | 20d | 2007-07-11 | 2007-08-07 |  | 36d |
| 323 |  | Test Plan and RTM Updates | 15d | 2007-07-11 | 2007-07-31 |  | 41d |
| 324 |  | Develop Code | 20d | 2007-07-11 | 2007-08-07 |  | 36d |
| 325 |  | Installation Guide Draft | 5d | 2007-08-01 | 2007-08-07 | 330FS-5d | 36d |
| 326 |  | Administrators Guide Draft | 5d | 2007-08-01 | 2007-08-07 | 330FS-5d | 36d |
| 327 |  | End User Guide Draft | 5d | 2007-08-01 | 2007-08-07 | 330FS-5d | 36d |
| 328 |  | Testing | 20d | 2007-07-11 | 2007-08-07 |  | 36d |
| 329 |  | Testing Results | 5d | 2007-08-01 | 2007-08-07 | 328FS-5d | 36d |
| 330 |  | Finish Iteration 6 | 0d | 2007-08-07 | 2007-08-07 | 320FS+20d | 0d |
| 331 |  | Iteration 6 Review and Feedback | 5d | 2007-08-06 | 2007-08-10 | 330FS-2d | 0d |
| 332 | 1.2.7 | **Construction Phase Iteration 7** | 23d | 2007-08-10 | 2007-09-12 | 331 | 0d |
| 333 |  | Begin Iteration 7 | 0d | 2007-08-10 | 2007-08-10 |  | 0d |
| 334 |  | Environment Updates | 10d | 2007-08-13 | 2007-08-24 |  | 23d |
| 335 |  | Finalize Requirements, Use Case, UML, and Design Document | 10d | 2007-08-13 | 2007-08-24 |  | 13d |
| 336 |  | Test Plan and RTM Updates (Task 3.6) | 15d | 2007-08-13 | 2007-08-31 |  | 18d |
| 337 |  | Finalize Code Base (Task 3.5) | 20d | 2007-08-13 | 2007-09-07 |  | 13d |
| 338 |  | Testing | 20d | 2007-08-13 | 2007-09-07 |  | 13d |
| 339 |  | Final Test Results Report (3.8) | 5d | 2007-09-03 | 2007-09-07 | 347FS-5d | 13d |
| 340 |  | Final Transition Phase Plan (3.16) | 5d | 2007-09-03 | 2007-09-07 | 347FS-5d | 13d |
| 341 |  | Compatibility Review Submission Package (Task 3.12) | 10d | 2007-08-27 | 2007-09-07 | 347FS-10d | 13d |
| 342 |  | Generation of CDEs (Task 3.11.2) | 10d | 2007-08-27 | 2007-09-07 | 335 | 13d |
| 343 |  | Final Administrators Guide (Task 3.13) | 5d | 2007-09-03 | 2007-09-07 | 347FS-5d | 13d |
| 344 |  | Final End Users Guide (Task 3.15.2) | 5d | 2007-09-03 | 2007-09-07 | 347FS-5d | 13d |
| 345 |  | Final Installation Guide (Task 3.10) | 5d | 2007-09-03 | 2007-09-07 | 347FS-5d | 13d |
| 346 |  | Release Notes (Task 3.14) | 5d | 2007-09-03 | 2007-09-07 | 347FS-5d | 13d |
| 347 |  | Finish Iteration 7 | 0d | 2007-09-07 | 2007-09-07 | 333FS+20d | 0d |
| 348 |  | Iteration 7 Review and Feedback | 5d | 2007-09-06 | 2007-09-12 | 347FS-2d | 0d |
| 349 |  | Transition Phase Go/No-Go Gate | 0d | 2007-09-12 | 2007-09-12 | 348 | 0d |
| 350 | 1.3 | **Transition Phase** | 10d | 2007-09-13 | 2007-09-26 | 349 | 0d |

| ID | WBS | Task | Duration | Start | Finish | Predecessors | Total float |
| --- | --- | --- | --- | --- | --- | --- | --- |
| 351 |  | Deployment Plan (Task 4.1) | 2d | 2007-09-13 | 2007-09-14 |  | 3d |
| 352 |  | Deployment | 5d | 2007-09-17 | 2007-09-21 | 351 | 3d |
| 353 |  | Deployment Report (Task 4.2) | 1d | 2007-09-13 | 2007-09-13 |  | 9d |
| 354 |  | Code Release Updates (if needed) (Task 4.3) | 10d | 2007-09-13 | 2007-09-26 |  | 0d |
| 355 |  | Guide Updates (if needed) | 10d | 2007-09-13 | 2007-09-26 |  | 0d |
| 356 | 1.3.6 | **Project Closing Activities** | 10d | 2007-09-13 | 2007-09-26 |  | 0d |
| 357 |  | Lessons Learned (Task 1.6) | 10d | 2007-09-13 | 2007-09-26 |  | 0d |
| 358 |  | Archiving | 10d | 2007-09-13 | 2007-09-26 |  | 0d |
| 359 |  | Contract Closeout | 10d | 2007-09-13 | 2007-09-26 |  | 0d |

## Version 2 (saved 2006-12-18, file caAERS-ProjectSchedule-DRAFT-Version2.mpp)

Note of the change: SVN-Revision: 18

Last finish stays 2007-09-26.

Changed:

| ID | Task | Start | Finish | Duration | Total float | Predecessors | Other |
| --- | --- | --- | --- | --- | --- | --- | --- |
| 46 | **caAERS Face-to-Face Meeting Planning** |  | 2006-12-06 → 2006-12-19 (+13d) | 4d → 13d | 208d → 199d |  |  |
| 48 | Draft Agenda | 2006-12-04 → 2006-12-15 (+11d) | 2006-12-04 → 2006-12-15 (+11d) |  | 208d → 199d | 47 → 7 | constraint none → start no earlier than 2006-12-15 |
| 49 | Review by Adopters/Collaborators | 2006-12-05 → 2006-12-18 (+13d) | 2006-12-06 → 2006-12-19 (+13d) |  | 208d → 199d |  |  |
| 50 | Finalize F2F Meeting Agenda and Details | 2006-12-06 → 2006-12-19 (+13d) | 2006-12-06 → 2006-12-19 (+13d) |  | 208d → 199d |  |  |

## Version 3 (saved 2006-12-19, file caAERS-ProjectSchedule-DRAFT-Version2.mpp)

Note of the change: SVN-Revision: 21

Last finish stays 2007-09-26.

Changed:

| ID | Task | Other |
| --- | --- | --- |
| 8 | Kickoff Meeting | was named Crosscutting WS Project Kickoff Meeting |
| 46 | **caAERS F2F (Cross-Cutting WS) Meeting Planning** | was named caAERS Face-to-Face Meeting Planning |

## Version 4 (saved 2006-12-19, file caAERS-ProjectSchedule-DRAFT-Version2.mpp)

Note of the change: SVN-Revision: 22

Last finish stays 2007-09-26.

Added:

| ID | Task | Duration | Start | Finish | Predecessors | Resources |
| --- | --- | --- | --- | --- | --- | --- |
| 212 | F2F Meeting Notes (Task 1.5) | 2d | 2007-01-08 | 2007-01-09 | 211 | Edmond |

Changed:

| ID | Task | Other |
| --- | --- | --- |
| 180 | Validation and Acceptance Testing | resources Renee; David; Brenda; Natasha → Renee; David; Brenda; Natasha; Mayo; WF |

## Version 5 (saved 2006-12-22, file caAERS-ProjectSchedule-DRAFT-Version2.mpp)

Note of the change: SVN-Revision: 54

Last finish stays 2007-09-26. Complete tasks 0 → 30.

Changed:

| ID | Task | Start | Finish | Complete | Total float | Other |
| --- | --- | --- | --- | --- | --- | --- |
| 1 | **caAERS Application Development Project** | 2006-12-01 A |  | 0% → 6% |  | baseline start none → 2006-12-01; baseline finish none → 2007-09-26 |
| 2 | **Elaboration Phase** | 2006-12-01 A |  | 0% → 14% | 14d → 169d | baseline start none → 2006-12-01; baseline finish none → 2007-02-01 |
| 3 | **Iteration 1** | 2006-12-01 A |  | 0% → 20% | 14d → 190d | baseline start none → 2006-12-01; baseline finish none → 2007-01-03 |
| 4 | **Project Management** | 2006-12-01 A |  | 0% → 63% | 20d → 190d | baseline start none → 2006-12-01; baseline finish none → 2007-01-03 |
| 5 | **Inception and Kickoff Planning** | 2006-12-01 A | 2006-12-08 A | 0% → 100% | 198d → none | baseline start none → 2006-12-01; baseline finish none → 2006-12-08 |
| 6 | Draft Project Management Plan | 2006-12-01 A | 2006-12-05 A | 0% → 100% | 209d → none | baseline start none → 2006-12-01; baseline finish none → 2006-12-05 |
| 7 | High-Level Schedule and Assignments | 2006-12-01 A | 2006-12-05 A | 0% → 100% | 206d → none | baseline start none → 2006-12-01; baseline finish none → 2006-12-05 |
| 8 | Kickoff Meeting | 2006-12-06 A | 2006-12-06 A | 0% → 100% | 195d → none | baseline start none → 2006-12-06; baseline finish none → 2006-12-06 |
| 9 | Kickoff Meeting Notes (Task 1.5) | 2006-12-08 A | 2006-12-08 A | 0% → 100% | 195d → none | baseline start none → 2006-12-08; baseline finish none → 2006-12-08 |
| 10 | **Project Management Plan Baseline (Task 1.1)** | 2006-12-11 A |  | 0% → 70% |  | baseline start none → 2006-12-11; baseline finish none → 2006-12-26 |
| 11 | Add Details for Elaboration Phase to Project Plan | 2006-12-11 A | 2006-12-13 A | 0% → 100% | 195d → none | baseline start none → 2006-12-11; baseline finish none → 2006-12-13 |
| 12 | Resource Load and Level Project Schedule for Elaboration Phase | 2006-12-14 A | 2006-12-14 A | 0% → 100% | 195d → none | baseline start none → 2006-12-14; baseline finish none → 2006-12-14 |
| 13 | Adopters/Collaborators Review | 2006-12-15 A |  | 0% → 75% |  | baseline start none → 2006-12-15; baseline finish none → 2006-12-21 |
| 14 | Updates |  |  |  |  | baseline start none → 2006-12-22; baseline finish none → 2006-12-26 |
| 15 | Submit to BAH |  |  |  |  | baseline start none → 2006-12-26; baseline finish none → 2006-12-26 |
| 16 | **Communications Plan (Task 1.2)** | 2006-12-01 A | 2006-12-15 A | 0% → 100% | 201d → none | baseline start none → 2006-12-01; baseline finish none → 2006-12-15 |
| 17 | Developers Draft | 2006-12-01 A | 2006-12-07 A | 0% → 100% | 201d → none | baseline start none → 2006-12-01; baseline finish none → 2006-12-07 |
| 18 | Adopters/Collaborators Review | 2006-12-08 A | 2006-12-14 A | 0% → 100% | 201d → none | baseline start none → 2006-12-08; baseline finish none → 2006-12-14 |
| 19 | Developers Update | 2006-12-15 A | 2006-12-15 A | 0% → 100% | 201d → none | baseline start none → 2006-12-15; baseline finish none → 2006-12-15 |
| 20 | Submit to BAH | 2006-12-15 A | 2006-12-15 A | 0% → 100% | 201d → none | baseline start none → 2006-12-15; baseline finish none → 2006-12-15 |
| 21 | **Adopters Collaboration Plan** | 2006-12-01 A | 2006-12-15 A | 0% → 100% | 201d → none | baseline start none → 2006-12-01; baseline finish none → 2006-12-15 |
| 22 | Developers Draft | 2006-12-01 A | 2006-12-07 A | 0% → 100% | 201d → none | baseline start none → 2006-12-01; baseline finish none → 2006-12-07 |
| 23 | Adopters/Collaborators Review | 2006-12-08 A | 2006-12-14 A | 0% → 100% | 201d → none | baseline start none → 2006-12-08; baseline finish none → 2006-12-14 |
| 24 | Developers Update | 2006-12-15 A | 2006-12-15 A | 0% → 100% | 201d → none | baseline start none → 2006-12-15; baseline finish none → 2006-12-15 |
| 25 | Submit to BAH | 2006-12-15 A | 2006-12-15 A | 0% → 100% | 201d → none | baseline start none → 2006-12-15; baseline finish none → 2006-12-15 |
| 26 | **Risk and Issue Management Plan** | 2006-12-01 A |  | 0% → 45% |  | baseline start none → 2006-12-01; baseline finish none → 2006-12-15 |
| 27 | Developers Draft | 2006-12-01 A | 2006-12-07 A | 0% → 100% | 201d → none | baseline start none → 2006-12-01; baseline finish none → 2006-12-07 |
| 28 | Adopters/Collaborators Review |  |  |  |  | baseline start none → 2006-12-08; baseline finish none → 2006-12-14 |
| 29 | Developers Update |  |  |  |  | baseline start none → 2006-12-15; baseline finish none → 2006-12-15 |
| 30 | Submit to BAH |  |  |  |  | baseline start none → 2006-12-15; baseline finish none → 2006-12-15 |
| 31 | **caAERS Vision and Scope Document (Task 1.8)** | 2006-12-06 A | 2006-12-20 A | 0% → 100% | 198d → none | baseline start none → 2006-12-06; baseline finish none → 2006-12-20 |
| 32 | Developers Draft | 2006-12-06 A | 2006-12-12 A | 0% → 100% | 198d → none | baseline start none → 2006-12-06; baseline finish none → 2006-12-12 |
| 33 | Adopters/Collaborators Review | 2006-12-13 A | 2006-12-19 A | 0% → 100% | 198d → none | baseline start none → 2006-12-13; baseline finish none → 2006-12-19 |
| 34 | Developers Update | 2006-12-20 A | 2006-12-20 A | 0% → 100% | 198d → none | baseline start none → 2006-12-20; baseline finish none → 2006-12-20 |
| 35 | Submit to BAH | 2006-12-20 A | 2006-12-20 A | 0% → 100% | 198d → none | baseline start none → 2006-12-20; baseline finish none → 2006-12-20 |
| 36 | **Test and QA Mgmt Plan Document (Task 2.6)** |  |  |  |  | baseline start none → 2006-12-18; baseline finish none → 2006-12-29 |
| 37 | Developer Draft |  |  |  |  | baseline start none → 2006-12-18; baseline finish none → 2006-12-20 |
| 38 | Adopters/Collobators Review |  |  |  |  | baseline start none → 2006-12-21; baseline finish none → 2006-12-28 |
| 39 | Developer Update |  |  |  |  | baseline start none → 2006-12-29; baseline finish none → 2006-12-29 |
| 40 | Submit to BAH |  |  |  |  | baseline start none → 2006-12-29; baseline finish none → 2006-12-29 |
| 41 | **Change Control Board Plan and Charter (Task 2.10)** |  |  |  |  | baseline start none → 2006-12-18; baseline finish none → 2007-01-03 |
| 42 | Developer Draft |  |  |  |  | baseline start none → 2006-12-18; baseline finish none → 2006-12-22 |
| 43 | Adopters/Collobators Review |  |  |  |  | baseline start none → 2006-12-26; baseline finish none → 2007-01-02 |
| 44 | Developer Update |  |  |  |  | baseline start none → 2007-01-03; baseline finish none → 2007-01-03 |
| 45 | Submit to BAH |  |  |  |  | baseline start none → 2007-01-03; baseline finish none → 2007-01-03 |
| 46 | **caAERS F2F (Cross-Cutting WS) Meeting Planning** | 2006-12-01 A |  | 0% → 75% |  | baseline start none → 2006-12-01; baseline finish none → 2006-12-19 |
| 47 | Set Date | 2006-12-01 A | 2006-12-01 A | 0% → 100% | 211d → none | baseline start none → 2006-12-01; baseline finish none → 2006-12-01 |
| 48 | Draft Agenda | 2006-12-15 A | 2006-12-15 A | 0% → 100% | 199d → none | baseline start none → 2006-12-15; baseline finish none → 2006-12-15 |
| 49 | Review by Adopters/Collaborators | 2006-12-18 A |  | 0% → 50% |  | baseline start none → 2006-12-18; baseline finish none → 2006-12-19 |
| 50 | Finalize F2F Meeting Agenda and Details |  |  |  |  | baseline start none → 2006-12-19; baseline finish none → 2006-12-19 |
| 51 | **Weekly Team/Developers Meeting** | 2006-12-11 A |  | 0% → 67% |  | baseline start none → 2006-12-11; baseline finish none → 2006-12-26 |
| 52 | Weekly Team Meeting 1 | 2006-12-11 A | 2006-12-11 A | 0% → 100% | 205d → none | baseline start none → 2006-12-11; baseline finish none → 2006-12-11 |
| 53 | Weekly Team Meeting 2 | 2006-12-18 A | 2006-12-18 A | 0% → 100% | 200d → none | baseline start none → 2006-12-18; baseline finish none → 2006-12-18 |
| 54 | Weekly Team Meeting 3 |  |  |  |  | baseline start none → 2006-12-26; baseline finish none → 2006-12-26 |
| 55 | **Status and Risk Reporting** |  |  |  |  | baseline start none → 2006-12-15; baseline finish none → 2006-12-29 |
| 56 | Bi-weekly Risk Update in caMP (Task 1.4) |  |  |  |  | baseline start none → 2006-12-15; baseline finish none → 2006-12-15 |
| 57 | Bi-weekly Risk Matrix Update Meeting |  |  |  |  | baseline start none → 2006-12-22; baseline finish none → 2006-12-22 |
| 58 | Bi-weekly Risk Update in caMP (Task 1.4) |  |  |  |  | baseline start none → 2006-12-29; baseline finish none → 2006-12-29 |
| 59 | Bi-weekly Status Update Meeting with BAH/NCI |  |  |  |  | baseline start none → 2006-12-29; baseline finish none → 2006-12-29 |
| 60 | Monthly Status Report (Task 1.3) |  |  |  |  | baseline start none → 2006-12-29; baseline finish none → 2006-12-29 |
| 61 | Monthly Risk Matrix Update (Task 1.3) |  |  |  |  | baseline start none → 2006-12-29; baseline finish none → 2006-12-29 |
| 62 | Adopters Collaboration Report (Task 1.7) |  |  |  |  | baseline start none → 2006-12-29; baseline finish none → 2006-12-29 |
| 63 | **Collaboration Management Activities** |  |  |  |  | baseline start none → 2006-12-14; baseline finish none → 2006-12-28 |
| 64 | Bi-Weekly AE SIG Meeting |  |  |  |  | baseline start none → 2006-12-14; baseline finish none → 2006-12-14 |
| 65 | Bi-Weekly AE SIG Meeting |  |  |  |  | baseline start none → 2006-12-28; baseline finish none → 2006-12-28 |
| 66 | **Set up Development Environment** | 2006-12-01 A | 2006-12-11 A | 0% → 100% | 205d → none | baseline start none → 2006-12-01; baseline finish none → 2006-12-11 |
| 67 | Set up SCM (Subversion) | 2006-12-01 A | 2006-12-04 A | 0% → 100% | 207d → none | baseline start none → 2006-12-01; baseline finish none → 2006-12-04 |
| 68 | Create Build Scripts (using Ant) | 2006-12-05 A | 2006-12-07 A | 0% → 100% | 207d → none | baseline start none → 2006-12-05; baseline finish none → 2006-12-07 |
| 69 | Decide on Tech Stack | 2006-12-01 A | 2006-12-04 A | 0% → 100% | 205d → none | baseline start none → 2006-12-01; baseline finish none → 2006-12-04 |
| 70 | Prepare Development Server | 2006-12-05 A | 2006-12-11 A | 0% → 100% | 205d → none | baseline start none → 2006-12-05; baseline finish none → 2006-12-11 |

| ID | Task | Start | Finish | Complete | Total float | Other |
| --- | --- | --- | --- | --- | --- | --- |
| 71 | **Requirements** | 2006-12-01 A |  | 0% → 14% | 191d → 192d | baseline start none → 2006-12-01; baseline finish none → 2006-12-29 |
| 72 | Review Existing R1 Prototype and Requirements | 2006-12-01 A | 2006-12-07 A | 0% → 100% | 191d → none | baseline start none → 2006-12-01; baseline finish none → 2006-12-07 |
| 73 | Select Use Cases | 2006-12-08 A | 2006-12-08 A | 0% → 100% | 191d → none | baseline start none → 2006-12-08; baseline finish none → 2006-12-08 |
| 74 | Assign Use Cases | 2006-12-11 A | 2006-12-11 A | 0% → 100% | 191d → none | baseline start none → 2006-12-11; baseline finish none → 2006-12-11 |
| 75 | **Review and Update Use Case Documents (Task 2.1)** |  |  |  |  | baseline start none → 2006-12-12; baseline finish none → 2006-12-21 |
| 76 | **Create Study/Protocol** |  |  |  |  | baseline start none → 2006-12-12; baseline finish none → 2006-12-21 |
| 77 | Developer draft |  |  |  |  | baseline start none → 2006-12-12; baseline finish none → 2006-12-18 |
| 78 | Adopters/Collaborators Review |  |  |  |  | baseline start none → 2006-12-19; baseline finish none → 2006-12-20 |
| 79 | Developers Update |  |  |  |  | baseline start none → 2006-12-21; baseline finish none → 2006-12-21 |
| 80 | Submit to BAH (Task 2.1) |  |  |  |  | baseline start none → 2006-12-21; baseline finish none → 2006-12-21 |
| 81 | **Create Participant** |  |  |  |  | baseline start none → 2006-12-12; baseline finish none → 2006-12-21 |
| 82 | Developer draft |  |  |  |  | baseline start none → 2006-12-12; baseline finish none → 2006-12-18 |
| 83 | Adopters/Collaborators Review |  |  |  |  | baseline start none → 2006-12-19; baseline finish none → 2006-12-20 |
| 84 | Developers Update |  |  |  |  | baseline start none → 2006-12-21; baseline finish none → 2006-12-21 |
| 85 | Submit to BAH (Task 2.1) |  |  |  |  | baseline start none → 2006-12-21; baseline finish none → 2006-12-21 |
| 86 | **Create AE** |  |  |  |  | baseline start none → 2006-12-12; baseline finish none → 2006-12-21 |
| 87 | Developer draft |  |  |  |  | baseline start none → 2006-12-12; baseline finish none → 2006-12-18 |
| 88 | Adopters/Collaborators Review |  |  |  |  | baseline start none → 2006-12-19; baseline finish none → 2006-12-20 |
| 89 | Developers Update |  |  |  |  | baseline start none → 2006-12-21; baseline finish none → 2006-12-21 |
| 90 | Submit to BAH (Task 2.1) |  |  |  |  | baseline start none → 2006-12-21; baseline finish none → 2006-12-21 |
| 91 | **Login** |  |  |  |  | baseline start none → 2006-12-12; baseline finish none → 2006-12-20 |
| 92 | Developer draft |  |  |  |  | baseline start none → 2006-12-12; baseline finish none → 2006-12-18 |
| 93 | Adopters/Collaborators Review |  |  |  |  | baseline start none → 2006-12-19; baseline finish none → 2006-12-19 |
| 94 | Developers Update |  |  |  |  | baseline start none → 2006-12-20; baseline finish none → 2006-12-20 |
| 95 | Submit to BAH (Task 2.1) |  |  |  |  | baseline start none → 2006-12-20; baseline finish none → 2006-12-20 |
| 96 | **SRS document (Task 2.2)** |  |  |  |  | baseline start none → 2006-12-14; baseline finish none → 2006-12-29 |
| 97 | Developer draft |  |  |  |  | baseline start none → 2006-12-14; baseline finish none → 2006-12-20 |
| 98 | Adopter review |  |  |  |  | baseline start none → 2006-12-21; baseline finish none → 2006-12-28 |
| 99 | Developer update |  |  |  |  | baseline start none → 2006-12-29; baseline finish none → 2006-12-29 |
| 100 | Deliver SRS document to BAH (Task 2.2) |  |  |  |  | baseline start none → 2006-12-29; baseline finish none → 2006-12-29 |
| 101 | **Analysis and Design** |  |  |  |  | baseline start none → 2006-12-18; baseline finish none → 2007-01-02 |
| 102 | **Design Documents (Task 2.4)** |  |  |  |  | baseline start none → 2006-12-18; baseline finish none → 2006-12-28 |
| 103 | **Create Study/Protocol Design Documents** |  |  |  |  | baseline start none → 2006-12-18; baseline finish none → 2006-12-28 |
| 104 | Develop appropriate UML Artifacts |  |  |  |  | baseline start none → 2006-12-18; baseline finish none → 2006-12-22 |
| 105 | Developer draft |  |  |  |  | baseline start none → 2006-12-18; baseline finish none → 2006-12-22 |
| 106 | Adopters/Collaborators Review |  |  |  |  | baseline start none → 2006-12-26; baseline finish none → 2006-12-27 |
| 107 | Developers Update |  |  |  |  | baseline start none → 2006-12-28; baseline finish none → 2006-12-28 |
| 108 | Submit to BAH (Task 2.3 and 2.4) |  |  |  |  | baseline start none → 2006-12-28; baseline finish none → 2006-12-28 |
| 109 | **Create Participant Design Documents** |  |  |  |  | baseline start none → 2006-12-18; baseline finish none → 2006-12-28 |
| 110 | Develop appropriate UML Artifacts |  |  |  |  | baseline start none → 2006-12-18; baseline finish none → 2006-12-22 |
| 111 | Developer draft |  |  |  |  | baseline start none → 2006-12-18; baseline finish none → 2006-12-22 |
| 112 | Adopters/Collaborators Review |  |  |  |  | baseline start none → 2006-12-26; baseline finish none → 2006-12-27 |
| 113 | Developers Update |  |  |  |  | baseline start none → 2006-12-28; baseline finish none → 2006-12-28 |
| 114 | Submit to BAH (Task 2.3 and 2.4) |  |  |  |  | baseline start none → 2006-12-28; baseline finish none → 2006-12-28 |
| 115 | **Create AE Design Documents** |  |  |  |  | baseline start none → 2006-12-18; baseline finish none → 2006-12-28 |
| 116 | Develop appropriate UML Artifacts |  |  |  |  | baseline start none → 2006-12-18; baseline finish none → 2006-12-22 |
| 117 | Developer draft |  |  |  |  | baseline start none → 2006-12-18; baseline finish none → 2006-12-22 |
| 118 | Adopters/Collaborators Review |  |  |  |  | baseline start none → 2006-12-26; baseline finish none → 2006-12-27 |
| 119 | Developers Update |  |  |  |  | baseline start none → 2006-12-28; baseline finish none → 2006-12-28 |
| 120 | Submit to BAH (Task 2.3 and 2.4) |  |  |  |  | baseline start none → 2006-12-28; baseline finish none → 2006-12-28 |
| 121 | **Login Design Documents** |  |  |  |  | baseline start none → 2006-12-18; baseline finish none → 2006-12-28 |
| 122 | Develop appropriate UML Artifacts |  |  |  |  | baseline start none → 2006-12-18; baseline finish none → 2006-12-22 |
| 123 | Developer draft |  |  |  |  | baseline start none → 2006-12-18; baseline finish none → 2006-12-22 |
| 124 | Adopters/Collaborators Review |  |  |  |  | baseline start none → 2006-12-26; baseline finish none → 2006-12-27 |
| 125 | Developers Update |  |  |  |  | baseline start none → 2006-12-28; baseline finish none → 2006-12-28 |
| 126 | Submit to BAH (Task 2.3 and 2.4) |  |  |  |  | baseline start none → 2006-12-28; baseline finish none → 2006-12-28 |
| 127 | **UI/Mockups Design Documents** |  |  |  |  | baseline start none → 2006-12-18; baseline finish none → 2006-12-28 |
| 128 | Developer Draft |  |  |  |  | baseline start none → 2006-12-18; baseline finish none → 2006-12-22 |
| 129 | Adopters/Collaborators Review |  |  |  |  | baseline start none → 2006-12-26; baseline finish none → 2006-12-27 |
| 130 | Developers Update |  |  |  |  | baseline start none → 2006-12-28; baseline finish none → 2006-12-28 |
| 131 | Submit to BAH (Task 2.4) |  |  |  |  | baseline start none → 2006-12-28; baseline finish none → 2006-12-28 |
| 132 | **ESB** |  |  |  |  | baseline start none → 2006-12-18; baseline finish none → 2006-12-27 |
| 133 | Evalutate technologies by prototyping |  |  |  |  | baseline start none → 2006-12-18; baseline finish none → 2006-12-27 |
| 134 | **Grid service** |  |  |  |  | baseline start none → 2006-12-18; baseline finish none → 2006-12-27 |
| 135 | Evaluate caGrid 1.0 service infrastructure |  |  |  |  | baseline start none → 2006-12-18; baseline finish none → 2006-12-27 |
| 136 | **Database** |  |  |  |  | baseline start none → 2006-12-18; baseline finish none → 2006-12-20 |
| 137 | First draft of database structure |  |  |  |  | baseline start none → 2006-12-18; baseline finish none → 2006-12-20 |
| 138 | **Domain model** |  |  |  |  | baseline start none → 2006-12-18; baseline finish none → 2006-12-29 |
| 139 | Create model harmonized with BRIDG |  |  |  |  | baseline start none → 2006-12-18; baseline finish none → 2006-12-22 |
| 140 | Create first draft of model |  |  |  |  | baseline start none → 2006-12-26; baseline finish none → 2006-12-29 |

| ID | Task | Other |
| --- | --- | --- |
| 141 | **Security** | baseline start none → 2006-12-18; baseline finish none → 2007-01-02 |
| 142 | Evaluate caGrid 1.0 security infrastructure | baseline start none → 2006-12-18; baseline finish none → 2007-01-02 |
| 143 | **Implementation** | baseline start none → 2006-12-19; baseline finish none → 2006-12-26 |
| 144 | **Enterprise Service Bus** | baseline start none → 2006-12-19; baseline finish none → 2006-12-26 |
| 145 | Setup initial project | baseline start none → 2006-12-19; baseline finish none → 2006-12-26 |
| 146 | **Grid service** | baseline start none → 2006-12-19; baseline finish none → 2006-12-26 |
| 147 | Create grid service skeleton | baseline start none → 2006-12-19; baseline finish none → 2006-12-26 |
| 148 | **Create Study/Protocol** | baseline start none → 2006-12-19; baseline finish none → 2006-12-26 |
| 149 | Implement O/R mapping | baseline start none → 2006-12-19; baseline finish none → 2006-12-26 |
| 150 | Develop StudyDAO | baseline start none → 2006-12-19; baseline finish none → 2006-12-26 |
| 151 | Develop StudyService | baseline start none → 2006-12-19; baseline finish none → 2006-12-26 |
| 152 | Develop controller and command objects | baseline start none → 2006-12-19; baseline finish none → 2006-12-26 |
| 153 | Develop UI | baseline start none → 2006-12-19; baseline finish none → 2006-12-26 |
| 154 | Develop JUnit test cases | baseline start none → 2006-12-19; baseline finish none → 2006-12-26 |
| 155 | Develop | baseline start none → 2006-12-19; baseline finish none → 2006-12-26 |
| 156 | Login | baseline start none → 2006-12-19; baseline finish none → 2006-12-26 |
| 157 | **Create Participant** | baseline start none → 2006-12-19; baseline finish none → 2006-12-26 |
| 158 | Implement O/R mapping | baseline start none → 2006-12-19; baseline finish none → 2006-12-26 |
| 159 | Develop ParticipantDAO | baseline start none → 2006-12-19; baseline finish none → 2006-12-26 |
| 160 | Develop ParticipantService | baseline start none → 2006-12-19; baseline finish none → 2006-12-26 |
| 161 | Develop controller and command objects | baseline start none → 2006-12-19; baseline finish none → 2006-12-26 |
| 162 | Develop UI | baseline start none → 2006-12-19; baseline finish none → 2006-12-26 |
| 163 | Develop JUnit test cases | baseline start none → 2006-12-19; baseline finish none → 2006-12-26 |
| 164 | **Create AE** | baseline start none → 2006-12-19; baseline finish none → 2006-12-26 |
| 165 | Implement O/R mapping | baseline start none → 2006-12-19; baseline finish none → 2006-12-26 |
| 166 | Develop AdverseEventDAO | baseline start none → 2006-12-19; baseline finish none → 2006-12-26 |
| 167 | Develop AdverseEventService | baseline start none → 2006-12-19; baseline finish none → 2006-12-26 |
| 168 | Develop controller and command objects | baseline start none → 2006-12-19; baseline finish none → 2006-12-26 |
| 169 | Develop UI | baseline start none → 2006-12-19; baseline finish none → 2006-12-26 |
| 170 | Develop JUnit test cases | baseline start none → 2006-12-19; baseline finish none → 2006-12-26 |
| 171 | **Testing** | baseline start none → 2006-12-19; baseline finish none → 2006-12-29 |
| 172 | **Create Functional Tests** | baseline start none → 2006-12-19; baseline finish none → 2006-12-27 |
| 173 | Create Study | baseline start none → 2006-12-19; baseline finish none → 2006-12-26 |
| 174 | Create Participant | baseline start none → 2006-12-19; baseline finish none → 2006-12-26 |
| 175 | Login | baseline start none → 2006-12-19; baseline finish none → 2006-12-26 |
| 176 | Create AE | baseline start none → 2006-12-19; baseline finish none → 2006-12-26 |
| 177 | RTM | baseline start none → 2006-12-27; baseline finish none → 2006-12-27 |
| 178 | **Final Tests of Iteration** | baseline start none → 2006-12-27; baseline finish none → 2006-12-29 |
| 179 | Deploy Prototype (Task 2.5) | baseline start none → 2006-12-27; baseline finish none → 2006-12-27 |
| 180 | Validation and Acceptance Testing | baseline start none → 2006-12-28; baseline finish none → 2006-12-29 |
| 181 | Submit Test Results Report (Task 2.7) | baseline start none → 2006-12-29; baseline finish none → 2006-12-29 |
| 182 | **Iteration 2** | baseline start none → 2007-01-02; baseline finish none → 2007-02-01 |
| 183 | **Project Management** | baseline start none → 2007-01-02; baseline finish none → 2007-02-01 |
| 184 | Update Project Plan | baseline start none → 2007-01-02; baseline finish none → 2007-01-08 |
| 185 | Update Test Plan Document (Task 2.6) | baseline start none → 2007-01-08; baseline finish none → 2007-01-12 |
| 186 | **Detailed Construction and Transition Plan** | baseline start none → 2007-01-22; baseline finish none → 2007-02-01 |
| 187 | Update Construction and Transition Phases | baseline start none → 2007-01-22; baseline finish none → 2007-01-26 |
| 188 | Adopter review | baseline start none → 2007-01-29; baseline finish none → 2007-01-31 |
| 189 | Revisions | baseline start none → 2007-02-01; baseline finish none → 2007-02-01 |
| 190 | Deliver Design document to BAH (Task 2.9) | baseline start none → 2007-02-01; baseline finish none → 2007-02-01 |
| 191 | **CaAERS CCB (Task 2.10)** | baseline start none → 2007-01-10; baseline finish none → 2007-01-24 |
| 192 | CCB Meetings | baseline start none → 2007-01-10; baseline finish none → 2007-01-10 |
| 193 | CCB Meetings | baseline start none → 2007-01-24; baseline finish none → 2007-01-24 |
| 194 | **Weekly Team/Developers Meeting** | baseline start none → 2007-01-08; baseline finish none → 2007-01-29 |
| 195 | Weekly Team Meeting 1 | baseline start none → 2007-01-08; baseline finish none → 2007-01-08 |
| 196 | Weekly Team Meeting 2 | baseline start none → 2007-01-15; baseline finish none → 2007-01-15 |
| 197 | Weekly Team Meeting 3 | baseline start none → 2007-01-22; baseline finish none → 2007-01-22 |
| 198 | Weekly Team Meeting 4 | baseline start none → 2007-01-29; baseline finish none → 2007-01-29 |
| 199 | **Status and Risk Reporting** | baseline start none → 2007-01-12; baseline finish none → 2007-01-31 |
| 200 | Bi-weekly Risk Update in caMP (Task 1.4) | baseline start none → 2007-01-12; baseline finish none → 2007-01-12 |
| 201 | Bi-weekly Risk Matrix Update Meeting | baseline start none → 2007-01-12; baseline finish none → 2007-01-12 |
| 202 | Bi-weekly Risk Update in caMP (Task 1.4) | baseline start none → 2007-01-26; baseline finish none → 2007-01-26 |
| 203 | Bi-weekly Status Update Meeting with BAH/NCI | baseline start none → 2007-01-26; baseline finish none → 2007-01-26 |
| 204 | Monthly Status Report (Task 1.3) | baseline start none → 2007-01-31; baseline finish none → 2007-01-31 |
| 205 | Monthly Risk Matrix Update (Task 1.3) | baseline start none → 2007-01-31; baseline finish none → 2007-01-31 |
| 206 | Adopters Collaboration Report (Task 1.7) | baseline start none → 2007-01-31; baseline finish none → 2007-01-31 |
| 207 | **Collaboration Management Activities** | baseline start none → 2007-01-11; baseline finish none → 2007-01-25 |
| 208 | Bi-Weekly AE SIG Meeting | baseline start none → 2007-01-11; baseline finish none → 2007-01-11 |
| 209 | Bi-Weekly AE SIG Meeting | baseline start none → 2007-01-25; baseline finish none → 2007-01-25 |
| 210 | **Requirements** | baseline start none → 2007-01-02; baseline finish none → 2007-01-23 |

| ID | Task | Other |
| --- | --- | --- |
| 211 | Face-to-Face Meeting | baseline start none → 2007-01-04; baseline finish none → 2007-01-05 |
| 212 | F2F Meeting Notes (Task 1.5) | baseline start none → 2007-01-08; baseline finish none → 2007-01-09 |
| 213 | Use Case Selection | baseline start none → 2007-01-02; baseline finish none → 2007-01-03 |
| 214 | Use Case Assignments for Iteration 2 | baseline start none → 2007-01-04; baseline finish none → 2007-01-04 |
| 215 | **Use Case Specification and Realization (Task 2.1)** | baseline start none → 2007-01-05; baseline finish none → 2007-01-12 |
| 216 | Developer draft | baseline start none → 2007-01-05; baseline finish none → 2007-01-09 |
| 217 | Adopter review | baseline start none → 2007-01-10; baseline finish none → 2007-01-11 |
| 218 | Developer update | baseline start none → 2007-01-12; baseline finish none → 2007-01-12 |
| 219 | Deliver to BAH (Task 2.1) | baseline start none → 2007-01-12; baseline finish none → 2007-01-12 |
| 220 | **SRS document (Task 2.2)** | baseline start none → 2007-01-09; baseline finish none → 2007-01-23 |
| 221 | Developer draft | baseline start none → 2007-01-09; baseline finish none → 2007-01-15 |
| 222 | Adopter review | baseline start none → 2007-01-16; baseline finish none → 2007-01-22 |
| 223 | Developer update | baseline start none → 2007-01-23; baseline finish none → 2007-01-23 |
| 224 | Deliver SRS document to BAH (Task 2.2) | baseline start none → 2007-01-23; baseline finish none → 2007-01-23 |
| 225 | **Analysis and Design** | baseline start none → 2007-01-12; baseline finish none → 2007-01-26 |
| 226 | **Design Documents** | baseline start none → 2007-01-12; baseline finish none → 2007-01-23 |
| 227 | Developer draft | baseline start none → 2007-01-12; baseline finish none → 2007-01-18 |
| 228 | Adopter review | baseline start none → 2007-01-19; baseline finish none → 2007-01-22 |
| 229 | Developer update | baseline start none → 2007-01-23; baseline finish none → 2007-01-23 |
| 230 | Deliver Design document to BAH (Task 2.2) | baseline start none → 2007-01-23; baseline finish none → 2007-01-23 |
| 231 | **UML Diagrams (Task 2.3)** | baseline start none → 2007-01-12; baseline finish none → 2007-01-23 |
| 232 | Developer draft | baseline start none → 2007-01-12; baseline finish none → 2007-01-18 |
| 233 | Adopter review | baseline start none → 2007-01-19; baseline finish none → 2007-01-22 |
| 234 | Developer update | baseline start none → 2007-01-23; baseline finish none → 2007-01-23 |
| 235 | Deliver to BAH (Task 2.3) | baseline start none → 2007-01-23; baseline finish none → 2007-01-23 |
| 236 | **Technical/Architecture Guide** | baseline start none → 2007-01-12; baseline finish none → 2007-01-26 |
| 237 | Developer draft | baseline start none → 2007-01-12; baseline finish none → 2007-01-18 |
| 238 | Adopter review | baseline start none → 2007-01-19; baseline finish none → 2007-01-25 |
| 239 | Developer update | baseline start none → 2007-01-26; baseline finish none → 2007-01-26 |
| 240 | Deliver to BAH (Task 2.8) | baseline start none → 2007-01-26; baseline finish none → 2007-01-26 |
| 241 | **Implementation** | baseline start none → 2007-01-08; baseline finish none → 2007-01-24 |
| 242 | **Web interface** | baseline start none → 2007-01-08; baseline finish none → 2007-01-19 |
| 243 | Second web interface iteration | baseline start none → 2007-01-08; baseline finish none → 2007-01-19 |
| 244 | **Enterprise Service Bus** | baseline start none → 2007-01-08; baseline finish none → 2007-01-19 |
| 245 | Second ESB Iteration | baseline start none → 2007-01-08; baseline finish none → 2007-01-19 |
| 246 | **Grid service** | baseline start none → 2007-01-08; baseline finish none → 2007-01-24 |
| 247 | Implement Grid Service | baseline start none → 2007-01-08; baseline finish none → 2007-01-24 |
| 248 | **Implement Use Cases** | baseline start none → 2007-01-08; baseline finish none → 2007-01-23 |
| 249 | Implement O/R mapping | baseline start none → 2007-01-08; baseline finish none → 2007-01-19 |
| 250 | Develop DAO | baseline start none → 2007-01-10; baseline finish none → 2007-01-23 |
| 251 | Develop Service | baseline start none → 2007-01-10; baseline finish none → 2007-01-23 |
| 252 | Develop controller and command objects | baseline start none → 2007-01-10; baseline finish none → 2007-01-23 |
| 253 | Develop JUnit test cases | baseline start none → 2007-01-10; baseline finish none → 2007-01-18 |
| 254 | **Testing** | baseline start none → 2007-01-12; baseline finish none → 2007-01-26 |
| 255 | **Create Functional Tests** | baseline start none → 2007-01-12; baseline finish none → 2007-01-24 |
| 256 | Create Functional Tests for Use Cases | baseline start none → 2007-01-12; baseline finish none → 2007-01-18 |
| 257 | RTM | baseline start none → 2007-01-24; baseline finish none → 2007-01-24 |
| 258 | **Final Tests of Iteration** | baseline start none → 2007-01-24; baseline finish none → 2007-01-26 |
| 259 | Deploy Prototype for Iteration 2 (Task 2.5) | baseline start none → 2007-01-24; baseline finish none → 2007-01-24 |
| 260 | Validation and Acceptance Testing | baseline start none → 2007-01-25; baseline finish none → 2007-01-26 |
| 261 | Submit Test Results Report (Task 2.7) | baseline start none → 2007-01-26; baseline finish none → 2007-01-26 |
| 262 | **Construction Phase** | baseline start none → 2007-02-01; baseline finish none → 2007-09-12 |
| 263 | **Construction Phase Iteration 1** | baseline start none → 2007-02-01; baseline finish none → 2007-03-02 |
| 264 | Begin Iteration 1 | baseline start none → 2007-02-01; baseline finish none → 2007-02-01 |
| 265 | Environment Updates | baseline start none → 2007-02-01; baseline finish none → 2007-02-21 |
| 266 | Updates to Requirements, Use Case, UML, and Design Document | baseline start none → 2007-02-01; baseline finish none → 2007-02-28 |
| 267 | Test Plan and RTM Updates | baseline start none → 2007-02-01; baseline finish none → 2007-02-21 |
| 268 | Develop Code | baseline start none → 2007-02-01; baseline finish none → 2007-02-28 |
| 269 | Testing | baseline start none → 2007-02-01; baseline finish none → 2007-02-28 |
| 270 | Installation Guide Draft | baseline start none → 2007-02-22; baseline finish none → 2007-02-28 |
| 271 | Testing Results | baseline start none → 2007-02-22; baseline finish none → 2007-02-28 |
| 272 | Finish Iteration 1 | baseline start none → 2007-02-28; baseline finish none → 2007-02-28 |
| 273 | Iteration 1 Review and Feedback | baseline start none → 2007-02-26; baseline finish none → 2007-03-02 |
| 274 | **Construction Phase Iteration 2** | baseline start none → 2007-03-02; baseline finish none → 2007-04-04 |
| 275 | Begin Iteration 2 | baseline start none → 2007-03-02; baseline finish none → 2007-03-02 |
| 276 | Environment Updates | baseline start none → 2007-03-05; baseline finish none → 2007-03-16 |
| 277 | Updates to Requirements, Use Case, UML, and Design Document | baseline start none → 2007-03-05; baseline finish none → 2007-03-30 |
| 278 | Test Plan and RTM Updates | baseline start none → 2007-03-05; baseline finish none → 2007-03-23 |
| 279 | Develop Code | baseline start none → 2007-03-05; baseline finish none → 2007-03-30 |
| 280 | Testing | baseline start none → 2007-03-05; baseline finish none → 2007-03-30 |

| ID | Task | Other |
| --- | --- | --- |
| 281 | Testing Results | baseline start none → 2007-03-26; baseline finish none → 2007-03-30 |
| 282 | Installation Guide Drafts | baseline start none → 2007-03-26; baseline finish none → 2007-03-30 |
| 283 | Finish Iteration 2 | baseline start none → 2007-03-30; baseline finish none → 2007-03-30 |
| 284 | Iteration 2 Review and Feedback | baseline start none → 2007-03-29; baseline finish none → 2007-04-04 |
| 285 | **Construction Phase Iteration 3** | baseline start none → 2007-04-04; baseline finish none → 2007-05-07 |
| 286 | Begin Iteration 3 | baseline start none → 2007-04-04; baseline finish none → 2007-04-04 |
| 287 | Environment Updates | baseline start none → 2007-04-05; baseline finish none → 2007-04-18 |
| 288 | Updates to Requirements, Use Case, UML, and Design Document | baseline start none → 2007-04-05; baseline finish none → 2007-05-02 |
| 289 | Test Plan and RTM Updates | baseline start none → 2007-04-05; baseline finish none → 2007-04-25 |
| 290 | Develop Code | baseline start none → 2007-04-05; baseline finish none → 2007-05-02 |
| 291 | Testing | baseline start none → 2007-04-05; baseline finish none → 2007-05-02 |
| 292 | Installation Guide Drafts | baseline start none → 2007-04-26; baseline finish none → 2007-05-02 |
| 293 | Finish Iteration 3 | baseline start none → 2007-05-02; baseline finish none → 2007-05-02 |
| 294 | Iteration 3 Review and Feedback | baseline start none → 2007-05-01; baseline finish none → 2007-05-07 |
| 295 | **Construction Phase Iteration 4** | baseline start none → 2007-05-07; baseline finish none → 2007-06-07 |
| 296 | Begin Iteration 4 | baseline start none → 2007-05-07; baseline finish none → 2007-05-07 |
| 297 | Environment Updates | baseline start none → 2007-05-08; baseline finish none → 2007-05-21 |
| 298 | Updates to Requirements, Use Case, UML, and Design Document | baseline start none → 2007-05-08; baseline finish none → 2007-06-04 |
| 299 | Test Plan and RTM Updates | baseline start none → 2007-05-08; baseline finish none → 2007-05-28 |
| 300 | Develop Code | baseline start none → 2007-05-08; baseline finish none → 2007-06-04 |
| 301 | Testing | baseline start none → 2007-05-08; baseline finish none → 2007-06-04 |
| 302 | Installation Guide Draft | baseline start none → 2007-05-29; baseline finish none → 2007-06-04 |
| 303 | Administrators Guide Draft | baseline start none → 2007-05-29; baseline finish none → 2007-06-04 |
| 304 | End User Guide Draft | baseline start none → 2007-05-29; baseline finish none → 2007-06-04 |
| 305 | Finish Iteration 4 | baseline start none → 2007-06-04; baseline finish none → 2007-06-04 |
| 306 | Iteration 4 Review and Feedback | baseline start none → 2007-06-01; baseline finish none → 2007-06-07 |
| 307 | **Construction Phase Iteration 5** | baseline start none → 2007-06-07; baseline finish none → 2007-07-10 |
| 308 | Begin Iteration 5 | baseline start none → 2007-06-07; baseline finish none → 2007-06-07 |
| 309 | Environment Updates | baseline start none → 2007-06-08; baseline finish none → 2007-06-21 |
| 310 | Updates to Requirements, Use Case, UML, and Design Document | baseline start none → 2007-06-08; baseline finish none → 2007-07-05 |
| 311 | Test Plan and RTM Updates | baseline start none → 2007-06-08; baseline finish none → 2007-06-28 |
| 312 | Develop Code | baseline start none → 2007-06-08; baseline finish none → 2007-07-05 |
| 313 | Testing | baseline start none → 2007-06-08; baseline finish none → 2007-07-05 |
| 314 | Testing Results | baseline start none → 2007-06-29; baseline finish none → 2007-07-05 |
| 315 | Installation Guide Draft | baseline start none → 2007-06-29; baseline finish none → 2007-07-05 |
| 316 | Administrators Guide Draft | baseline start none → 2007-06-29; baseline finish none → 2007-07-05 |
| 317 | End User Guide Draft | baseline start none → 2007-06-08; baseline finish none → 2007-06-14 |
| 318 | Finish Iteration 5 | baseline start none → 2007-07-05; baseline finish none → 2007-07-05 |
| 319 | Iteration 5 Review and Feedback | baseline start none → 2007-07-04; baseline finish none → 2007-07-10 |
| 320 | **Construction Phase Iteration 6** | baseline start none → 2007-07-10; baseline finish none → 2007-08-10 |
| 321 | Begin Iteration 6 | baseline start none → 2007-07-10; baseline finish none → 2007-07-10 |
| 322 | Environment Updates | baseline start none → 2007-07-11; baseline finish none → 2007-07-24 |
| 323 | Updates to Requirements, Use Case, UML, and Design Document | baseline start none → 2007-07-11; baseline finish none → 2007-08-07 |
| 324 | Test Plan and RTM Updates | baseline start none → 2007-07-11; baseline finish none → 2007-07-31 |
| 325 | Develop Code | baseline start none → 2007-07-11; baseline finish none → 2007-08-07 |
| 326 | Installation Guide Draft | baseline start none → 2007-08-01; baseline finish none → 2007-08-07 |
| 327 | Administrators Guide Draft | baseline start none → 2007-08-01; baseline finish none → 2007-08-07 |
| 328 | End User Guide Draft | baseline start none → 2007-08-01; baseline finish none → 2007-08-07 |
| 329 | Testing | baseline start none → 2007-07-11; baseline finish none → 2007-08-07 |
| 330 | Testing Results | baseline start none → 2007-08-01; baseline finish none → 2007-08-07 |
| 331 | Finish Iteration 6 | baseline start none → 2007-08-07; baseline finish none → 2007-08-07 |
| 332 | Iteration 6 Review and Feedback | baseline start none → 2007-08-06; baseline finish none → 2007-08-10 |
| 333 | **Construction Phase Iteration 7** | baseline start none → 2007-08-10; baseline finish none → 2007-09-12 |
| 334 | Begin Iteration 7 | baseline start none → 2007-08-10; baseline finish none → 2007-08-10 |
| 335 | Environment Updates | baseline start none → 2007-08-13; baseline finish none → 2007-08-24 |
| 336 | Finalize Requirements, Use Case, UML, and Design Document | baseline start none → 2007-08-13; baseline finish none → 2007-08-24 |
| 337 | Test Plan and RTM Updates (Task 3.6) | baseline start none → 2007-08-13; baseline finish none → 2007-08-31 |
| 338 | Finalize Code Base (Task 3.5) | baseline start none → 2007-08-13; baseline finish none → 2007-09-07 |
| 339 | Testing | baseline start none → 2007-08-13; baseline finish none → 2007-09-07 |
| 340 | Final Test Results Report (3.8) | baseline start none → 2007-09-03; baseline finish none → 2007-09-07 |
| 341 | Final Transition Phase Plan (3.16) | baseline start none → 2007-09-03; baseline finish none → 2007-09-07 |
| 342 | Compatibility Review Submission Package (Task 3.12) | baseline start none → 2007-08-27; baseline finish none → 2007-09-07 |
| 343 | Generation of CDEs (Task 3.11.2) | baseline start none → 2007-08-27; baseline finish none → 2007-09-07 |
| 344 | Final Administrators Guide (Task 3.13) | baseline start none → 2007-09-03; baseline finish none → 2007-09-07 |
| 345 | Final End Users Guide (Task 3.15.2) | baseline start none → 2007-09-03; baseline finish none → 2007-09-07 |
| 346 | Final Installation Guide (Task 3.10) | baseline start none → 2007-09-03; baseline finish none → 2007-09-07 |
| 347 | Release Notes (Task 3.14) | baseline start none → 2007-09-03; baseline finish none → 2007-09-07 |
| 348 | Finish Iteration 7 | baseline start none → 2007-09-07; baseline finish none → 2007-09-07 |
| 349 | Iteration 7 Review and Feedback | baseline start none → 2007-09-06; baseline finish none → 2007-09-12 |
| 350 | Transition Phase Go/No-Go Gate | baseline start none → 2007-09-12; baseline finish none → 2007-09-12 |

| ID | Task | Other |
| --- | --- | --- |
| 351 | **Transition Phase** | baseline start none → 2007-09-13; baseline finish none → 2007-09-26 |
| 352 | Deployment Plan (Task 4.1) | baseline start none → 2007-09-13; baseline finish none → 2007-09-14 |
| 353 | Deployment | baseline start none → 2007-09-17; baseline finish none → 2007-09-21 |
| 354 | Deployment Report (Task 4.2) | baseline start none → 2007-09-13; baseline finish none → 2007-09-13 |
| 355 | Code Release Updates (if needed) (Task 4.3) | baseline start none → 2007-09-13; baseline finish none → 2007-09-26 |
| 356 | Guide Updates (if needed) | baseline start none → 2007-09-13; baseline finish none → 2007-09-26 |
| 357 | **Project Closing Activities** | baseline start none → 2007-09-13; baseline finish none → 2007-09-26 |
| 358 | Lessons Learned (Task 1.6) | baseline start none → 2007-09-13; baseline finish none → 2007-09-26 |
| 359 | Archiving | baseline start none → 2007-09-13; baseline finish none → 2007-09-26 |
| 360 | Contract Closeout | baseline start none → 2007-09-13; baseline finish none → 2007-09-26 |

## Version 6 (saved 2007-01-04, file caAERS-ProjectSchedule-DRAFT-Version2.mpp)

Note of the change: SVN-Revision: 102

Last finish stays 2007-09-26. Complete tasks 30 → 75.

Changed:

| ID | Task | Start | Finish | Complete | Total float |
| --- | --- | --- | --- | --- | --- |
| 1 | **caAERS Application Development Project** |  |  | 6% → 23% |  |
| 2 | **Elaboration Phase** |  |  | 14% → 56% |  |
| 3 | **Iteration 1** |  |  | 20% → 81% |  |
| 4 | **Project Management** |  |  | 63% → 82% |  |
| 10 | **Project Management Plan Baseline (Task 1.1)** |  | 2006-12-26 A | 70% → 100% | 195d → none |
| 13 | Adopters/Collaborators Review |  | 2006-12-21 A | 75% → 100% | 195d → none |
| 14 | Updates | 2006-12-22 A | 2006-12-26 A | 0% → 100% | 195d → none |
| 15 | Submit to BAH | 2006-12-26 A | 2006-12-26 A | 0% → 100% | 195d → none |
| 26 | **Risk and Issue Management Plan** |  | 2006-12-15 A | 45% → 100% | 201d → none |
| 28 | Adopters/Collaborators Review | 2006-12-08 A | 2006-12-14 A | 0% → 100% | 201d → none |
| 29 | Developers Update | 2006-12-15 A | 2006-12-15 A | 0% → 100% | 201d → none |
| 30 | Submit to BAH | 2006-12-15 A | 2006-12-15 A | 0% → 100% | 201d → none |
| 36 | **Test and QA Mgmt Plan Document (Task 2.6)** | 2006-12-18 A |  | 0% → 17% |  |
| 37 | Developer Draft | 2006-12-18 A |  | 0% → 50% |  |
| 41 | **Change Control Board Plan and Charter (Task 2.10)** | 2006-12-18 A |  | 0% → 11% |  |
| 42 | Developer Draft | 2006-12-18 A |  | 0% → 25% |  |
| 46 | **caAERS F2F (Cross-Cutting WS) Meeting Planning** |  |  | 75% → 99% |  |
| 49 | Review by Adopters/Collaborators |  | 2006-12-19 A | 50% → 100% | 199d → none |
| 51 | **Weekly Team/Developers Meeting** |  | 2006-12-26 A | 67% → 100% | 195d → none |
| 54 | Weekly Team Meeting 3 | 2006-12-26 A | 2006-12-26 A | 0% → 100% | 195d → none |
| 55 | **Status and Risk Reporting** | 2006-12-15 A |  | 0% → 99% | 10d → 192d |
| 56 | Bi-weekly Risk Update in caMP (Task 1.4) | 2006-12-15 A | 2006-12-15 A | 0% → 100% | 202d → none |
| 57 | Bi-weekly Risk Matrix Update Meeting | 2006-12-22 A | 2006-12-22 A | 0% → 100% | 196d → none |
| 58 | Bi-weekly Risk Update in caMP (Task 1.4) | 2006-12-29 A | 2006-12-29 A | 0% → 100% | 193d → none |
| 59 | Bi-weekly Status Update Meeting with BAH/NCI | 2006-12-29 A | 2006-12-29 A | 0% → 100% | 192d → none |
| 63 | **Collaboration Management Activities** | 2006-12-14 A | 2006-12-28 A | 0% → 100% | 193d → none |
| 64 | Bi-Weekly AE SIG Meeting | 2006-12-14 A | 2006-12-14 A | 0% → 100% | 202d → none |
| 65 | Bi-Weekly AE SIG Meeting | 2006-12-28 A | 2006-12-28 A | 0% → 100% | 193d → none |
| 71 | **Requirements** |  |  | 14% → 80% |  |
| 75 | **Review and Update Use Case Documents (Task 2.1)** | 2006-12-12 A |  | 0% → 91% |  |
| 76 | **Create Study/Protocol** | 2006-12-12 A |  | 0% → 91% |  |
| 77 | Developer draft | 2006-12-12 A | 2006-12-18 A | 0% → 100% | 197d → none |
| 78 | Adopters/Collaborators Review | 2006-12-19 A |  | 0% → 75% | 197d → 197.75d |
| 79 | Developers Update | 2006-12-21 A |  | 0% → 75% |  |
| 81 | **Create Participant** | 2006-12-12 A |  | 0% → 91% |  |
| 82 | Developer draft | 2006-12-12 A | 2006-12-18 A | 0% → 100% | 197d → none |
| 83 | Adopters/Collaborators Review | 2006-12-19 A |  | 0% → 75% | 197d → 197.75d |
| 84 | Developers Update | 2006-12-21 A |  | 0% → 75% |  |
| 86 | **Create AE** | 2006-12-12 A |  | 0% → 91% |  |
| 87 | Developer draft | 2006-12-12 A | 2006-12-18 A | 0% → 100% | 197d → none |
| 88 | Adopters/Collaborators Review | 2006-12-19 A |  | 0% → 75% | 197d → 197.75d |
| 89 | Developers Update | 2006-12-21 A |  | 0% → 75% |  |
| 91 | **Login** | 2006-12-12 A |  | 0% → 93% |  |
| 92 | Developer draft | 2006-12-12 A | 2006-12-18 A | 0% → 100% | 198d → none |
| 93 | Adopters/Collaborators Review | 2006-12-19 A |  | 0% → 75% | 198d → 198.75d |
| 94 | Developers Update | 2006-12-20 A |  | 0% → 75% |  |
| 96 | **SRS document (Task 2.2)** | 2006-12-14 A |  | 0% → 34% |  |
| 97 | Developer draft | 2006-12-14 A |  | 0% → 75% |  |
| 101 | **Analysis and Design** | 2006-12-18 A |  | 0% → 77% |  |
| 102 | **Design Documents (Task 2.4)** | 2006-12-18 A |  | 0% → 71% |  |
| 103 | **Create Study/Protocol Design Documents** | 2006-12-18 A |  | 0% → 77% |  |
| 104 | Develop appropriate UML Artifacts | 2006-12-18 A | 2006-12-22 A | 0% → 100% | 196d → none |
| 105 | Developer draft | 2006-12-18 A | 2006-12-22 A | 0% → 100% | 193d → none |
| 109 | **Create Participant Design Documents** | 2006-12-18 A |  | 0% → 77% |  |
| 110 | Develop appropriate UML Artifacts | 2006-12-18 A | 2006-12-22 A | 0% → 100% | 196d → none |
| 111 | Developer draft | 2006-12-18 A | 2006-12-22 A | 0% → 100% | 193d → none |
| 115 | **Create AE Design Documents** | 2006-12-18 A |  | 0% → 67% |  |
| 116 | Develop appropriate UML Artifacts | 2006-12-18 A | 2006-12-22 A | 0% → 100% | 196d → none |
| 117 | Developer draft | 2006-12-18 A |  | 0% → 75% |  |
| 121 | **Login Design Documents** | 2006-12-18 A |  | 0% → 77% |  |
| 122 | Develop appropriate UML Artifacts | 2006-12-18 A | 2006-12-22 A | 0% → 100% | 196d → none |
| 123 | Developer draft | 2006-12-18 A | 2006-12-22 A | 0% → 100% | 193d → none |
| 127 | **UI/Mockups Design Documents** | 2006-12-18 A |  | 0% → 47% |  |
| 128 | Developer Draft | 2006-12-18 A |  | 0% → 75% |  |
| 132 | **ESB** | 2006-12-18 A | 2006-12-27 A | 0% → 100% | 194d → none |
| 133 | Evalutate technologies by prototyping | 2006-12-18 A | 2006-12-27 A | 0% → 100% | 194d → none |
| 134 | **Grid service** | 2006-12-18 A | 2006-12-27 A | 0% → 100% | 194d → none |
| 135 | Evaluate caGrid 1.0 service infrastructure | 2006-12-18 A | 2006-12-27 A | 0% → 100% | 194d → none |
| 136 | **Database** | 2006-12-18 A | 2006-12-20 A | 0% → 100% | 198d → none |
| 137 | First draft of database structure | 2006-12-18 A | 2006-12-20 A | 0% → 100% | 198d → none |

| ID | Task | Start | Finish | Complete | Total float |
| --- | --- | --- | --- | --- | --- |
| 138 | **Domain model** | 2006-12-18 A |  | 0% → 50% |  |
| 139 | Create model harmonized with BRIDG | 2006-12-18 A |  | 0% → 50% | 192d → 194d |
| 140 | Create first draft of model | 2006-12-26 A |  | 0% → 50% |  |
| 141 | **Security** | 2006-12-18 A | 2007-01-02 A | 0% → 100% | 191d → none |
| 142 | Evaluate caGrid 1.0 security infrastructure | 2006-12-18 A | 2007-01-02 A | 0% → 100% | 191d → none |
| 143 | **Implementation** | 2006-12-19 A |  | 0% → 95% |  |
| 144 | **Enterprise Service Bus** | 2006-12-19 A | 2006-12-26 A | 0% → 100% | 2d → none |
| 145 | Setup initial project | 2006-12-19 A | 2006-12-26 A | 0% → 100% | 2d → none |
| 146 | **Grid service** | 2006-12-19 A |  | 0% → 50% |  |
| 147 | Create grid service skeleton | 2006-12-19 A |  | 0% → 50% |  |
| 148 | **Create Study/Protocol** | 2006-12-19 A | 2006-12-26 A | 0% → 100% | 2d → none |
| 149 | Implement O/R mapping | 2006-12-19 A | 2006-12-26 A | 0% → 100% | 2d → none |
| 150 | Develop StudyDAO | 2006-12-19 A | 2006-12-26 A | 0% → 100% | 2d → none |
| 151 | Develop StudyService | 2006-12-19 A | 2006-12-26 A | 0% → 100% | 2d → none |
| 152 | Develop controller and command objects | 2006-12-19 A | 2006-12-26 A | 0% → 100% | 2d → none |
| 153 | Develop UI | 2006-12-19 A | 2006-12-26 A | 0% → 100% | 2d → none |
| 154 | Develop JUnit test cases | 2006-12-19 A | 2006-12-26 A | 0% → 100% | 2d → none |
| 155 | Develop | 2006-12-19 A | 2006-12-26 A | 0% → 100% | 2d → none |
| 156 | Login | 2006-12-19 A | 2006-12-26 A | 0% → 100% | 2d → none |
| 157 | **Create Participant** | 2006-12-19 A | 2006-12-26 A | 0% → 100% | 2d → none |
| 158 | Implement O/R mapping | 2006-12-19 A | 2006-12-26 A | 0% → 100% | 2d → none |
| 159 | Develop ParticipantDAO | 2006-12-19 A | 2006-12-26 A | 0% → 100% | 2d → none |
| 160 | Develop ParticipantService | 2006-12-19 A | 2006-12-26 A | 0% → 100% | 2d → none |
| 161 | Develop controller and command objects | 2006-12-19 A | 2006-12-26 A | 0% → 100% | 2d → none |
| 162 | Develop UI | 2006-12-19 A | 2006-12-26 A | 0% → 100% | 2d → none |
| 163 | Develop JUnit test cases | 2006-12-19 A | 2006-12-26 A | 0% → 100% | 2d → none |
| 164 | **Create AE** | 2006-12-19 A |  | 0% → 92% |  |
| 165 | Implement O/R mapping | 2006-12-19 A | 2006-12-26 A | 0% → 100% | 2d → none |
| 166 | Develop AdverseEventDAO | 2006-12-19 A |  | 0% → 90% |  |
| 167 | Develop AdverseEventService | 2006-12-19 A |  | 0% → 90% |  |
| 168 | Develop controller and command objects | 2006-12-19 A |  | 0% → 90% |  |
| 169 | Develop UI | 2006-12-19 A |  | 0% → 90% |  |
| 170 | Develop JUnit test cases | 2006-12-19 A |  | 0% → 90% |  |
| 171 | **Testing** | 2006-12-19 A |  | 0% → 22% | 7d → 192d |
| 172 | **Create Functional Tests** | 2006-12-19 A |  | 0% → 25% |  |
| 173 | Create Study | 2006-12-19 A |  | 0% → 25% |  |
| 174 | Create Participant | 2006-12-19 A |  | 0% → 25% |  |
| 175 | Login | 2006-12-19 A |  | 0% → 25% |  |
| 176 | Create AE | 2006-12-19 A |  | 0% → 25% | 194d → 194.25d |
| 177 | RTM | 2006-12-27 A |  | 0% → 25% |  |

## Version 7 (saved 2007-01-10, file caAERS-ProjectSchedule-JanuaryUpdate.mpp)

Note of the change: SVN-Revision: 126

Last finish stays 2007-09-26. Complete tasks 75 → 78.

Added:

| ID | Task | Duration | Start | Finish | Constraint |
| --- | --- | --- | --- | --- | --- |
| 177 | Start Iteration 2 | 0d | 2007-01-02 | 2007-01-02 | start no earlier than 2007-01-02 |

Removed: 192 CCB Meetings

Changed:

| ID | Task | Start | Finish | Duration | Complete | Total float | Predecessors | Other |
| --- | --- | --- | --- | --- | --- | --- | --- | --- |
| 3 | **Iteration 1** |  | 2007-01-03 → 2007-01-02 (-1d) | 22d → 21d | 81% → 83% | 190d → 191d |  |  |
| 4 | **Project Management** |  | 2007-01-03 → 2006-12-29 (-5d) | 22d → 20d | 82% → 91% | 190d → 192d |  |  |
| 50 | **Status and Risk Reporting** |  | 2006-12-29 A |  | 99% → 100% | 192d → none |  |  |
| 55 | Monthly Status Report (Task 1.3) | 2006-12-29 A | 2006-12-29 A |  | 0% → 100% | 193d → none |  |  |
| 56 | Monthly Risk Matrix Update (Task 1.3) | 2006-12-29 A | 2006-12-29 A |  | 0% → 100% | 0d → none |  |  |
| 176 | **Iteration 2** | 2007-01-02 → 2006-12-18 A (-15d) |  | 23d → 32d | 0% → 1% | 2d → 169d |  | constraint start no earlier than 2007-01-01 → none |
| 178 | **Project Management** | 2007-01-02 → 2006-12-18 A (-15d) |  | 23d → 32d | 0% → 5% |  | none → 177SS |  |
| 186 | **Change Control Board Plan and Charter (Task 2.10)** |  | 2007-01-03 → 2007-01-22 (+19d) | 11d → 23.75d | 11% → 8% | 190d → 177.25d |  |  |
| 187 | Developer Draft |  | 2006-12-22 → 2007-01-12 (+21d) | 5d → 10d | 25% → 13% | 190d → 177.25d |  |  |
| 188 | Adopters/Collobators Review | 2006-12-26 → 2007-01-12 (+17d) | 2007-01-02 → 2007-01-19 (+17d) |  |  | 190d → 177.25d |  |  |
| 189 | Developer Update | 2007-01-03 → 2007-01-19 (+16d) | 2007-01-03 → 2007-01-22 (+19d) |  |  | 190d → 177.25d |  |  |
| 190 | Submit to BAH | 2007-01-03 → 2007-01-22 (+19d) | 2007-01-03 → 2007-01-22 (+19d) |  |  | 190d → 177.25d |  |  |
| 191 | **CaAERS CCB (Task 2.10)** | 2007-01-10 → 2007-01-24 (+14d) |  | 11d → 1d |  |  |  |  |
| 193 | **Weekly Team/Developers Meeting** | 2007-01-08 A |  |  | 0% → 25% |  |  |  |
| 194 | Weekly Team Meeting 1 | 2007-01-08 A | 2007-01-08 A |  | 0% → 100% | 187d → none |  |  |
| 271 | Adopters Collaboration Report (Task 1.7) | 2006-12-29 → 2007-02-28 (+61d) | 2006-12-29 → 2007-02-28 (+61d) |  |  | 193d → 0d |  | constraint start no earlier than 2006-12-29 → must finish on 2007-02-28 |

## Version 8 (saved 2007-01-19, file caAERS-ProjectSchedule-JanuaryUpdate.mpp)

Note of the change: SVN-Revision: 226

Last finish stays 2007-09-26. Complete tasks 78 → 134.

Added:

| ID | Task | Duration | Start | Finish | Predecessors | Constraint | Resources |
| --- | --- | --- | --- | --- | --- | --- | --- |
| 208 | Adopters Mtg | 1d | 2007-01-18 A | 2007-01-18 A |  | start no earlier than 2007-01-18 |  |
| 216 | **Protocol Abstraction** | 14d | 2007-01-02 | 2007-01-19 |  |  |  |
| 218 | Adopters/Collobators Review | 5d | 2007-01-09 | 2007-01-15 | 217 |  | Mayo; WF |
| 219 | Developer Update | 4d | 2007-01-16 | 2007-01-19 | 218 |  | Sean |
| 220 | **AE Data Collection** | 14d | 2007-01-02 | 2007-01-19 |  |  |  |
| 222 | Adopters/Collobators Review | 5d | 2007-01-09 | 2007-01-15 | 221 |  | Mayo; WF |
| 223 | Developer Update | 4d | 2007-01-16 | 2007-01-19 | 222 |  | Sean |
| 224 | **Triggers/Notification** | 14d | 2007-01-02 | 2007-01-19 |  |  |  |
| 226 | Adopters/Collobators Review | 5d | 2007-01-09 | 2007-01-15 | 225 |  | Mayo; WF |
| 227 | Developer Update | 4d | 2007-01-16 | 2007-01-19 | 226 |  | Sean |
| 228 | Submit Updated Use Case Document to BAH (Task 2.1) | 0d | 2007-01-19 | 2007-01-19 | 219, 223, 227 |  |  |
| 236 | **Protocol Abstraction** | 13d | 2007-01-09 A | 2007-01-25 |  |  |  |
| 237 | Develop appropriate UML Artifacts | 5d | 2007-01-09 A | 2007-01-15 |  |  | Krikor |
| 238 | Create Design Document | 5d | 2007-01-16 A | 2007-01-22 | 237 |  | Krikor |
| 239 | Adopters/Collaborators Review | 2d | 2007-01-23 | 2007-01-24 | 238 |  | Krikor |
| 240 | Developers Update | 1d | 2007-01-25 | 2007-01-25 | 239 |  | Krikor |
| 241 | **AE Data Collection** | 13d | 2007-01-09 A | 2007-01-25 |  |  |  |
| 242 | Develop appropriate UML Artifacts | 5d | 2007-01-09 A | 2007-01-15 |  |  | Rhett |
| 243 | Create Design Document | 5d | 2007-01-16 A | 2007-01-22 | 242 |  | Rhett |
| 244 | Adopters/Collaborators Review | 2d | 2007-01-23 | 2007-01-24 | 243 |  | Rhett |
| 245 | Developers Update | 1d | 2007-01-25 | 2007-01-25 | 244 |  | Rhett |
| 246 | **Triggers/Notification** | 13d | 2007-01-09 A | 2007-01-25 |  |  |  |
| 247 | Develop appropriate UML Artifacts | 5d | 2007-01-09 A | 2007-01-15 |  |  | Sujith |
| 248 | Create Design Document | 5d | 2007-01-16 A | 2007-01-22 | 247 |  | Sujith |
| 249 | Adopters/Collaborators Review | 2d | 2007-01-23 | 2007-01-24 | 248 |  | Sujith |
| 250 | Developers Update | 1d | 2007-01-25 | 2007-01-25 | 249 |  | Sujith |
| 252 | Deliver UML to BAH (Task 2.3) | 0d | 2007-01-25 | 2007-01-25 | 240, 245, 250 |  | Edmond |
| 266 | **Protocol Abstraction** | 12d | 2007-01-09 A | 2007-01-24 | 236SS |  |  |
| 267 | UI - Incorporate HTML and CSS | 5d | 2007-01-16 A | 2007-01-22 | 260 |  |  |
| 273 | **AE Data Collection** | 6d? | 2007-01-09 A | 2007-01-16 | 241SS |  |  |
| 274 | UI - Incorporate HTML and CSS | 1d? | 2007-01-16 A | 2007-01-16 | 260 |  |  |
| 275 | Implement O/R mapping | 1d? | 2007-01-09 A | 2007-01-09 |  |  |  |
| 276 | Develop DAO | 1d? | 2007-01-09 A | 2007-01-09 |  |  |  |
| 277 | Develop Service | 1d? | 2007-01-09 A | 2007-01-09 |  |  |  |
| 278 | Develop controller and command objects | 1d? | 2007-01-09 A | 2007-01-09 |  |  |  |
| 279 | Develop JUnit test cases | 1d? | 2007-01-09 A | 2007-01-09 |  |  |  |
| 280 | **Triggers/Notification** | 15d | 2007-01-09 A | 2007-01-29 | 246SS |  |  |
| 281 | JBOSS Rules Setup/Development | 15d | 2007-01-09 A | 2007-01-29 |  |  |  |

Removed: 216 Adopter review; 217 Developer update; 218 Deliver to BAH (Task 2.1); 227 Adopter review; 228 Developer update; 230 UML Diagrams (Task 2.3); 232 Adopter review; 233 Developer update; 234 Deliver to BAH (Task 2.3)

Changed:

| ID | Task | Start | Finish | Duration | Complete | Total float |
| --- | --- | --- | --- | --- | --- | --- |
| 1 | **caAERS Application Development Project** |  |  | 212d → 212d? | 23% → 32% |  |
| 2 | **Elaboration Phase** |  |  | 43d → 43d? | 56% → 72% |  |
| 3 | **Iteration 1** |  |  |  | 83% → 94% |  |
| 4 | **Project Management** |  | 2006-12-29 A |  | 91% → 100% | 192d → none |
| 36 | **Test and QA Mgmt Plan Document (Task 2.6)** |  | 2006-12-29 A |  | 17% → 100% | 192d → none |
| 37 | Developer Draft |  | 2006-12-20 A |  | 50% → 100% | 192d → none |
| 38 | Adopters/Collobators Review | 2006-12-21 A | 2006-12-28 A |  | 0% → 100% | 192d → none |
| 39 | Developer Update | 2006-12-29 A | 2006-12-29 A |  | 0% → 100% | 192d → none |
| 40 | Submit to BAH | 2006-12-29 A | 2006-12-29 A |  | 0% → 100% | 192d → none |
| 41 | **caAERS F2F (Cross-Cutting WS) Meeting Planning** |  | 2006-12-19 A |  | 99% → 100% | 199d → none |
| 45 | Finalize F2F Meeting Agenda and Details | 2006-12-19 A | 2006-12-19 A |  | 0% → 100% | 199d → none |
| 65 | **Requirements** |  | 2006-12-29 A |  | 80% → 100% | 192d → none |
| 69 | **Review and Update Use Case Documents (Task 2.1)** |  | 2006-12-21 A |  | 91% → 100% | 197d → none |
| 70 | **Create Study/Protocol** |  | 2006-12-21 A |  | 91% → 100% | 197d → none |
| 72 | Adopters/Collaborators Review |  | 2006-12-20 A |  | 75% → 100% | 197.75d → none |
| 73 | Developers Update |  | 2006-12-21 A |  | 75% → 100% | 197d → none |
| 74 | Submit to BAH (Task 2.1) | 2006-12-21 A | 2006-12-21 A |  | 0% → 100% | 197d → none |
| 75 | **Create Participant** |  | 2006-12-21 A |  | 91% → 100% | 197d → none |
| 77 | Adopters/Collaborators Review |  | 2006-12-20 A |  | 75% → 100% | 197.75d → none |
| 78 | Developers Update |  | 2006-12-21 A |  | 75% → 100% | 197d → none |
| 79 | Submit to BAH (Task 2.1) | 2006-12-21 A | 2006-12-21 A |  | 0% → 100% | 197d → none |
| 80 | **Create AE** |  | 2006-12-21 A |  | 91% → 100% | 197d → none |
| 82 | Adopters/Collaborators Review |  | 2006-12-20 A |  | 75% → 100% | 197.75d → none |
| 83 | Developers Update |  | 2006-12-21 A |  | 75% → 100% | 197d → none |
| 84 | Submit to BAH (Task 2.1) | 2006-12-21 A | 2006-12-21 A |  | 0% → 100% | 197d → none |
| 85 | **Login** |  | 2006-12-20 A |  | 93% → 100% | 198d → none |
| 87 | Adopters/Collaborators Review |  | 2006-12-19 A |  | 75% → 100% | 198.75d → none |
| 88 | Developers Update |  | 2006-12-20 A |  | 75% → 100% | 198d → none |
| 89 | Submit to BAH (Task 2.1) | 2006-12-20 A | 2006-12-20 A |  | 0% → 100% | 198d → none |
| 90 | **SRS document (Task 2.2)** |  | 2006-12-29 A |  | 34% → 100% | 192d → none |
| 91 | Developer draft |  | 2006-12-20 A |  | 75% → 100% | 192d → none |
| 92 | Adopter review | 2006-12-21 A | 2006-12-28 A |  | 0% → 100% | 192d → none |
| 93 | Developer update | 2006-12-29 A | 2006-12-29 A |  | 0% → 100% | 192d → none |
| 94 | Deliver SRS document to BAH (Task 2.2) | 2006-12-29 A | 2006-12-29 A |  | 0% → 100% | 192d → none |
| 95 | **Analysis and Design** |  |  |  | 77% → 95% |  |
| 96 | **Design Documents (Task 2.4)** |  | 2006-12-28 A |  | 71% → 100% | 193d → none |
| 97 | **Create Study/Protocol Design Documents** |  | 2006-12-28 A |  | 77% → 100% | 193d → none |
| 100 | Adopters/Collaborators Review | 2006-12-26 A | 2006-12-27 A |  | 0% → 100% | 193d → none |
| 101 | Developers Update | 2006-12-28 A | 2006-12-28 A |  | 0% → 100% | 193d → none |
| 102 | Submit to BAH (Task 2.3 and 2.4) | 2006-12-28 A | 2006-12-28 A |  | 0% → 100% | 193d → none |
| 103 | **Create Participant Design Documents** |  | 2006-12-28 A |  | 77% → 100% | 193d → none |
| 106 | Adopters/Collaborators Review | 2006-12-26 A | 2006-12-27 A |  | 0% → 100% | 193d → none |
| 107 | Developers Update | 2006-12-28 A | 2006-12-28 A |  | 0% → 100% | 193d → none |
| 108 | Submit to BAH (Task 2.3 and 2.4) | 2006-12-28 A | 2006-12-28 A |  | 0% → 100% | 193d → none |
| 109 | **Create AE Design Documents** |  | 2006-12-28 A |  | 67% → 100% | 193d → none |
| 111 | Developer draft |  | 2006-12-22 A |  | 75% → 100% | 193d → none |
| 112 | Adopters/Collaborators Review | 2006-12-26 A | 2006-12-27 A |  | 0% → 100% | 193d → none |
| 113 | Developers Update | 2006-12-28 A | 2006-12-28 A |  | 0% → 100% | 193d → none |
| 114 | Submit to BAH (Task 2.3 and 2.4) | 2006-12-28 A | 2006-12-28 A |  | 0% → 100% | 193d → none |
| 115 | **Login Design Documents** |  | 2006-12-28 A |  | 77% → 100% | 193d → none |
| 118 | Adopters/Collaborators Review | 2006-12-26 A | 2006-12-27 A |  | 0% → 100% | 193d → none |
| 119 | Developers Update | 2006-12-28 A | 2006-12-28 A |  | 0% → 100% | 193d → none |
| 120 | Submit to BAH (Task 2.3 and 2.4) | 2006-12-28 A | 2006-12-28 A |  | 0% → 100% | 193d → none |
| 121 | **UI/Mockups Design Documents** |  | 2006-12-28 A |  | 47% → 100% | 193d → none |
| 122 | Developer Draft |  | 2006-12-22 A |  | 75% → 100% | 193d → none |
| 123 | Adopters/Collaborators Review | 2006-12-26 A | 2006-12-27 A |  | 0% → 100% | 193d → none |
| 124 | Developers Update | 2006-12-28 A | 2006-12-28 A |  | 0% → 100% | 193d → none |
| 125 | Submit to BAH (Task 2.4) | 2006-12-28 A | 2006-12-28 A |  | 0% → 100% | 193d → none |
| 137 | **Implementation** |  | 2006-12-26 A |  | 95% → 100% | 160.38d → none |
| 140 | **Grid service** |  | 2006-12-26 A |  | 50% → 100% | 160.38d → none |
| 141 | Create grid service skeleton |  | 2006-12-26 A |  | 50% → 100% | 160.38d → none |
| 158 | **Create AE** |  | 2006-12-26 A |  | 92% → 100% | 160.38d → none |
| 160 | Develop AdverseEventDAO |  | 2006-12-26 A |  | 90% → 100% | 160.38d → none |
| 161 | Develop AdverseEventService |  | 2006-12-26 A |  | 90% → 100% | 160.38d → none |
| 162 | Develop controller and command objects |  | 2006-12-26 A |  | 90% → 100% | 160.38d → none |
| 163 | Develop UI |  | 2006-12-26 A |  | 90% → 100% | 160.38d → none |
| 164 | Develop JUnit test cases |  | 2006-12-26 A |  | 90% → 100% | 160.38d → none |
| 176 | **Iteration 2** |  |  | 32d → 32d? | 1% → 43% |  |
| 178 | **Project Management** |  |  |  | 5% → 22% |  |
| 186 | **Change Control Board Plan and Charter (Task 2.10)** |  |  |  | 8% → 31% |  |

| ID | Task | Start | Finish | Duration | Complete | Total float | Predecessors | Other |
| --- | --- | --- | --- | --- | --- | --- | --- | --- |
| 187 | Developer Draft |  |  |  | 13% → 50% |  |  |  |
| 193 | **Weekly Team/Developers Meeting** |  |  |  | 25% → 50% |  |  |  |
| 195 | Weekly Team Meeting 2 | 2007-01-15 A | 2007-01-15 A |  | 0% → 100% | 182d → none |  |  |
| 198 | **Status and Risk Reporting** | 2007-01-12 A |  |  | 0% → 29% |  |  |  |
| 199 | Bi-weekly Risk Update in caMP (Task 1.4) | 2007-01-12 A | 2007-01-12 A |  | 0% → 100% | 183d → none |  |  |
| 200 | Bi-weekly Risk Matrix Update Meeting | 2007-01-12 A | 2007-01-12 A |  | 0% → 100% | 183d → none |  |  |
| 206 | **Collaboration Management Activities** | 2007-01-11 A |  |  | 0% → 67% |  |  |  |
| 207 | Bi-Weekly AE SIG Meeting | 2007-01-11 A | 2007-01-11 A |  | 0% → 100% | 184d → none |  |  |
| 210 | **Requirements** | 2007-01-02 A | 2007-01-23 → 2007-01-24 (+1d) | 16d → 17d | 0% → 11% | 2d → 175d |  |  |
| 211 | Face-to-Face Meeting | 2007-01-04 A | 2007-01-05 A |  | 0% → 100% | 0d → none |  |  |
| 212 | F2F Meeting Notes (Task 1.5) | 2007-01-08 A | 2007-01-09 A |  | 0% → 100% | 186d → none |  |  |
| 213 | Use Case Selection | 2007-01-02 A | 2007-01-03 A |  | 0% → 100% | 183d → none |  |  |
| 214 | Use Case Assignments for Iteration 2 | 2007-01-04 A | 2007-01-04 A |  | 0% → 100% | 183d → none |  |  |
| 215 | **Use Case Specification and Realization (Task 2.1)** | 2007-01-05 → 2007-01-02 (-3d) | 2007-01-12 → 2007-01-19 (+7d) | 6d → 14d |  | 183d → 178d |  |  |
| 217 | Developer draft | 2007-01-05 → 2007-01-02 (-3d) | 2007-01-09 → 2007-01-08 (-1d) | 3d → 5d |  | 183d → 178d | 214 → none | resources none → Sean; Krikor; baseline start 2007-01-05 → none; baseline finish 2007-01-09 → none |
| 221 | Developer draft | 2007-01-12 → 2007-01-02 (-10d) | 2007-01-18 → 2007-01-08 (-10d) |  |  | 176d → 178d |  | resources none → Sean; Rhett; baseline start 2007-01-12 → none; baseline finish 2007-01-18 → none |
| 225 | Developer draft | 2007-01-12 → 2007-01-02 (-10d) | 2007-01-18 → 2007-01-08 (-10d) |  |  | 176d → 178d | 215SS+5d → none | resources none → Sean; Rhett; baseline start 2007-01-12 → none; baseline finish 2007-01-18 → none |
| 229 | **SRS document (Task 2.2)** | 2007-01-09 → 2007-01-02 (-7d) | 2007-01-23 → 2007-01-24 (+1d) | 11d → 17d |  | 175d → 174d | 215SS+2d → none |  |
| 230 | Developer draft | 2007-01-09 → 2007-01-02 (-7d) | 2007-01-15 → 2007-01-08 (-7d) |  |  | 175d → 174d |  | resources John → Sean |
| 231 | Adopter review | 2007-01-16 → 2007-01-09 (-7d) | 2007-01-22 → 2007-01-15 (-7d) |  |  | 175d → 174d |  | resources John → Sean |
| 232 | Developer update | 2007-01-23 → 2007-01-16 (-7d) | 2007-01-23 → 2007-01-24 (+1d) | 1d → 7d |  | 175d → 174d |  | resources John → Sean |
| 233 | Deliver SRS document to BAH (Task 2.2) | 2007-01-23 → 2007-01-24 (+1d) | 2007-01-23 → 2007-01-24 (+1d) |  |  | 175d → 174d |  | resources John → Sean |
| 234 | **Analysis and Design** | 2007-01-12 → 2007-01-09 A (-3d) | 2007-01-26 → 2007-01-31 (+5d) | 11d → 17d | 0% → 40% | 173d → 170d |  |  |
| 235 | **Design Documents** | 2007-01-12 → 2007-01-09 A (-3d) | 2007-01-23 → 2007-01-25 (+2d) | 8d → 13d | 0% → 51% | 176d → 174d |  |  |
| 251 | Deliver Design document to BAH (Task 2.2) | 2007-01-23 → 2007-01-25 (+2d) | 2007-01-23 → 2007-01-25 (+2d) |  |  | 176d → 174d | Developer update → 240, 245, 250 | resources none → Edmond |
| 253 | **Technical/Architecture Guide** | 2007-01-12 → 2007-01-09 A (-3d) | 2007-01-26 → 2007-01-31 (+5d) | 11d → 17d | 0% → 13% | 173d → 170d |  |  |
| 254 | Developer draft | 2007-01-12 → 2007-01-09 A (-3d) | 2007-01-18 → 2007-01-19 (+1d) | 5d → 9d | 0% → 25% | 173d → 170d |  |  |
| 255 | Adopter review | 2007-01-19 → 2007-01-22 (+3d) | 2007-01-25 → 2007-01-26 (+1d) |  |  | 173d → 170d |  |  |
| 256 | Developer update | 2007-01-26 → 2007-01-29 (+3d) | 2007-01-26 → 2007-01-31 (+5d) | 1d → 3d |  | 173d → 170d |  |  |
| 257 | Deliver to BAH (Task 2.8) | 2007-01-26 → 2007-01-31 (+5d) | 2007-01-26 → 2007-01-31 (+5d) |  |  | 173d → 170d |  |  |
| 258 | **Implementation** | 2007-01-08 → 2007-01-03 A (-5d) | 2007-01-24 → 2007-01-29 (+5d) | 13d → 19d? | 0% → 79% | 173d → 170d |  |  |
| 259 | **Web interface** | 2007-01-08 → 2007-01-03 A (-5d) | 2007-01-19 → 2007-01-15 A (-4d) | 10d → 9d | 0% → 100% | 176d → none |  |  |
| 260 | Second web interface iteration | 2007-01-08 → 2007-01-03 A (-5d) | 2007-01-19 → 2007-01-15 A (-4d) | 10d → 9d | 0% → 100% | 176d → none |  |  |
| 261 | **Enterprise Service Bus** | 2007-01-08 → 2007-01-03 A (-5d) | 2007-01-19 → 2007-01-16 A (-3d) |  | 0% → 100% | 176d → none |  |  |
| 262 | Second ESB Iteration | 2007-01-08 → 2007-01-03 A (-5d) | 2007-01-19 → 2007-01-16 A (-3d) |  | 0% → 100% | 176d → none |  |  |
| 263 | **Grid service** | 2007-01-08 → 2007-01-03 A (-5d) | 2007-01-24 → 2007-01-19 A (-5d) |  | 0% → 100% | 173d → none |  |  |
| 264 | Implement Grid Service | 2007-01-08 → 2007-01-03 A (-5d) | 2007-01-24 → 2007-01-19 A (-5d) |  | 0% → 100% | 173d → none |  |  |
| 265 | **Implement Use Cases** | 2007-01-08 → 2007-01-09 A (+1d) | 2007-01-23 → 2007-01-29 (+6d) | 12d → 15d? | 0% → 70% | 174d → 170d |  |  |
| 268 | Implement O/R mapping | 2007-01-08 → 2007-01-09 A (+1d) | 2007-01-19 → 2007-01-22 (+3d) |  | 0% → 75% | 174d → 175d |  |  |
| 269 | Develop DAO | 2007-01-10 → 2007-01-11 A (+1d) | 2007-01-23 → 2007-01-24 (+1d) |  | 0% → 75% | 174d → 173d |  |  |
| 270 | Develop Service | 2007-01-10 → 2007-01-11 A (+1d) | 2007-01-23 → 2007-01-24 (+1d) |  | 0% → 75% | 174d → 173d |  |  |
| 271 | Develop controller and command objects | 2007-01-10 → 2007-01-11 A (+1d) | 2007-01-23 → 2007-01-24 (+1d) |  | 0% → 75% | 174d → 173d |  |  |
| 272 | Develop JUnit test cases | 2007-01-10 → 2007-01-11 A (+1d) | 2007-01-18 → 2007-01-19 (+1d) |  | 0% → 75% | 177d → 176d |  |  |
| 282 | **Testing** | 2007-01-12 → 2007-01-09 (-3d) | 2007-01-26 → 2007-01-31 (+5d) | 11d → 17d |  | 173d → 170d |  |  |
| 283 | **Create Functional Tests** | 2007-01-12 → 2007-01-09 (-3d) | 2007-01-24 → 2007-01-25 (+1d) | 9d → 13d |  | 175d → 174d |  |  |
| 284 | Create Functional Tests for Use Cases | 2007-01-12 → 2007-01-09 (-3d) | 2007-01-18 → 2007-01-15 (-3d) |  |  | 178d → 181d |  |  |
| 285 | RTM | 2007-01-24 → 2007-01-25 (+1d) | 2007-01-24 → 2007-01-25 (+1d) |  |  | 175d → 174d |  |  |
| 286 | **Final Tests of Iteration** | 2007-01-24 → 2007-01-29 (+5d) | 2007-01-26 → 2007-01-31 (+5d) |  |  | 173d → 170d |  |  |
| 287 | Deploy Prototype for Iteration 2 (Task 2.5) | 2007-01-24 → 2007-01-29 (+5d) | 2007-01-24 → 2007-01-29 (+5d) |  |  | 173d → 170d |  |  |
| 288 | Validation and Acceptance Testing | 2007-01-25 → 2007-01-30 (+5d) | 2007-01-26 → 2007-01-31 (+5d) |  |  | 173d → 170d |  |  |
| 289 | Submit Test Results Report (Task 2.7) | 2007-01-26 → 2007-01-31 (+5d) | 2007-01-26 → 2007-01-31 (+5d) |  |  | 173d → 170d |  |  |

## Version 9 (saved 2007-01-30, file caAERS-ProjectSchedule-JanuaryUpdate.mpp)

Note of the change: SVN-Revision: 481

Last finish stays 2007-09-26. Complete tasks 134 → 169.

Added:

| ID | Task | Duration | Start | Finish | Predecessors | Resources |
| --- | --- | --- | --- | --- | --- | --- |
| 16 | Formal Review by BAH | 14d | 2006-12-27 | 2007-01-16 | 15 | BAH |
| 22 | Formal Review by BAH | 14d | 2006-12-18 | 2007-01-08 | 21 | BAH |
| 185 | Adopter Review | 10d | 2007-01-29 | 2007-02-09 | 184 | Mayo; WF |
| 186 | Formal Review by BAH | 15d | 2007-01-29 | 2007-02-16 | 184 | BAH |
| 191 | Formal Review by BAH | 15d | 2007-01-12 | 2007-02-02 | 189 | BAH |
| 229 | Update Use Case Document | 3d | 2007-01-22 A | 2007-01-24 | 220, 224, 228 | Sean |
| 255 | Formal Review by BAH | 15d | 2007-01-26 | 2007-02-15 | 254 | BAH |
| 256 | **Domain Model** | 3d | 2007-01-02 A | 2007-01-04 |  |  |
| 257 | Update Model/BRIDG Harmonization | 3d | 2007-01-02 A | 2007-01-04 |  | Ram |
| 263 | Formal Review by BAH | 15d | 2007-02-01 | 2007-02-21 | 262 | BAH |
| 289 | **Test Plan** | 18d | 2007-01-17 A | 2007-02-09 |  |  |
| 291 | Submit to BAH | 0d | 2007-01-19 | 2007-01-19 | 290 | Edmond |
| 292 | Formal Review by BAH | 15d | 2007-01-22 | 2007-02-09 | 291 | BAH |
| 299 | Formal Review of Test results Report | 15d | 2007-02-01 | 2007-02-21 | 298 | BAH |
| 300 | **Deployment** | 26d | 2006-12-29 | 2007-02-06 |  |  |
| 301 | Submit prototype code (Task 2.5) | 0d | 2006-12-29 | 2006-12-29 |  | Ram |
| 302 | Formal Review of Code by BAH | 15d | 2007-01-02 | 2007-01-22 | 301 | BAH |
| 303 | Deploy Prototype for Iteration 2 at Mayo and WF | 1d | 2007-01-30 | 2007-01-30 | 264 | Vinay; Mayo; WF |
| 304 | Deploy Prototype / Make URL Public | 1d | 2007-02-06 | 2007-02-06 | 264FS+5d | Vinay |

Removed: 183 Adopter review; 184 Revisions; 189 Developer Update; 287 Deploy Prototype for Iteration 2 (Task 2.5)

Changed:

| ID | Task | Start | Finish | Duration | Complete | Total float | Predecessors | Other |
| --- | --- | --- | --- | --- | --- | --- | --- | --- |
| 1 | **caAERS Application Development Project** |  |  | 212d? → 212d | 32% → 38% |  |  |  |
| 2 | **Elaboration Phase** |  | 2007-02-01 → 2007-02-21 (+20d) | 43d? → 57d | 72% → 74% | 169d → 155d |  |  |
| 3 | **Iteration 1** |  | 2007-01-02 → 2007-01-16 (+14d) | 21d → 31d | 94% → 87% | 191d → 181d |  |  |
| 4 | **Project Management** |  | 2006-12-29 A → 2007-01-16 (+18d) | 20d → 31d | 100% → 75% | none → 181d |  |  |
| 10 | **Project Management Plan Baseline (Task 1.1)** |  | 2006-12-26 A → 2007-01-16 (+21d) | 11d → 25d | 100% → 44% | none → 181d |  |  |
| 17 | **Communications Plan (Task 1.2)** |  | 2006-12-15 A → 2007-01-08 (+24d) | 11d → 25d | 100% → 44% | none → 187d |  |  |
| 178 | **Iteration 2** |  | 2007-02-01 → 2007-02-21 (+20d) | 32d? → 46d | 43% → 62% | 169d → 155d |  |  |
| 180 | **Project Management** |  | 2007-02-01 → 2007-02-16 (+15d) | 32d → 43d | 22% → 28% | 169d → 158d |  |  |
| 181 | Update Project Plan | 2007-01-02 A | 2007-01-08 A |  | 0% → 100% | 187d → none |  |  |
| 182 | **Detailed Construction and Transition Plan** | 2007-01-22 A | 2007-02-01 → 2007-02-16 (+15d) | 9d → 20d | 0% → 4% | 169d → 158d |  |  |
| 183 | Prepare Detailed Plan for Construction and Transition Phases | 2007-01-22 A |  |  | 0% → 25% | 169d → 158d |  | was named Update Construction and Transition Phases |
| 184 | Deliver Plan to BAH (Task 2.9) | 2007-02-01 → 2007-01-26 (-6d) | 2007-02-01 → 2007-01-26 (-6d) |  |  | 169d → 158d | Revisions → 183 | was named Deliver Design document to BAH (Task 2.9) |
| 187 | **Change Control Board Plan and Charter (Task 2.10)** |  | 2007-01-22 → 2007-02-02 (+11d) | 23.75d → 32.75d | 31% → 17% | 177.25d → 168.25d |  |  |
| 188 | Prepare CCB Charter |  |  |  |  | 177.25d → 168.25d |  | was named Developer Draft |
| 189 | Submit to BAH | 2007-01-22 → 2007-01-12 (-10d) | 2007-01-22 → 2007-01-12 (-10d) |  |  | 177.25d → 168.25d | Developer Update → 188 |  |
| 190 | Adopters/Collobators Review |  |  |  |  | 177.25d → 178.25d | 188 → 189 |  |
| 192 | **CaAERS CCB (Task 2.10)** | 2007-01-24 → 2007-02-02 (+9d) | 2007-01-24 → 2007-02-02 (+9d) | 1d → 0d |  | 175d → 168.25d |  |  |
| 193 | CCB Meetings | 2007-01-24 → 2007-02-02 (+9d) | 2007-01-24 → 2007-02-02 (+9d) | 1d → 0d |  | 175d → 168.25d | none → 191 | resources Edmond; Vinay; CCB → CCB |
| 194 | **Weekly Team/Developers Meeting** |  | 2007-01-29 A |  | 50% → 100% | 172d → none |  |  |
| 197 | Weekly Team Meeting 3 | 2007-01-22 A | 2007-01-22 A |  | 0% → 100% | 177d → none |  |  |
| 198 | Weekly Team Meeting 4 | 2007-01-29 A | 2007-01-29 A |  | 0% → 100% | 172d → none |  |  |
| 199 | **Status and Risk Reporting** |  |  |  | 29% → 57% |  |  |  |
| 202 | Bi-weekly Risk Update in caMP (Task 1.4) | 2007-01-26 A | 2007-01-26 A |  | 0% → 100% | 173d → none |  |  |
| 203 | Bi-weekly Status Update Meeting with BAH/NCI | 2007-01-26 A | 2007-01-26 A |  | 0% → 100% | 173d → none |  |  |
| 207 | **Collaboration Management Activities** |  | 2007-01-25 A |  | 67% → 100% | 174d → none |  |  |
| 210 | Bi-Weekly AE SIG Meeting | 2007-01-25 A | 2007-01-25 A |  | 0% → 100% | 174d → none |  |  |
| 211 | **Requirements** |  |  |  | 11% → 90% |  |  |  |
| 216 | **Use Case Specification and Realization (Task 2.1)** | 2007-01-02 A | 2007-01-19 → 2007-01-24 (+5d) | 14d → 17d | 0% → 98% | 178d → 175d |  |  |
| 217 | **Protocol Abstraction** | 2007-01-02 A | 2007-01-19 A |  | 0% → 100% | 178d → none |  |  |
| 218 | Developer draft | 2007-01-02 A | 2007-01-08 A |  | 0% → 100% | 178d → none |  |  |
| 219 | Adopters/Collobators Review | 2007-01-09 A | 2007-01-15 A |  | 0% → 100% | 178d → none |  |  |
| 220 | Developer Update | 2007-01-16 A | 2007-01-19 A |  | 0% → 100% | 178d → none |  |  |
| 221 | **AE Data Collection** | 2007-01-02 A | 2007-01-19 A |  | 0% → 100% | 178d → none |  |  |
| 222 | Developer draft | 2007-01-02 A | 2007-01-08 A |  | 0% → 100% | 178d → none |  |  |
| 223 | Adopters/Collobators Review | 2007-01-09 A | 2007-01-15 A |  | 0% → 100% | 178d → none |  |  |
| 224 | Developer Update | 2007-01-16 A | 2007-01-19 A |  | 0% → 100% | 178d → none |  |  |
| 225 | **Triggers/Notification** | 2007-01-02 A | 2007-01-19 A |  | 0% → 100% | 178d → none |  |  |
| 226 | Developer draft | 2007-01-02 A | 2007-01-08 A |  | 0% → 100% | 178d → none |  |  |
| 227 | Adopters/Collobators Review | 2007-01-09 A | 2007-01-15 A |  | 0% → 100% | 178d → none |  |  |
| 228 | Developer Update | 2007-01-16 A | 2007-01-19 A |  | 0% → 100% | 178d → none |  |  |
| 230 | Submit Updated Use Case Document to BAH (Task 2.1) | 2007-01-19 → 2007-01-24 (+5d) | 2007-01-19 → 2007-01-24 (+5d) |  |  | 178d → 175d | 220, 224, 228 → 229 |  |
| 231 | **SRS document (Task 2.2)** | 2007-01-02 A |  |  | 0% → 65% |  |  |  |
| 232 | Developer draft | 2007-01-02 A | 2007-01-08 A |  | 0% → 100% | 174d → none |  |  |
| 233 | Adopter review | 2007-01-09 A |  |  | 0% → 50% | 174d → 177.5d |  |  |
| 234 | Developer update | 2007-01-16 A |  |  | 0% → 50% |  |  |  |
| 236 | **Analysis and Design** | 2007-01-09 A → 2007-01-02 A (-7d) | 2007-01-31 → 2007-02-21 (+21d) | 17d → 37d | 40% → 45% | 170d → 155d |  |  |
| 237 | **Design Documents** |  | 2007-01-25 → 2007-02-15 (+21d) | 13d → 28d | 51% → 64% | 174d → 159d |  |  |
| 238 | **Protocol Abstraction** |  |  |  | 58% → 88% | 174d → 159d |  |  |
| 239 | Develop appropriate UML Artifacts |  | 2007-01-15 A |  | 75% → 100% | 177.75d → none |  |  |
| 240 | Create Design Document |  | 2007-01-22 A |  | 75% → 100% | 174d → none |  |  |
| 241 | Adopters/Collaborators Review | 2007-01-23 A |  |  | 0% → 50% | 174d → 159.5d |  |  |
| 242 | Developers Update | 2007-01-25 A |  |  | 0% → 50% | 174d → 159d |  |  |
| 243 | **AE Data Collection** |  |  |  | 58% → 88% | 174d → 159d |  |  |
| 244 | Develop appropriate UML Artifacts |  | 2007-01-15 A |  | 75% → 100% | 177.75d → none |  |  |
| 245 | Create Design Document |  | 2007-01-22 A |  | 75% → 100% | 174d → none |  |  |
| 246 | Adopters/Collaborators Review | 2007-01-23 A |  |  | 0% → 50% | 174d → 159.5d |  |  |
| 247 | Developers Update | 2007-01-25 A |  |  | 0% → 50% | 174d → 159d |  |  |
| 248 | **Triggers/Notification** |  |  |  | 38% → 88% | 174d → 159d |  |  |
| 249 | Develop appropriate UML Artifacts |  | 2007-01-15 A |  | 50% → 100% | 176.5d → none |  |  |
| 250 | Create Design Document |  | 2007-01-22 A |  | 50% → 100% | 174d → none |  |  |
| 251 | Adopters/Collaborators Review | 2007-01-23 A |  |  | 0% → 50% | 174d → 159.5d |  |  |
| 252 | Developers Update | 2007-01-25 A |  |  | 0% → 50% | 174d → 159d |  |  |
| 258 | **Technical/Architecture Guide** |  | 2007-01-31 → 2007-02-21 (+21d) | 17d → 32d | 13% → 11% | 170d → 155d |  |  |
| 259 | Prepare draft of Tech/Arch Guide |  |  |  |  | 170d → 156.25d |  | was named Developer draft |
| 260 | Adopter review | 2007-01-22 A |  |  | 0% → 25% | 170d → 155d |  |  |
| 264 | **Implementation** |  | 2007-01-29 A | 19d? → 19d | 79% → 100% | 170d → none |  |  |
| 271 | **Implement Use Cases** |  | 2007-01-29 A | 15d? → 15d | 70% → 100% | 170d → none |  |  |
| 272 | **Protocol Abstraction** |  | 2007-01-24 A |  | 75% → 100% | 173d → none |  |  |
| 273 | UI - Incorporate HTML and CSS |  | 2007-01-22 A |  | 75% → 100% | 175d → none |  | resources none → Krikor |
| 274 | Implement O/R mapping |  | 2007-01-22 A |  | 75% → 100% | 175d → none |  | resources none → Krikor |

| ID | Task | Start | Finish | Duration | Complete | Total float | Predecessors | Other |
| --- | --- | --- | --- | --- | --- | --- | --- | --- |
| 275 | Develop DAO |  | 2007-01-24 A |  | 75% → 100% | 173d → none |  | resources none → Krikor |
| 276 | Develop Service |  | 2007-01-24 A |  | 75% → 100% | 173d → none |  | resources none → Krikor |
| 277 | Develop controller and command objects |  | 2007-01-24 A |  | 75% → 100% | 173d → none |  | resources none → Krikor |
| 278 | Develop JUnit test cases |  | 2007-01-19 A |  | 75% → 100% | 176d → none |  | resources none → Krikor |
| 279 | **AE Data Collection** |  | 2007-01-16 → 2007-01-24 A (+8d) | 6d? → 11.25d | 75% → 100% | 179d → none |  |  |
| 280 | UI - Incorporate HTML and CSS |  | 2007-01-16 → 2007-01-22 A (+6d) | 1d? → 5d | 75% → 100% | 179d → none |  | resources none → Rhett |
| 281 | Implement O/R mapping |  | 2007-01-09 → 2007-01-22 A (+13d) | 1d? → 10d | 75% → 100% | 184d → none |  | resources none → Rhett |
| 282 | Develop DAO |  | 2007-01-09 → 2007-01-24 A (+15d) | 1d? → 10d | 75% → 100% | 184d → none | none → 281SS+2d | resources none → Rhett |
| 283 | Develop Service |  | 2007-01-09 → 2007-01-24 A (+15d) | 1d? → 10d | 75% → 100% | 184d → none | none → 281SS+2d | resources none → Rhett |
| 284 | Develop controller and command objects |  | 2007-01-09 → 2007-01-24 A (+15d) | 1d? → 10d | 75% → 100% | 184d → none | none → 281SS+2d | resources none → Rhett |
| 285 | Develop JUnit test cases |  | 2007-01-09 → 2007-01-19 A (+10d) | 1d? → 7d | 75% → 100% | 184d → none | none → 281SS+2d | resources none → Rhett |
| 286 | **Triggers/Notification** |  | 2007-01-29 A |  | 50% → 100% | 170d → none |  |  |
| 287 | JBOSS Rules Setup/Development |  | 2007-01-29 A |  | 50% → 100% | 170d → none |  | resources none → Sujith |
| 288 | **Testing** | 2007-01-09 A | 2007-01-31 → 2007-02-21 (+21d) | 17d → 32d | 0% → 4% | 170d → 155d |  |  |
| 290 | Update Test Plan Document (Task 2.6) | 2007-01-08 → 2007-01-17 A (+9d) | 2007-01-12 → 2007-01-19 (+7d) | 5d → 3d | 0% → 50% | 183d → 163d |  | constraint start no earlier than 2007-01-08 → start no earlier than 2007-01-17; resources Edmond; Vinay; Natasha → Vinay; Ram |
| 295 | RTM |  |  |  |  |  |  | resources John → Sean |
| 296 | **Final Tests of Iteration** | 2007-01-29 → 2007-01-30 (+1d) | 2007-01-31 → 2007-02-21 (+21d) | 2d → 17d |  | 170d → 155d |  |  |
| 297 | Testing |  |  |  |  | 170d → 155d | Deploy Prototype for Iteration 2 (Task 2.5) → 264 | was named Validation and Acceptance Testing |

## Version 10 (saved 2007-02-15, file caAERS-ProjectSchedule-JanuaryUpdate.mpp)

Note of the change: SVN-Revision: 526

Last finish stays 2007-09-26.

Added:

| ID | Task | Duration | Start | Finish | Predecessors | Resources |
| --- | --- | --- | --- | --- | --- | --- |
| 236 | Formal Review by BAH | 15d | 2007-01-25 | 2007-02-14 | 235 | BAH |

Changed:

| ID | Task | Start | Finish | Duration | Complete | Total float |
| --- | --- | --- | --- | --- | --- | --- |
| 1 | **caAERS Application Development Project** |  |  |  | 38% → 37% |  |
| 2 | **Elaboration Phase** |  |  |  | 74% → 73% |  |
| 178 | **Iteration 2** |  |  |  | 62% → 60% |  |
| 211 | **Requirements** |  | 2007-01-24 → 2007-02-14 (+21d) | 17d → 32d | 90% → 74% | 175d → 160d |
| 231 | **SRS document (Task 2.2)** |  | 2007-01-24 → 2007-02-14 (+21d) | 17d → 32d | 65% → 34% | 174d → 159d |
| 294 | **Create Functional Tests** |  | 2007-01-25 → 2007-02-15 (+21d) | 13d → 28d |  | 174d → 159d |
| 296 | RTM | 2007-01-25 → 2007-02-15 (+21d) | 2007-01-25 → 2007-02-15 (+21d) |  |  | 174d → 159d |
